# CONSTRUCTION OF SEWAGE PUMPING STATION PS 25/9A(N) IN KATARA -C818 - REVISED BASELINE BEST 2 USE ALW

Schedule from Primavera P6, 2021-03-04 to 2023-04-15, data date 2022-04-18, costs in QATAR, A marks actual dates.
Must finish by 2023-04-15

## Calendars

- 5 DAYS W HOLIDAY: Mon-Thu 08:00-12:00, 13:00-17:00; Fri-Sat off; Sun 08:00-12:00, 13:00-17:00. Exceptions (off unless hours are given): 2021-05-13, 2021-07-20 to 2021-07-22, 2022-02-08, 2022-05-03 to 2022-05-05, 2022-07-10 to 2022-07-12, 2022-12-18.
- 6 DAYS W HOLIDAY: Mon-Thu 08:00-12:00, 13:00-17:00; Fri off; Sat-Sun 08:00-12:00, 13:00-17:00. Exceptions (off unless hours are given): 2021-05-13, 2021-05-15, 2021-07-20 to 2021-07-22, 2021-12-18, 2022-02-08, 2022-05-01 to 2022-05-03, 2022-05-04 to 2022-05-05 08:00-16:00, 2022-07-10 to 2022-07-12, 2022-11-05 to 2022-11-10, 2022-11-12 to 2022-11-17, 2022-11-19 to 2022-11-24, 2022-11-26 to 2022-12-01, 2022-12-03 to 2022-12-08, 2022-12-10 to 2022-12-15, 2022-12-17 to 2022-12-22, 2022-12-24 to 2022-12-25.
- 7 DAYS W/O HOLIDAY: Mon-Sun 08:00-12:00, 13:00-17:00. Exceptions (off unless hours are given): 2021-07-20 to 2021-07-22 08:00-16:00.

## Resources

| Resource | Group | Unit |
| --- | --- | --- |
| GENERAL LABOR | labor |  |
| EXCAVATOR | equipment |  |
| JCB | equipment |  |
| EXCAVATED MATERIAL | material | cu m |
| ELECTRICAL TECHNICIAN | labor |  |
| CRANE | equipment |  |
| MECHANICAL TECHNICIAN | labor |  |
| LOADER | equipment |  |
| DUMP TRUCK | equipment |  |
| CIVIL MASON | labor |  |
| CARPENTER | labor |  |
| CONCRETE | material | cu m |
| PAINTER | labor |  |
| COMPACTOR | equipment |  |
| ASPHALT | material |  |
| STEEL WORKER | labor |  |
| REINFORCED STEEL | material | tons |
| BLOCKS | material | m² |
| PROJ MANAGER | labor |  |
| PROJECT ENGINEER | labor |  |
| PLANNING ENGINEER | labor |  |
| PROCUREMENT ENGR | labor |  |
| QUANTITY SURVEYOR | labor |  |
| HSE ENGINEER | labor |  |
| QA/QC ENGINER | labor |  |
| DOCUMENT CONTROLLER | labor |  |
| DESIGN ENGR-PROCESS | labor |  |
| DESIGN ENGR-ELECTRICAL | labor |  |
| DESIGN ENGR-MECHANICAL | labor |  |
| DRAFTSMAN | labor |  |
| DESIGN ENGR-STRUCTURAL | labor |  |
| SITE ENGINEER CIVIL | labor |  |
| SITE ENGINEER MECHANICAL | labor |  |
| SITE ENGINEER ELECTRICAL | labor |  |
| SITE SUPERVISOR CIVIL | labor |  |
| SITE SUPERVISOR MECHANICAL | labor |  |
| SITE SUPERVISOR ELECTRICAL | labor |  |

## Schedule

| ID | WBS | Activity | Type | Duration | Start | Finish | Predecessors | Complete | Total float | Free float | Calendar | Resources | Cost | Actual cost | MSP Activity ID | 02 Phase | 03 Section | 05 Sub-section | 04 Discipline | 06 Zone | 01 Project | 07 Buildings & Ext. Works | 09 Subcontractors | 10 BOQ Cost | DELAY EVENT 02 | DELAY EVENT 03 | DELAY EVENT 04 | DELAY EVENT 01 | EXECUTIVE SUMMAR | 16 BOQ-1 |
| --- | --- | --- | --- | --- | --- | --- | --- | --- | --- | --- | --- | --- | --- | --- | --- | --- | --- | --- | --- | --- | --- | --- | --- | --- | --- | --- | --- | --- | --- | --- |
|  | 1 | **GENERAL & PRELIMINARIES** |  |  | 2021-06-20 | 2023-04-15 |  |  |  |  |  |  |  |  |  |  |  |  |  |  |  |  |  |  |  |  |  |  |  |  |
|  | 1.1 | **PROJECT MILESTONES** |  |  | 2021-06-20 | 2023-04-15 |  |  |  |  |  |  |  |  |  |  |  |  |  |  |  |  |  |  |  |  |  |  |  |  |
| M-1000 |  | Project Start | milestone | 0d | 2021-06-20 A | 2021-06-20 A |  | 100% |  |  |  |  |  |  | 2 | GEN | ML | GEN | GEN | Gen | QEZ3 | GEN | MEP SUB | Bill-01 | DE02 | DE03 | DE04 |  |  |  |
| M-1005 |  | DC1 and DC2 | milestone | 0d | 2021-06-20 A | 2021-06-20 A | M-1000 | 100% |  |  | 7 DAYS W/O HOLIDAY |  |  |  | 2 | GEN | ML | GEN | GEN | Gen | QEZ3 | GEN | MEP SUB | Bill-01 |  |  |  |  |  |  |
| M-1010 |  | Building Permit | milestone | 0d | 2021-06-20 A | 2021-06-20 A | M-1000 | 100% |  |  | 7 DAYS W/O HOLIDAY |  |  |  | 2 | GEN | ML | GEN | GEN | Gen | QEZ3 | GEN | MEP SUB | Bill-01 |  |  |  |  |  |  |
| M-1015 |  | Environmental Permit | milestone | 0d | 2021-06-20 A | 2021-06-20 A | M-1000 | 100% |  |  | 7 DAYS W/O HOLIDAY |  |  |  | 2 | GEN | ML | GEN | GEN | Gen | QEZ3 | GEN | MEP SUB | Bill-01 |  |  |  |  |  |  |
| M-1030 |  | Project Completion | milestone | 0d | 2023-04-15 | 2023-04-15 | COM-1345 FF, COM-1270, CV3310, CBS3060, CV3150, G1155, G1440, G1450, G1690, G1460, G1500, G1480, G1770, G1780, G1790, G1815, G1820, COM-1300, C1600, COM-1310, CV3270, C1630, G1440R, G1830R, G1500R, G1480R, G1460R, G1790R, G1780R, G1770R, G1815R, G1690R |  | 0d |  | 7 DAYS W/O HOLIDAY |  |  |  | 2 | GEN | ML | GEN | GEN | Gen | QEZ3 | GEN | MEP SUB | Bill-01 | DE02 | DE03 | DE04 | DE01 |  |  |
|  | 5 | **CONTRACTUAL REQUIREMENTS** |  |  | 2021-06-20 | 2023-04-14 |  |  |  |  |  |  |  |  |  |  |  |  |  |  |  |  |  |  |  |  |  |  |  |  |
|  | 2 | **INSURANCE** |  |  | 2021-06-20 | 2021-07-24 |  |  |  |  |  |  |  |  |  |  |  |  |  |  |  |  |  |  |  |  |  |  |  |  |
| G1000 |  | Submission of Performance Guarantee |  | 35d | 2021-06-20 A | 2021-07-24 A | M-1000 | 100% |  |  | 7 DAYS W/O HOLIDAY |  | 117,584 | 117,584 |  | GEN |  |  |  |  |  |  |  | Bill-01 |  |  |  |  | 40 | B.1.01 |
| G1050 |  | Submission of Advance Payment Guarantee |  | 35d | 2021-06-20 A | 2021-07-24 A | M-1000 | 100% |  |  | 7 DAYS W/O HOLIDAY |  | 58,792 | 58,792 |  | GEN |  |  |  |  |  |  |  | Bill-01 |  |  |  |  | 40 | B.1.01 |
| G1060 |  | Submission of Professional Indemnity Insurance |  | 35d | 2021-06-20 A | 2021-07-24 A | M-1000 | 100% |  |  | 7 DAYS W/O HOLIDAY |  | 14,698 | 14,698 |  | GEN |  |  |  |  |  |  |  | Bill-01 |  |  |  |  | 40 | B.1.01 |
| G1070 |  | Submission of Workers Compensation and Employers Liability Insurance |  | 35d | 2021-06-20 A | 2021-07-24 A | M-1000 | 100% |  |  | 7 DAYS W/O HOLIDAY |  | 182,255.2 | 182,255.2 |  | GEN |  |  |  |  |  |  |  | Bill-01 |  |  |  |  | 40 | B.1.01 |
| G1080 |  | Submission of Contractor Plant and Equipment Insurance |  | 35d | 2021-06-20 A | 2021-07-24 A | M-1000 | 100% |  |  | 7 DAYS W/O HOLIDAY |  | 44,094 | 44,094 |  | GEN |  |  |  |  |  |  |  | Bill-01 |  |  |  |  | 40 | B.1.01 |
| G1090 |  | Submission of Automobile Insurance |  | 35d | 2021-06-20 A | 2021-07-24 A | M-1000 | 100% |  |  | 7 DAYS W/O HOLIDAY |  | 14,698 | 14,698 |  | GEN |  |  |  |  |  |  |  | Bill-01 |  |  |  |  | 40 | B.1.01 |
|  | 3 | **SITE OFFICE** |  |  | 2021-06-20 | 2023-04-14 |  |  |  |  |  |  |  |  |  |  |  |  |  |  |  |  |  |  |  |  |  |  |  |  |
| G1010 |  | Site Handing Over |  | 10d | 2021-06-20 A | 2021-06-29 A | M-1000 | 100% |  |  | 7 DAYS W/O HOLIDAY | PROJ MANAGER [60 h]; PROJECT ENGINEER [60 h]; PLANNING ENGINEER [60 h]; PROCUREMENT ENGR [60 h]; QUANTITY SURVEYOR [60 h]; HSE ENGINEER [60 h]; QA/QC ENGINER [60 h]; DOCUMENT CONTROLLER [60 h] | 25,323.15 | 25,323.15 |  | GEN |  |  |  |  |  |  |  | Bill-01 |  |  |  |  | 40 | B.1.01 |
| G1100 |  | Provide Site Offices complete with all necessary furniture and utilities |  | 11d | 2021-06-30 A | 2021-07-10 A | M-1000, G1010 | 100% |  |  | 7 DAYS W/O HOLIDAY | PROJ MANAGER [180 h]; PROJECT ENGINEER [180 h]; PLANNING ENGINEER [180 h]; PROCUREMENT ENGR [180 h]; QUANTITY SURVEYOR [180 h]; HSE ENGINEER [180 h]; QA/QC ENGINER [180 h]; DOCUMENT CONTROLLER [180 h] | 25,323.15 | 25,323.15 |  | GEN |  |  |  |  |  |  |  | Bill-01 |  |  |  |  | 40 | B.1.01 |
| G1140 |  | Provide all measuring and recording equipment for exclusive use of the Authority's |  | 25d | 2021-06-30 A | 2021-07-24 A | M-1000, G1010 | 100% |  |  | 7 DAYS W/O HOLIDAY |  | 25,323.15 | 25,323.15 |  | GEN |  |  |  |  |  |  |  | Bill-01 |  |  |  |  | 40 | B.1.01 |
| G1130 |  | Provide Personal Protective Equipment (PPE) for the exclusive use of the Authority's |  | 45d | 2021-07-30 A | 2021-09-12 A | M-1000, G1010 | 100% |  |  | 7 DAYS W/O HOLIDAY |  | 25,323.15 | 25,323.15 |  | GEN |  |  |  |  |  |  |  | Bill-01 |  |  |  |  | 40 | B.1.01 |
| G1145 |  | Allow for maintenance and operating Site Offices (Part 1) |  | 263d | 2021-07-30 A | 2022-04-18 A | G1100, M-1000 | 100% |  |  | 7 DAYS W/O HOLIDAY |  | 14,808.98 | 14,808.98 |  | GEN |  |  |  |  |  |  |  | Bill-01 |  |  |  |  | 40 | B.1.01 |
| G1145E |  | Allow for maintenance and operating Site Offices (Part 2) |  | 359d | 2022-04-19 | 2023-04-12 | G1100, M-1000, G1145 |  | 1d | 0d | 7 DAYS W/O HOLIDAY |  | 10,514.17 |  |  | GEN |  |  |  |  |  |  |  | Bill-01 |  |  |  |  | 40 | B.1.01 |
| G1155 |  | Allow for dismantling & removing the Site Offices including reinstatement |  | 2d | 2023-04-13 | 2023-04-14 | G1145, G1130, G1140, G1145E |  | 1d |  | 7 DAYS W/O HOLIDAY |  | 25,323.15 |  |  | GEN |  |  |  |  |  |  |  | Bill-01 |  |  |  |  | 40 | B.1.01 |
|  | 6 | **QUALITY ASSURANCE** |  |  | 2021-07-30 | 2022-10-20 |  |  |  |  |  |  |  |  |  |  |  |  |  |  |  |  |  |  |  |  |  |  |  |  |
| G1150 |  | Comply with the contract requirements implement and maintain Contractor's Quality Assurance |  | 262d | 2021-07-30 A | 2022-04-17 A | M-1000, G1140 | 100% |  |  | 7 DAYS W/O HOLIDAY | PROJ MANAGER [1600 h]; PROJECT ENGINEER [1600 h]; PLANNING ENGINEER [1600 h]; PROCUREMENT ENGR [1600 h]; QUANTITY SURVEYOR [1600 h]; HSE ENGINEER [1600 h]; QA/QC ENGINER [1600 h]; DOCUMENT CONTROLLER [1600 h] | 351,868.9 | 351,868.9 |  | GEN |  |  |  |  |  |  |  | Bill-01 |  |  |  |  | 40 | B.1.01 |
| G1150E |  | Comply with the contract requirements implement and maintain Contractor's Quality Assurance |  | 185d | 2022-04-19 | 2022-10-20 | M-1000, G1140, G1150 |  | 2d | 0d | 7 DAYS W/O HOLIDAY | PROCUREMENT ENGR [1600 h] | 249,822.1 |  |  | GEN |  |  |  |  |  |  |  | Bill-01 |  |  |  |  | 40 | B.1.01 |

Notes:
- G1000: Expenses: (New Expense) 117584
- G1050: Expenses: (New Expense) 58792
- G1060: Expenses: (New Expense) 14698
- G1070: Expenses: (New Expense) 182255
- G1080: Expenses: (New Expense) 44094
- G1090: Expenses: (New Expense) 14698
- G1010: Expenses: (New Expense) 25323.2
- G1100: Expenses: (New Expense) 25323.2
- G1140: Expenses: (New Expense) 25323.2
- G1130: Expenses: (New Expense) 25323.2
- G1145: Expenses: (New Expense) 14809
- G1145E: Expenses: (New Expense) 10514.2
- G1155: Expenses: (New Expense) 25323.2
- G1150: Expenses: (New Expense) 351869
- G1150E: Expenses: (New Expense) 249822

| ID | WBS | Activity | Duration | Start | Finish | Predecessors | Complete | Total float | Calendar | Resources | Cost | Actual cost | EXECUTIVE SUMMAR | 02 Phase | 10 BOQ Cost | 16 BOQ-1 |
| --- | --- | --- | --- | --- | --- | --- | --- | --- | --- | --- | --- | --- | --- | --- | --- | --- |
|  | 7 | **UTILITIES FOR SITE OFFICE** |  | 2021-07-30 | 2023-04-13 |  |  |  |  |  |  |  |  |  |  |  |
| G1440 |  | Provide, maintain and remove on completion all temporary water connections | 263d | 2021-07-30 A | 2022-04-18 A | G1150 SS, M-1000, G1130 | 100% |  | 7 DAYS W/O HOLIDAY |  | 1,303.11 | 1,303.11 | 40 | GEN | Bill-01 | B.1.01 |
| G1450 |  | Provide, maintain and remove on completion all temporary electrical connections and facilities | 263d | 2021-07-30 A | 2022-04-18 A | G1150 SS, M-1000, G1100 | 100% |  | 7 DAYS W/O HOLIDAY |  | 1,303.11 | 1,303.11 | 40 | GEN | Bill-01 | B.1.01 |
| G1440R |  | Provide, maintain and remove on completion all temporary water connections | 360d | 2022-04-19 | 2023-04-13 | G1150 SS, M-1000, G1130, G1150E SS, G1440 |  | 2d | 7 DAYS W/O HOLIDAY | PROJ MANAGER [2160 h]; PROJECT ENGINEER [2160 h]; PLANNING ENGINEER [2160 h]; QUANTITY SURVEYOR [2160 h]; HSE ENGINEER [2160 h]; QA/QC ENGINER [2160 h]; DOCUMENT CONTROLLER [2160 h] | 925.18 |  | 40 | GEN | Bill-01 | B.1.01 |
| G1830R |  | Provide, maintain and remove on completion all temporary electrical connections and facilities | 360d | 2022-04-19 | 2023-04-13 | G1150 SS, M-1000, G1100, G1150E SS, G1450 |  | 2d | 7 DAYS W/O HOLIDAY |  | 925.18 |  | 40 | GEN | Bill-01 | B.1.01 |
|  | 10 | **PROJECT SIGN BOARD** |  | 2021-07-30 | 2023-04-13 |  |  |  |  |  |  |  |  |  |  |  |
| G1680 |  | Provide, maintain and remove on completion Project identification, information & safety signs | 26d | 2021-07-30 A | 2021-08-24 A | G1100 | 100% |  | 7 DAYS W/O HOLIDAY |  | 96,708.74 | 96,708.74 | 40 | GEN | Bill-01 | B.1.01 |
| G1690 |  | Maintain the work sites free of rubbish, debris, unused material, etc. | 238d | 2021-08-24 A | 2022-04-18 A | G1100, G1680, G1050, G1000, G1070, G1060, G1080, G1090 | 100% |  | 7 DAYS W/O HOLIDAY |  | 6,886.46 | 6,886.46 | 40 | GEN | Bill-01 | B.1.01 |
| G1690R |  | Maintain the work sites free of rubbish, debris, unused material, etc. | 360d | 2022-04-19 | 2023-04-13 | G1100, G1680, G1050, G1000, G1070, G1060, G1080, G1090, G1690 |  | 2d | 7 DAYS W/O HOLIDAY |  | 5,369.21 |  | 40 | GEN | Bill-01 | B.1.01 |
|  | 8 | **SITE ACCESS AND SECURITY** |  | 2021-07-30 | 2023-04-13 |  |  |  |  |  |  |  |  |  |  |  |
| G1460 |  | Provide watching, protection & security of the Site 24 hours per day, 7 Days per week | 263d | 2021-07-30 A | 2022-04-18 A | G1100 | 100% |  | 7 DAYS W/O HOLIDAY |  | 861.97 | 861.97 | 40 | GEN | Bill-01 | B.1.01 |
| G1490 |  | Provide for all temporary access roads as required for the Work | 51d | 2021-07-30 A | 2021-09-18 A | G1100 | 100% |  | 7 DAYS W/O HOLIDAY |  | 1,473.97 | 1,473.97 | 40 | GEN | Bill-01 | B.1.01 |
| G1470 |  | Non-objection of Traffic Management Plan compliance with its requirements | 20d | 2021-08-03 A | 2021-08-22 A | G1100 FS+51d | 100% |  | 7 DAYS W/O HOLIDAY |  | 1,473.96 | 1,473.96 | 40 | GEN | Bill-01 | B.1.01 |
| G1500 |  | Provide temporary hoarding around the Site and assigned working spaces | 212d | 2021-09-19 A | 2022-04-18 A | G1100, G1490 | 100% |  | 7 DAYS W/O HOLIDAY |  | 785.32 | 785.32 | 40 | GEN | Bill-01 | B.1.01 |
| G1480 |  | Allow for all necessary traffic management and reinstatement | 186d | 2021-10-15 A | 2022-04-18 A | G1100, G1470 | 100% |  | 7 DAYS W/O HOLIDAY |  | 757.46 | 757.46 | 40 | GEN | Bill-01 | B.1.01 |
| G1460R |  | Provide watching, protection & security of the Site 24 hours per day, 7 Days per week | 360d | 2022-04-19 | 2023-04-13 | G1100, G1460 |  | 2d | 7 DAYS W/O HOLIDAY |  | 611.98 |  | 40 | GEN | Bill-01 | B.1.01 |
| G1480R |  | Allow for all necessary traffic management and reinstatement | 360d | 2022-04-19 | 2023-04-13 | G1100, G1470, G1480 |  | 2d | 7 DAYS W/O HOLIDAY |  | 716.49 |  | 40 | GEN | Bill-01 | B.1.01 |
| G1500R |  | Provide temporary hoarding around the Site and assigned working spaces | 360d | 2022-04-19 | 2023-04-13 | G1100, G1490, G1500 |  | 2d | 7 DAYS W/O HOLIDAY |  | 688.63 |  | 40 | GEN | Bill-01 | B.1.01 |
|  | 12 | **WELFARE , HEALTH AND SAFETY** |  | 2021-07-30 | 2023-04-13 |  |  |  |  |  |  |  |  |  |  |  |
| G1770 |  | Comply with all safety requirements including carrying out safety audits | 263d | 2021-07-30 A | 2022-04-18 A | G1100 | 100% |  | 7 DAYS W/O HOLIDAY |  | 10,423.26 | 10,423.26 | 40 | GEN | Bill-01 | B.1.01 |
| G1780 |  | Appoint safety personnel to work full-time at Site. | 263d | 2021-07-30 A | 2022-04-18 A | G1100 | 100% |  | 7 DAYS W/O HOLIDAY |  | 10,423.26 | 10,423.26 | 40 | GEN | Bill-01 | B.1.01 |
| G1790 |  | Provision and maintenance of safety equipment and facilities for all Contractor's personnel | 263d | 2021-07-30 A | 2022-04-18 A | G1100 | 100% |  | 7 DAYS W/O HOLIDAY |  | 10,423.26 | 10,423.26 | 40 | GEN | Bill-01 | B.1.01 |
| G1770R |  | Comply with all safety requirements including carrying out safety audits | 360d | 2022-04-19 | 2023-04-13 | G1100, G1770 |  | 2d | 7 DAYS W/O HOLIDAY |  | 7,400.37 |  | 40 | GEN | Bill-01 | B.1.01 |
| G1780R |  | Appoint safety personnel to work full-time at Site. | 360d | 2022-04-19 | 2023-04-13 | G1100, G1780 |  | 2d | 7 DAYS W/O HOLIDAY |  | 7,400.37 |  | 40 | GEN | Bill-01 | B.1.01 |
| G1790R |  | Provision and maintenance of safety equipment and facilities for all Contractor's personnel | 360d | 2022-04-19 | 2023-04-13 | G1100, G1790 |  | 2d | 7 DAYS W/O HOLIDAY |  | 7,400.37 |  | 40 | GEN | Bill-01 | B.1.01 |

Notes:
- G1440: Expenses: (New Expense) 1303.11
- G1450: Expenses: (New Expense) 1303.11
- G1440R: Expenses: (New Expense) 925.18
- G1830R: Expenses: (New Expense) 925.18
- G1680: Expenses: (New Expense) 96708.7
- G1690: Expenses: (New Expense) 6886.46
- G1690R: Expenses: (New Expense) 5369.21
- G1460: Expenses: (New Expense) 861.97
- G1490: Expenses: (New Expense) 1473.97
- G1470: Expenses: (New Expense) 1473.96
- G1500: Expenses: (New Expense) 785.32
- G1480: Expenses: (New Expense) 757.46
- G1460R: Expenses: (New Expense) 611.98
- G1480R: Expenses: (New Expense) 716.49
- G1500R: Expenses: (New Expense) 688.63
- G1770: Expenses: (New Expense) 10423.3
- G1780: Expenses: (New Expense) 10423.3
- G1790: Expenses: (New Expense) 10423.3
- G1770R: Expenses: (New Expense) 7400.37
- G1780R: Expenses: (New Expense) 7400.37
- G1790R: Expenses: (New Expense) 7400.37

| ID | WBS | Activity | Type | Duration | Start | Finish | Predecessors | Complete | Total float | Free float | Calendar | Cost | Actual cost | EXECUTIVE SUMMAR | 02 Phase | 10 BOQ Cost | 16 BOQ-1 | Bill Code | 釬珛測鎢杸遙 | 03 Section | 05 Sub-section | 04 Discipline | 06 Zone | 01 Project | 07 Buildings & Ext. Works | 09 Subcontractors | Unit | Quantity |
| --- | --- | --- | --- | --- | --- | --- | --- | --- | --- | --- | --- | --- | --- | --- | --- | --- | --- | --- | --- | --- | --- | --- | --- | --- | --- | --- | --- | --- |
|  | 13 | **CONTRACTOR FACILITIES** |  |  | 2021-06-20 | 2023-04-14 |  |  |  |  |  |  |  |  |  |  |  |  |  |  |  |  |  |  |  |  |  |  |
| G1800 |  | Provide Site Offices complete with all necessary facilities. |  | 36d | 2021-06-20 A | 2021-07-25 A | M-1000 | 100% |  |  | 7 DAYS W/O HOLIDAY | 204,575.35 | 204,575.35 | 40 | GEN | Bill-01 | B.1.01 |  |  |  |  |  |  |  |  |  |  |  |
| G1810 |  | Allow for maintenance and operating of Site Offices and all facilities |  | 263d | 2021-07-30 A | 2022-04-18 A | G1800 | 100% |  |  | 7 DAYS W/O HOLIDAY | 50,591.85 | 50,591.85 | 40 | GEN | Bill-01 | B.1.01 |  |  |  |  |  |  |  |  |  |  |  |
| G1815 |  | Allow for Site transport |  | 263d | 2021-07-30 A | 2022-04-18 A | G1810 SS | 100% |  |  | 7 DAYS W/O HOLIDAY | 38,018.43 | 38,018.43 | 40 | GEN | Bill-01 | B.1.01 |  |  |  |  |  |  |  |  |  |  |  |
| G1810R |  | Allow for maintenance and operating of Site Offices and all facilities |  | 359d | 2022-04-19 | 2023-04-12 | G1800, G1810 |  | 1d | 0d | 7 DAYS W/O HOLIDAY | 35,727.63 |  | 40 | GEN | Bill-01 | B.1.01 |  |  |  |  |  |  |  |  |  |  |  |
| G1815R |  | Allow for Site transport |  | 187d | 2022-04-19 | 2022-10-22 | G1810 SS, G1810R SS, G1815 |  | 175d |  | 7 DAYS W/O HOLIDAY | 26,992.57 |  | 40 | GEN | Bill-01 | B.1.01 |  |  |  |  |  |  |  |  |  |  |  |
| G1820 |  | Allow for dismantling & removing the Site Offices to its original state upon the completion of the Works. |  | 2d | 2023-04-13 | 2023-04-14 | G1810, G1810R |  | 1d |  | 7 DAYS W/O HOLIDAY | 2,785.37 |  | 40 | GEN | Bill-01 | B.1.01 |  |  |  |  |  |  |  |  |  |  |  |
|  | 16 | **ENVIRONMENT CONTROLS** |  |  | 2021-06-20 | 2021-08-18 |  |  |  |  |  |  |  |  |  |  |  |  |  |  |  |  |  |  |  |  |  |  |
| G1280 |  | Prepare and submit Construction Environmental Management Plan |  | 29d | 2021-06-20 A | 2021-07-18 A | G1800 SS | 100% |  |  | 7 DAYS W/O HOLIDAY | 17,823.63 | 17,823.63 | 40 | GEN | Bill-01 | B.1.01 |  |  |  |  |  |  |  |  |  |  |  |
| G1290 |  | Comply with all conditions associated with the approval of the project specific EIA |  | 31d | 2021-07-19 A | 2021-08-18 A | G1280 | 100% |  |  | 7 DAYS W/O HOLIDAY | 17,823.63 | 17,823.63 | 40 | GEN | Bill-01 | B.1.01 |  |  |  |  |  |  |  |  |  |  |  |
|  | 1.2 | **PRELIMINARY** |  |  | 2021-06-20 | 2021-11-02 |  |  |  |  |  |  |  |  |  |  |  |  |  |  |  |  |  |  |  |  |  |  |
|  | 00 | **Manpower & Equipment** |  |  | 2021-06-20 | 2021-07-25 |  |  |  |  |  |  |  |  |  |  |  |  |  |  |  |  |  |  |  |  |  |  |
| PR-1010 |  | Mobilization of Project Team |  | 10d | 2021-06-20 A | 2021-06-29 A | M-1000, M-1005, M-1010, M-1015 | 100% |  |  | 7 DAYS W/O HOLIDAY | 17,823.63 | 17,823.63 |  | GEN | Bill-01 | B.1.01 | G1 | MB3200 | PRL | GEN | MOB | Gen | QEZ3 | GEN | MEP SUB |  |  |
| PR-1020 |  | Mobilization of Manpower and Plant | resource dependent | 26d | 2021-06-30 A | 2021-07-25 A | PR-1010 | 100% |  |  | 7 DAYS W/O HOLIDAY | 5,477.26 | 5,477.26 |  | GEN | Bill-01 | B.1.01 | G1 | MB3300 | PRL | GEN | MOB | Gen | QEZ3 | GEN | MEP SUB | Item | 1 |
|  | 2 | **Contract Deliverables** |  |  | 2021-06-20 | 2021-11-02 |  |  |  |  |  |  |  |  |  |  |  |  |  |  |  |  |  |  |  |  |  |  |
|  | 1 | **Project Quality Plan (Quality Assurance and Quality Control Plan)** |  |  | 2021-06-20 | 2021-11-02 |  |  |  |  |  |  |  |  |  |  |  |  |  |  |  |  |  |  |  |  |  |  |
| PR-1050 |  | Prepare and Submit Quality Plan |  | 2d | 2021-06-20 A | 2021-06-21 A | PR-1010 | 100% |  |  |  | 7,392.88 | 7,392.88 |  | GEN | Bill-01 | B.1.01 | G1 | MB1900 | PRL | GEN | MOB | Gen | QEZ3 | GEN | MEP SUB |  |  |
| PR-1130 |  | Client Review/Comment/Quality Plan |  | 23d | 2021-06-22 A | 2021-07-27 A | PR-1050 | 100% |  |  |  | 7,392.88 | 7,392.88 |  | GEN | Bill-01 | B.1.01 | G1 | MB1900 | PRL | GEN | MOB | Gen | QEZ3 | GEN | MEP SUB |  |  |
| PR-1160 |  | Rectify Comment and Resubmit Quality Plan |  | 22d | 2021-07-27 A | 2021-08-25 A | PR-1130 | 100% |  |  |  | 7,392.88 | 7,392.88 |  | GEN | Bill-01 | B.1.01 | G1 | MB1900 | PRL | GEN | MOB | Gen | QEZ3 | GEN | MEP SUB |  |  |
| PR-1180 |  | Client Review /Approval Quality Plan |  | 50d | 2021-08-25 A | 2021-11-02 A | PR-1160 | 100% |  |  |  | 7,392.88 | 7,392.88 |  | GEN | Bill-01 | B.1.01 | G1 | MB1900 | PRL | GEN | MOB | Gen | QEZ3 | GEN | MEP SUB |  |  |
|  | 3 | **HSE Plan** |  |  | 2021-06-20 | 2021-08-25 |  |  |  |  |  |  |  |  |  |  |  |  |  |  |  |  |  |  |  |  |  |  |
| PR-1040 |  | Prepare and Submit HSE Plan |  | 5d | 2021-06-20 A | 2021-06-24 A | PR-1010 | 100% |  |  |  | 7,392.88 | 7,392.88 |  | GEN | Bill-01 | B.1.01 | G1 | MB1900 | PRL | GEN | MOB | Gen | QEZ3 | GEN | MEP SUB |  |  |
| PR-1120 |  | Client Review/Comment HSE Plan |  | 30d | 2021-06-27 A | 2021-08-10 A | PR-1040 | 100% |  |  |  | 7,392.88 | 7,392.88 |  | GEN | Bill-01 | B.1.01 | G1 | MB1900 | PRL | GEN | MOB | Gen | QEZ3 | GEN | MEP SUB |  |  |
| PR-1150 |  | Rectify Comment and Resubmit HSE Plan |  | 7d | 2021-08-11 A | 2021-08-19 A | PR-1120 | 100% |  |  |  | 7,392.88 | 7,392.88 |  | GEN | Bill-01 | B.1.01 | G1 | MB1900 | PRL | GEN | MOB | Gen | QEZ3 | GEN | MEP SUB |  |  |
| PR-1170 |  | Client Review/Approval HSE Plan |  | 4d | 2021-08-22 A | 2021-08-25 A | PR-1150 | 100% |  |  |  | 7,392.88 | 7,392.88 |  | GEN | Bill-01 | B.1.01 | G1 | MB1900 | PRL | GEN | MOB | Gen | QEZ3 | GEN | MEP SUB |  |  |

Notes:
- G1800: Expenses: (New Expense) 204575
- G1810: Expenses: (New Expense) 50591.8
- G1815: Expenses: (New Expense) 38018.4
- G1810R: Expenses: (New Expense) 35727.6
- G1815R: Expenses: (New Expense) 26992.6
- G1820: Expenses: (New Expense) 2785.37
- G1280: Expenses: (New Expense) 17823.6
- G1290: Expenses: (New Expense) 17823.6
- PR-1010: Expenses: (New Expense) 17823.6
- PR-1020: Expenses: (New Expense) 5477.26
- PR-1050: Expenses: (New Expense) 7392.88
- PR-1130: Expenses: (New Expense) 7392.88
- PR-1160: Expenses: (New Expense) 7392.88
- PR-1180: Expenses: (New Expense) 7392.88
- PR-1040: Expenses: (New Expense) 7392.88
- PR-1120: Expenses: (New Expense) 7392.88
- PR-1150: Expenses: (New Expense) 7392.88
- PR-1170: Expenses: (New Expense) 7392.88

| ID | WBS | Activity | Duration | Start | Finish | Predecessors | Complete | Total float | Free float | Resources | Cost | Actual cost | Bill Code | 釬珛測鎢杸遙 | 02 Phase | 03 Section | 05 Sub-section | 04 Discipline | 06 Zone | 01 Project | 07 Buildings & Ext. Works | 09 Subcontractors | 10 BOQ Cost | 16 BOQ-1 | DELAY EVENT 01 | PRC-MTL |
| --- | --- | --- | --- | --- | --- | --- | --- | --- | --- | --- | --- | --- | --- | --- | --- | --- | --- | --- | --- | --- | --- | --- | --- | --- | --- | --- |
|  | 4 | **Project Execution Plan - Baseline Programme** |  | 2021-06-30 | 2021-09-23 |  |  |  |  |  |  |  |  |  |  |  |  |  |  |  |  |  |  |  |  |  |
| PR-1000 |  | Prepare and Submit | 10d | 2021-06-30 A | 2021-07-13 A | M-1000, PR-1010 | 100% |  |  |  | 1,837.25 | 1,837.25 | G1 | MB1900 | GEN | PRL | GEN | MOB | Gen | QEZ3 | GEN | MEP SUB | Bill-01 | B.1.01 |  |  |
| PR-1030 |  | Client Review/Comment | 13d | 2021-07-14 A | 2021-08-04 A | PR-1000 | 100% |  |  |  | 1,837.25 | 1,837.25 | G1 | MB1900 | GEN | PRL | GEN | MOB | Gen | QEZ3 | GEN | MEP SUB | Bill-01 | B.1.01 |  |  |
| PR-1110 |  | Rectify Comment and Resubmit | 15d | 2021-08-05 A | 2021-08-25 A | PR-1030 | 100% |  |  |  | 1,837.25 | 1,837.25 | G1 | MB1900 | GEN | PRL | GEN | MOB | Gen | QEZ3 | GEN | MEP SUB | Bill-01 | B.1.01 |  |  |
| PR-1140 |  | Client Review/Approval | 22d | 2021-08-25 A | 2021-09-23 A | PR-1110 | 100% |  |  |  | 1,837.25 | 1,837.25 | G1 | MB1900 | GEN | PRL | GEN | MOB | Gen | QEZ3 | GEN | MEP SUB | Bill-01 | B.1.01 |  |  |
|  | ENG | **SHOP DRAWINGS** |  | 2021-06-20 | 2023-01-22 |  |  |  |  |  |  |  |  |  |  |  |  |  |  |  |  |  |  |  |  |  |
|  | SD | **Shop Drawings** |  | 2021-06-20 | 2023-01-22 |  |  |  |  |  |  |  |  |  |  |  |  |  |  |  |  |  |  |  |  |  |
|  | 2 | **Process Shop Drawings** |  | 2021-06-20 | 2023-01-22 |  |  |  |  |  |  |  |  |  |  |  |  |  |  |  |  |  |  |  |  |  |
|  | 1 | **Process and Instrumentation Diagram** |  | 2021-06-20 | 2021-12-01 |  |  |  |  |  |  |  |  |  |  |  |  |  |  |  |  |  |  |  |  |  |
| EN-1370 |  | Prepare & Submit for Shop Drawing Process and Instrumentation Diagram | 68d | 2021-06-20 A | 2021-09-26 A | M-1000 | 100% |  |  | DESIGN ENGR-PROCESS [72 h] | 740.11 | 740.11 | G8 | EG3640 | ENG | SHOP | TSRPS | INFRA | Gen | QEZ3 | GEN | MEP SUB | Bill-01 | B.1.01 | DE01 |  |
| EN-1380 |  | Review and Comments from Engineer Shop Drawing Process and Instrumentation Diagram | 5d | 2021-09-27 A | 2021-10-03 A | EN-1370 | 100% |  |  |  | 737.7 | 737.7 | G8 | EG3650 | ENG | SHOP | TSRPS | INFRA | Gen | QEZ3 | GEN | MEP SUB | Bill-01 | B.1.01 | DE01 |  |
| EN-1390 |  | Incorporate Comments and Resubmit Shop Drawing Process and Instrumentation Diagram | 39d | 2021-10-04 A | 2021-11-25 A | EN-1380 | 100% |  |  |  | 737.7 | 737.7 | G9 | PC1450 | ENG | PROC | GEN | MECH | Gen | QEZ3 | GEN | MEP SUB | Bill-01 | B.1.01 |  | MAT |
| EN-1400 |  | Review and Approval from Engineer Shop Drawing Process and Instrumentation Diagram | 31d | 2021-10-20 A | 2021-12-01 A | EN-1390 | 100% |  |  |  | 737.7 | 737.7 | G9 | PC1460 | ENG | PROC | GEN | MECH | Gen | QEZ3 | GEN | MEP SUB | Bill-01 | B.1.01 |  | MAT |
|  | 2 | **Process Description** |  | 2021-07-06 | 2021-12-23 |  |  |  |  |  |  |  |  |  |  |  |  |  |  |  |  |  |  |  |  |  |
| EN-1410 |  | Prepare & Submit for Shop Drawing Process Description | 44d | 2021-07-06 A | 2021-09-08 A | EN-1370 | 100% |  |  | DESIGN ENGR-PROCESS [60 h] | 737.7 | 737.7 | G8 | EG3640 | ENG | SHOP | TSRPS | INFRA | Gen | QEZ3 | GEN | MEP SUB | Bill-01 | B.1.01 |  |  |
| EN-1420 |  | Review and Comments from Engineer Shop Drawing Process Description | 1d | 2021-09-09 A | 2021-09-09 A | EN-1410 | 100% |  |  |  | 737.7 | 737.7 | G8 | EG3650 | ENG | SHOP | TSRPS | INFRA | Gen | QEZ3 | GEN | MEP SUB | Bill-01 | B.1.01 |  |  |
| EN-1430 |  | Incorporate Comments and Resubmit Shop Drawing Process Description | 59d | 2021-09-12 A | 2021-12-01 A | EN-1420 | 100% |  |  |  | 737.7 | 737.7 | G9 | PC1450 | ENG | PROC | GEN | MECH | Gen | QEZ3 | GEN | MEP SUB | Bill-01 | B.1.01 |  | MAT |
| EN-1440 |  | Review and Approval from Engineer Shop Drawing Process Description | 16d | 2021-12-02 A | 2021-12-23 A | EN-1430 | 100% |  |  |  | 737.7 | 737.7 | G9 | PC1460 | ENG | PROC | GEN | MECH | Gen | QEZ3 | GEN | MEP SUB | Bill-01 | B.1.01 |  | MAT |
|  | 3 | **Valve List** |  | 2021-07-25 | 2023-01-22 |  |  |  |  |  |  |  |  |  |  |  |  |  |  |  |  |  |  |  |  |  |
| EN-1450 |  | Prepare & Submit for Valve List | 35d | 2021-07-25 A | 2021-09-09 A | EN-1410 | 100% |  |  | DESIGN ENGR-PROCESS [30 h] | 737.7 | 737.7 | G8 | EG3640 | ENG | SHOP | TSRPS | INFRA | Gen | QEZ3 | GEN | MEP SUB | Bill-01 | B.1.01 |  |  |
| EN-1460 |  | Review and Comments from Engineer Valve List | 3d | 2021-09-12 A | 2021-09-14 A | EN-1450 | 100% |  |  |  | 737.7 | 737.7 | G8 | EG3650 | ENG | SHOP | TSRPS | INFRA | Gen | QEZ3 | GEN | MEP SUB | Bill-01 | B.1.01 |  |  |
| EN-1470 |  | Incorporate Comments and Resubmit Valve List | 153d | 2021-09-15 A | 2022-04-18 A | EN-1460 | 100% |  |  |  | 29.51 | 29.51 | G9 | PC1450 | ENG | PROC | GEN | MECH | Gen | QEZ3 | GEN | MEP SUB | Bill-01 | B.1.01 |  | MAT |
| EN-1470R |  | Incorporate Comments and Resubmit Valve List | 187d | 2022-04-19 | 2023-01-15 | EN-1460, EN-1470 |  | 2d | 0d |  | 708.19 |  | G9 | PC1450 | ENG | PROC | GEN | MECH | Gen | QEZ3 | GEN | MEP SUB | Bill-01 | B.1.01 |  | MAT |
| EN-1480 |  | Review and Approval from Engineer Valve List | 5d | 2023-01-16 | 2023-01-22 | EN-1470, EN-1470R |  | 2d | 1d |  | 737.7 |  | G9 | PC1460 | ENG | PROC | GEN | MECH | Gen | QEZ3 | GEN | MEP SUB | Bill-01 | B.1.01 |  | MAT |

Notes:
- PR-1000: Expenses: (New Expense) 1837.25
- PR-1030: Expenses: (New Expense) 1837.25
- PR-1110: Expenses: (New Expense) 1837.25
- PR-1140: Expenses: (New Expense) 1837.25
- EN-1370: Expenses: (New Expense) 740.11
- EN-1380: Expenses: (New Expense) 737.7
- EN-1390: Expenses: (New Expense) 737.7
- EN-1400: Expenses: (New Expense) 737.7
- EN-1410: Expenses: (New Expense) 737.7
- EN-1420: Expenses: (New Expense) 737.7
- EN-1430: Expenses: (New Expense) 737.7
- EN-1440: Expenses: (New Expense) 737.7
- EN-1450: Expenses: (New Expense) 737.7
- EN-1460: Expenses: (New Expense) 737.7
- EN-1470: Expenses: (New Expense) 29.51
- EN-1470R: Expenses: (New Expense) 708.19
- EN-1480: Expenses: (New Expense) 737.7

| ID | WBS | Activity | Duration | Start | Finish | Predecessors | Complete | Total float | Free float | Resources | Cost | Actual cost | Bill Code | 釬珛測鎢杸遙 | 02 Phase | 03 Section | 05 Sub-section | 04 Discipline | 06 Zone | 01 Project | 07 Buildings & Ext. Works | 09 Subcontractors | 10 BOQ Cost | 16 BOQ-1 | DELAY EVENT 01 | PRC-MTL |
| --- | --- | --- | --- | --- | --- | --- | --- | --- | --- | --- | --- | --- | --- | --- | --- | --- | --- | --- | --- | --- | --- | --- | --- | --- | --- | --- |
|  | 3 | **Civil Works Shop Drawing** |  | 2021-08-08 | 2022-04-24 |  |  |  |  |  |  |  |  |  |  |  |  |  |  |  |  |  |  |  |  |  |
|  | 3 | **Deep Shaft Lift Pumping Station Typical Water Proofing Shop Drawing** |  | 2021-08-08 | 2021-12-05 |  |  |  |  |  |  |  |  |  |  |  |  |  |  |  |  |  |  |  |  |  |
| EN-2170 |  | Prepare & Submit for Deep Shaft Lift Pumping Station Typical Water Proofing | 37d | 2021-08-08 A | 2021-09-27 A | EN-1380 | 100% |  |  |  | 737.7 | 737.7 | G8 | EG3640 | ENG | SHOP | TSRPS | INFRA | Gen | QEZ3 | GEN | MEP SUB | Bill-01 | B.1.01 | DE01 |  |
| EN-2180 |  | Review and Comments from Engineer Deep Shaft Lift Pumping Station Typical Water Proofing | 4d | 2021-09-28 A | 2021-10-03 A | EN-2170 | 100% |  |  |  | 737.7 | 737.7 | G8 | EG3650 | ENG | SHOP | TSRPS | INFRA | Gen | QEZ3 | GEN | MEP SUB | Bill-01 | B.1.01 | DE01 |  |
| EN-2190 |  | Incorporate Comments and Resubmit Deep Shaft Lift Pumping Station Typical Water Proofing | 42d | 2021-10-04 A | 2021-11-30 A | EN-2180 | 100% |  |  |  | 737.7 | 737.7 | G9 | PC1450 | ENG | PROC | GEN | MECH | Gen | QEZ3 | GEN | MEP SUB | Bill-01 | B.1.01 | DE01 | MAT |
| EN-2200 |  | Review and Approval from Engineer Deep Shaft Lift Pumping Station Typical Water Proofing | 4d | 2021-11-30 A | 2021-12-05 A | EN-2190 | 100% |  |  |  | 737.7 | 737.7 | G9 | PC1460 | ENG | PROC | GEN | MECH | Gen | QEZ3 | GEN | MEP SUB | Bill-01 | B.1.01 | DE01 | MAT |
|  | 1 | **Deep Shaft Lift Pumping Station Basement Reinforcement Details** |  | 2021-08-08 | 2022-03-24 |  |  |  |  |  |  |  |  |  |  |  |  |  |  |  |  |  |  |  |  |  |
| EN-2210 |  | Prepare & Submit for Deep Shaft Lift Pumping Station Basement Reinforcement Details | 37d | 2021-08-08 A | 2021-09-27 A | EN-1380 | 100% |  |  | DESIGN ENGR-STRUCTURAL [90 h] | 737.7 | 737.7 | G8 | EG3640 | ENG | SHOP | TSRPS | INFRA | Gen | QEZ3 | GEN | MEP SUB | Bill-01 | B.1.01 | DE01 |  |
| EN-2220 |  | Review and Comments from Engineer Deep Shaft Lift Pumping Station Basement Reinforcement Details | 4d | 2021-09-28 A | 2021-10-03 A | EN-2210 | 100% |  |  |  | 737.7 | 737.7 | G8 | EG3650 | ENG | SHOP | TSRPS | INFRA | Gen | QEZ3 | GEN | MEP SUB | Bill-01 | B.1.01 | DE01 |  |
| EN-2230 |  | Incorporate Comments and Resubmit Deep Shaft Lift Pumping Station Basement Reinforcement Details | 42d | 2021-10-04 A | 2021-11-30 A | EN-2220 | 100% |  |  |  | 737.7 | 737.7 | G9 | PC1450 | ENG | PROC | GEN | MECH | Gen | QEZ3 | GEN | MEP SUB | Bill-01 | B.1.01 | DE01 | MAT |
| EN-2240 |  | Review and Approval from Engineer Deep Shaft Lift Pumping Station Basement Reinforcement Details | 82d | 2021-11-30 A | 2022-03-24 A | EN-2230 | 100% |  |  |  | 737.7 | 737.7 | G9 | PC1460 | ENG | PROC | GEN | MECH | Gen | QEZ3 | GEN | MEP SUB | Bill-01 | B.1.01 | DE01 | MAT |
|  | 2 | **Deep Shaft Lift Pumping Station Basement Details** |  | 2021-08-08 | 2022-03-15 |  |  |  |  |  |  |  |  |  |  |  |  |  |  |  |  |  |  |  |  |  |
| EN-2250 |  | Prepare & Submit for Deep Shaft Lift Pumping Station Basement Details | 117d | 2021-08-08 A | 2022-01-17 A | EN-1380 | 100% |  |  |  | 737.7 | 737.7 | G8 | EG3640 | ENG | SHOP | TSRPS | INFRA | Gen | QEZ3 | GEN | MEP SUB | Bill-01 | B.1.01 | DE01 |  |
| EN-2260 |  | Review and Comments from Engineer Deep Shaft Lift Pumping Station Basement Details | 20d | 2022-01-18 A | 2022-02-15 A | EN-2250 | 100% |  |  |  | 737.7 | 737.7 | G8 | EG3650 | ENG | SHOP | TSRPS | INFRA | Gen | QEZ3 | GEN | MEP SUB | Bill-01 | B.1.01 | DE01 |  |
| EN-2270 |  | Incorporate Comments and Resubmit Deep Shaft Lift Pumping Station Basement Details | 5d | 2022-02-16 A | 2022-02-22 A | EN-2260 | 100% |  |  |  | 737.7 | 737.7 | G9 | PC1450 | ENG | PROC | GEN | MECH | Gen | QEZ3 | GEN | MEP SUB | Bill-01 | B.1.01 | DE01 | MAT |
| EN-2280 |  | Review and Approval from Engineer Deep Shaft Lift Pumping Station Basement Details | 16d | 2022-02-22 A | 2022-03-15 A | EN-2270 | 100% |  |  |  | 737.7 | 737.7 | G9 | PC1460 | ENG | PROC | GEN | MECH | Gen | QEZ3 | GEN | MEP SUB | Bill-01 | B.1.01 | DE01 | MAT |
|  | 8 | **Deep Shaft Lift Pumping Station Basement RFT. Details** |  | 2021-08-08 | 2022-04-24 |  |  |  |  |  |  |  |  |  |  |  |  |  |  |  |  |  |  |  |  |  |
| EN-2450 |  | Prepare & Submit for Deep Shaft Lift Pumping Station Basement RFT. Details | 117d | 2021-08-08 A | 2022-01-17 A | EN-1380 | 100% |  |  |  | 737.7 | 737.7 | G8 | EG3640 | ENG | SHOP | TSRPS | INFRA | Gen | QEZ3 | GEN | MEP SUB | Bill-01 | B.1.01 | DE01 |  |
| EN-2460 |  | Review and Comments from Engineer Deep Shaft Lift Pumping Station Basement RFT. Details | 20d | 2022-01-18 A | 2022-02-15 A | EN-2450 | 100% |  |  |  | 737.7 | 737.7 | G8 | EG3650 | ENG | SHOP | TSRPS | INFRA | Gen | QEZ3 | GEN | MEP SUB | Bill-01 | B.1.01 | DE01 |  |
| EN-2470 |  | Incorporate Comments and Resubmit Deep Shaft Lift Pumping Station Basement RFT. Details | 5d | 2022-02-16 A | 2022-02-22 A | EN-2460 | 100% |  |  |  | 737.7 | 737.7 | G9 | PC1450 | ENG | PROC | GEN | MECH | Gen | QEZ3 | GEN | MEP SUB | Bill-01 | B.1.01 | DE01 | MAT |
| EN-2480 |  | Review and Approval from Engineer Deep Shaft Lift Pumping Station Basement RFT. Details | 4d | 2022-04-19 | 2022-04-24 | EN-2470 |  | 2.33d | 2d |  | 737.7 |  | G9 | PC1460 | ENG | PROC | GEN | MECH | Gen | QEZ3 | GEN | MEP SUB | Bill-01 | B.1.01 | DE01 | MAT |
|  | 7 | **Deep Shaft Lift Pumping Station Section Level** |  | 2021-08-22 | 2022-03-24 |  |  |  |  |  |  |  |  |  |  |  |  |  |  |  |  |  |  |  |  |  |
| EN-2410 |  | Prepare & Submit for Deep Shaft Lift Pumping Station Section Level | 107d | 2021-08-22 A | 2022-01-17 A | EN-2450 | 100% |  |  | DESIGN ENGR-STRUCTURAL [90 h] | 737.7 | 737.7 | G8 | EG3640 | ENG | SHOP | TSRPS | INFRA | Gen | QEZ3 | GEN | MEP SUB | Bill-01 | B.1.01 |  |  |
| EN-2420 |  | Review and Comments from Engineer Deep Shaft Lift Pumping Station Section Level | 20d | 2022-01-18 A | 2022-02-15 A | EN-2410 | 100% |  |  |  | 737.7 | 737.7 | G8 | EG3650 | ENG | SHOP | TSRPS | INFRA | Gen | QEZ3 | GEN | MEP SUB | Bill-01 | B.1.01 |  |  |
| EN-2430 |  | Incorporate Comments and Resubmit Deep Shaft Lift Pumping Station Section Level | 5d | 2022-02-16 A | 2022-02-22 A | EN-2420 | 100% |  |  |  | 737.7 | 737.7 | G9 | PC1450 | ENG | PROC | GEN | MECH | Gen | QEZ3 | GEN | MEP SUB | Bill-01 | B.1.01 |  | MAT |
| EN-2440 |  | Review and Approval from Engineer Deep Shaft Lift Pumping Station Section Level | 23d | 2022-02-22 A | 2022-03-24 A | EN-2430 | 100% |  |  |  | 737.7 | 737.7 | G9 | PC1460 | ENG | PROC | GEN | MECH | Gen | QEZ3 | GEN | MEP SUB | Bill-01 | B.1.01 |  | MAT |

Notes:
- EN-2170: Expenses: (New Expense) 737.7
- EN-2180: Expenses: (New Expense) 737.7
- EN-2190: Expenses: (New Expense) 737.7
- EN-2200: Expenses: (New Expense) 737.7
- EN-2210: Expenses: (New Expense) 737.7
- EN-2220: Expenses: (New Expense) 737.7
- EN-2230: Expenses: (New Expense) 737.7
- EN-2240: Expenses: (New Expense) 737.7
- EN-2250: Expenses: (New Expense) 737.7
- EN-2260: Expenses: (New Expense) 737.7
- EN-2270: Expenses: (New Expense) 737.7
- EN-2280: Expenses: (New Expense) 737.7
- EN-2450: Expenses: (New Expense) 737.7
- EN-2460: Expenses: (New Expense) 737.7
- EN-2470: Expenses: (New Expense) 737.7
- EN-2480: Expenses: (New Expense) 737.7
- EN-2410: Expenses: (New Expense) 737.7
- EN-2420: Expenses: (New Expense) 737.7
- EN-2430: Expenses: (New Expense) 737.7
- EN-2440: Expenses: (New Expense) 737.7

| ID | WBS | Activity | Duration | Start | Finish | Predecessors | Complete | Resources | Cost | Actual cost | Bill Code | 釬珛測鎢杸遙 | 02 Phase | 03 Section | 05 Sub-section | 04 Discipline | 06 Zone | 01 Project | 07 Buildings & Ext. Works | 09 Subcontractors | 10 BOQ Cost | 16 BOQ-1 | PRC-MTL |
| --- | --- | --- | --- | --- | --- | --- | --- | --- | --- | --- | --- | --- | --- | --- | --- | --- | --- | --- | --- | --- | --- | --- | --- |
|  | 6 | **Deep Shaft Lift Pumping Station Roof Beam Column & HCS Details** |  | 2021-08-22 | 2022-03-24 |  |  |  |  |  |  |  |  |  |  |  |  |  |  |  |  |  |  |
| EN-2370 |  | Prepare & Submit for Deep Shaft Lift Pumping Station Roof Beam Column & HCS Details | 107d | 2021-08-22 A | 2022-01-17 A | EN-2450 | 100% | DESIGN ENGR-STRUCTURAL [90 h] | 737.7 | 737.7 | G8 | EG3640 | ENG | SHOP | TSRPS | INFRA | Gen | QEZ3 | GEN | MEP SUB | Bill-01 | B.1.01 |  |
| EN-2380 |  | Review and Comments from Engineer Deep Shaft Lift Pumping Station Roof Beam Column & HCS Details | 20d | 2022-01-18 A | 2022-02-15 A | EN-2370 | 100% |  | 737.7 | 737.7 | G8 | EG3650 | ENG | SHOP | TSRPS | INFRA | Gen | QEZ3 | GEN | MEP SUB | Bill-01 | B.1.01 |  |
| EN-2390 |  | Incorporate Comments and Resubmit Deep Shaft Lift Pumping Station Roof Beam Column & HCS Details | 5d | 2022-02-16 A | 2022-02-22 A | EN-2380 | 100% |  | 737.7 | 737.7 | G9 | PC1450 | ENG | PROC | GEN | MECH | Gen | QEZ3 | GEN | MEP SUB | Bill-01 | B.1.01 | MAT |
| EN-2400 |  | Review and Approval from Engineer Deep Shaft Lift Pumping Station Roof Beam Column & HCS Details | 23d | 2022-02-22 A | 2022-03-24 A | EN-2390 | 100% |  | 737.7 | 737.7 | G9 | PC1460 | ENG | PROC | GEN | MECH | Gen | QEZ3 | GEN | MEP SUB | Bill-01 | B.1.01 | MAT |
|  | 5 | **Precast/Cast-in-situ Wall Typical Connection Details** |  | 2021-08-22 | 2022-03-24 |  |  |  |  |  |  |  |  |  |  |  |  |  |  |  |  |  |  |
| EN-2330 |  | Prepare & Submit for Precast/Cast-in-situ Wall Typical Connection Details | 68d | 2021-08-22 A | 2021-11-23 A | EN-2450 | 100% | DESIGN ENGR-STRUCTURAL [90 h] | 737.7 | 737.7 | G8 | EG3640 | ENG | SHOP | TSRPS | INFRA | Gen | QEZ3 | GEN | MEP SUB | Bill-01 | B.1.01 |  |
| EN-2340 |  | Review and Comments from Engineer Precast/Cast-in-situ Wall Typical Connection Details | 47d | 2021-11-24 A | 2022-01-27 A | EN-2330 | 100% |  | 737.7 | 737.7 | G8 | EG3650 | ENG | SHOP | TSRPS | INFRA | Gen | QEZ3 | GEN | MEP SUB | Bill-01 | B.1.01 |  |
| EN-2350 |  | Incorporate Comments and Resubmit Precast/Cast-in-situ Wall Typical Connection Details | 16d | 2022-01-27 A | 2022-02-20 A | EN-2340 | 100% |  | 737.7 | 737.7 | G9 | PC1450 | ENG | PROC | GEN | MECH | Gen | QEZ3 | GEN | MEP SUB | Bill-01 | B.1.01 | MAT |
| EN-2360 |  | Review and Approval from Engineer Precast/Cast-in-situ Wall Typical Connection Details | 25d | 2022-02-20 A | 2022-03-24 A | EN-2350 | 100% |  | 737.7 | 737.7 | G9 | PC1460 | ENG | PROC | GEN | MECH | Gen | QEZ3 | GEN | MEP SUB | Bill-01 | B.1.01 | MAT |
|  | 16 | **Typical Beam Connection Details** |  | 2021-08-22 | 2022-03-24 |  |  |  |  |  |  |  |  |  |  |  |  |  |  |  |  |  |  |
| EN-2650 |  | Prepare & Submit for Typical Beam Connection Details | 107d | 2021-08-22 A | 2022-01-17 A | EN-2450 | 100% | DESIGN ENGR-STRUCTURAL [90 h] | 737.7 | 737.7 | G8 | EG3640 | ENG | SHOP | TSRPS | INFRA | Gen | QEZ3 | GEN | MEP SUB | Bill-01 | B.1.01 |  |
| EN-2660 |  | Review and Comments from Engineer Typical Beam Connection Details | 20d | 2022-01-18 A | 2022-02-15 A | EN-2650 | 100% |  | 737.7 | 737.7 | G8 | EG3650 | ENG | SHOP | TSRPS | INFRA | Gen | QEZ3 | GEN | MEP SUB | Bill-01 | B.1.01 |  |
| EN-2670 |  | Incorporate Comments and Resubmit Typical Beam Connection Details | 3d | 2022-02-16 A | 2022-02-20 A | EN-2660 | 100% |  | 737.7 | 737.7 | G9 | PC1450 | ENG | PROC | GEN | MECH | Gen | QEZ3 | GEN | MEP SUB | Bill-01 | B.1.01 | MAT |
| EN-2680 |  | Review and Approval from Engineer Typical Beam Connection Details | 24d | 2022-02-21 A | 2022-03-24 A | EN-2670 | 100% |  | 737.7 | 737.7 | G9 | PC1460 | ENG | PROC | GEN | MECH | Gen | QEZ3 | GEN | MEP SUB | Bill-01 | B.1.01 | MAT |
|  | 13 | **Beam Support Precast/Cast-in-situ Ring Details** |  | 2021-08-22 | 2022-03-24 |  |  |  |  |  |  |  |  |  |  |  |  |  |  |  |  |  |  |
| EN-2770 |  | Prepare & Submit for Beam Support Precast/Cast-in-situ Ring Details | 107d | 2021-08-22 A | 2022-01-17 A | EN-2450 | 100% | DESIGN ENGR-STRUCTURAL [20 h] | 737.7 | 737.7 | G8 | EG3640 | ENG | SHOP | TSRPS | INFRA | Gen | QEZ3 | GEN | MEP SUB | Bill-01 | B.1.01 |  |
| EN-2780 |  | Review and Comments from Engineer Beam Support Precast/Cast-in-situ Ring Details | 20d | 2022-01-18 A | 2022-02-15 A | EN-2770 | 100% |  | 737.7 | 737.7 | G8 | EG3650 | ENG | SHOP | TSRPS | INFRA | Gen | QEZ3 | GEN | MEP SUB | Bill-01 | B.1.01 |  |
| EN-2790 |  | Incorporate Comments and Resubmit Beam Support Precast/Cast-in-situ Ring Details | 3d | 2022-02-16 A | 2022-02-20 A | EN-2780 | 100% |  | 737.7 | 737.7 | G9 | PC1450 | ENG | PROC | GEN | MECH | Gen | QEZ3 | GEN | MEP SUB | Bill-01 | B.1.01 | MAT |
| EN-2800 |  | Review and Approval from Engineer Beam Support Precast/Cast-in-situ Ring Details | 24d | 2022-02-21 A | 2022-03-24 A | EN-2790 | 100% |  | 737.7 | 737.7 | G9 | PC1460 | ENG | PROC | GEN | MECH | Gen | QEZ3 | GEN | MEP SUB | Bill-01 | B.1.01 | MAT |
|  | 12 | **Beam Support Precast/Cast-in-situ Ring reinforcement Details** |  | 2021-08-22 | 2022-03-24 |  |  |  |  |  |  |  |  |  |  |  |  |  |  |  |  |  |  |
| EN-2570 |  | Prepare & Submit for Beam Support Precast/Cast-in-situ Ring reinforcement Details | 85d | 2021-08-22 A | 2021-12-16 A | EN-2450 | 100% | DESIGN ENGR-STRUCTURAL [90 h] | 737.7 | 737.7 | G8 | EG3640 | ENG | SHOP | TSRPS | INFRA | Gen | QEZ3 | GEN | MEP SUB | Bill-01 | B.1.01 |  |
| EN-2580 |  | Review and Comments from Engineer Beam Support Precast/Cast-in-situ Ring reinforcement Details | 42d | 2021-12-19 A | 2022-02-15 A | EN-2570 | 100% |  | 737.7 | 737.7 | G8 | EG3650 | ENG | SHOP | TSRPS | INFRA | Gen | QEZ3 | GEN | MEP SUB | Bill-01 | B.1.01 |  |
| EN-2590 |  | Incorporate Comments and Resubmit Beam Support Precast/Cast-in-situ Ring reinforcement Details | 3d | 2022-02-16 A | 2022-02-20 A | EN-2580 | 100% |  | 737.7 | 737.7 | G9 | PC1450 | ENG | PROC | GEN | MECH | Gen | QEZ3 | GEN | MEP SUB | Bill-01 | B.1.01 | MAT |
| EN-2600 |  | Review and Approval from Engineer Beam Support Precast/Cast-in-situ Ring reinforcement Details | 25d | 2022-02-20 A | 2022-03-24 A | EN-2590 | 100% |  | 737.7 | 737.7 | G9 | PC1460 | ENG | PROC | GEN | MECH | Gen | QEZ3 | GEN | MEP SUB | Bill-01 | B.1.01 | MAT |

Notes:
- EN-2370: Expenses: (New Expense) 737.7
- EN-2380: Expenses: (New Expense) 737.7
- EN-2390: Expenses: (New Expense) 737.7
- EN-2400: Expenses: (New Expense) 737.7
- EN-2330: Expenses: (New Expense) 737.7
- EN-2340: Expenses: (New Expense) 737.7
- EN-2350: Expenses: (New Expense) 737.7
- EN-2360: Expenses: (New Expense) 737.7
- EN-2650: Expenses: (New Expense) 737.7
- EN-2660: Expenses: (New Expense) 737.7
- EN-2670: Expenses: (New Expense) 737.7
- EN-2680: Expenses: (New Expense) 737.7
- EN-2770: Expenses: (New Expense) 737.7
- EN-2780: Expenses: (New Expense) 737.7
- EN-2790: Expenses: (New Expense) 737.7
- EN-2800: Expenses: (New Expense) 737.7
- EN-2570: Expenses: (New Expense) 737.7
- EN-2580: Expenses: (New Expense) 737.7
- EN-2590: Expenses: (New Expense) 737.7
- EN-2600: Expenses: (New Expense) 737.7

| ID | WBS | Activity | Duration | Start | Finish | Predecessors | Complete | Resources | Cost | Actual cost | Bill Code | 釬珛測鎢杸遙 | 02 Phase | 03 Section | 05 Sub-section | 04 Discipline | 06 Zone | 01 Project | 07 Buildings & Ext. Works | 09 Subcontractors | 10 BOQ Cost | 16 BOQ-1 | PRC-MTL |
| --- | --- | --- | --- | --- | --- | --- | --- | --- | --- | --- | --- | --- | --- | --- | --- | --- | --- | --- | --- | --- | --- | --- | --- |
|  | 11 | **Middle Service Support Precast/Cast-in-situ Beam Details** |  | 2021-08-22 | 2022-03-24 |  |  |  |  |  |  |  |  |  |  |  |  |  |  |  |  |  |  |
| EN-2610 |  | Prepare & Submit for Middle Service Support Precast/Cast-in-situ Beam Details | 107d | 2021-08-22 A | 2022-01-17 A | EN-2450 | 100% |  | 737.7 | 737.7 | G8 | EG3640 | ENG | SHOP | TSRPS | INFRA | Gen | QEZ3 | GEN | MEP SUB | Bill-01 | B.1.01 |  |
| EN-2620 |  | Review and Comments from Engineer Middle Service Support Precast/Cast-in-situ Beam Details | 20d | 2022-01-18 A | 2022-02-15 A | EN-2610 | 100% |  | 737.7 | 737.7 | G8 | EG3650 | ENG | SHOP | TSRPS | INFRA | Gen | QEZ3 | GEN | MEP SUB | Bill-01 | B.1.01 |  |
| EN-2630 |  | Incorporate Comments and Resubmit Middle Service Support Precast/Cast-in-situ Beam Details | 3d | 2022-02-16 A | 2022-02-20 A | EN-2620 | 100% |  | 737.7 | 737.7 | G9 | PC1450 | ENG | PROC | GEN | MECH | Gen | QEZ3 | GEN | MEP SUB | Bill-01 | B.1.01 | MAT |
| EN-2640 |  | Review and Approval from Engineer Middle Service Support Precast/Cast-in-situ Beam Details | 24d | 2022-02-21 A | 2022-03-24 A | EN-2630 | 100% |  | 737.7 | 737.7 | G9 | PC1460 | ENG | PROC | GEN | MECH | Gen | QEZ3 | GEN | MEP SUB | Bill-01 | B.1.01 | MAT |
|  | 10 | **Middle Service Support Precast/Cast-in-situ Beam Reinforcement Details** |  | 2021-08-22 | 2022-03-24 |  |  |  |  |  |  |  |  |  |  |  |  |  |  |  |  |  |  |
| EN-2530 |  | Prepare & Submit for Middle Service Support Precast/Cast-in-situ Beam Reinforcement Details | 107d | 2021-08-22 A | 2022-01-17 A | EN-2450 | 100% |  | 737.7 | 737.7 | G8 | EG3640 | ENG | SHOP | TSRPS | INFRA | Gen | QEZ3 | GEN | MEP SUB | Bill-01 | B.1.01 |  |
| EN-2540 |  | Review and Comments from Engineer Middle Service Support Precast/Cast-in-situ Beam Reinforcement Details | 20d | 2022-01-18 A | 2022-02-15 A | EN-2530 | 100% |  | 737.7 | 737.7 | G8 | EG3650 | ENG | SHOP | TSRPS | INFRA | Gen | QEZ3 | GEN | MEP SUB | Bill-01 | B.1.01 |  |
| EN-2550 |  | Incorporate Comments and Resubmit Middle Service Support Precast/Cast-in-situ Beam Reinforcement Details | 3d | 2022-02-16 A | 2022-02-20 A | EN-2540 | 100% |  | 737.7 | 737.7 | G9 | PC1450 | ENG | PROC | GEN | MECH | Gen | QEZ3 | GEN | MEP SUB | Bill-01 | B.1.01 | MAT |
| EN-2560 |  | Review and Approval from Engineer Middle Service Support Precast/Cast-in-situ Beam Reinforcement Details | 24d | 2022-02-21 A | 2022-03-24 A | EN-2550 | 100% |  | 737.7 | 737.7 | G9 | PC1460 | ENG | PROC | GEN | MECH | Gen | QEZ3 | GEN | MEP SUB | Bill-01 | B.1.01 | MAT |
|  | 9 | **Cover Slab Support Precast/Cast-in-situ Beam Details** |  | 2021-09-12 | 2022-03-24 |  |  |  |  |  |  |  |  |  |  |  |  |  |  |  |  |  |  |
| EN-2490 |  | Prepare & Submit for Cover Slab Support Precast/Cast-in-situ Beam Details | 92d | 2021-09-12 A | 2022-01-17 A | EN-2530 | 100% | DESIGN ENGR-STRUCTURAL [90 h] | 737.7 | 737.7 | G8 | EG3640 | ENG | SHOP | TSRPS | INFRA | Gen | QEZ3 | GEN | MEP SUB | Bill-01 | B.1.01 |  |
| EN-2500 |  | Review and Comments from Engineer Cover Slab Support Precast/Cast-in-situ Beam Details | 20d | 2022-01-18 A | 2022-02-15 A | EN-2490 | 100% |  | 737.7 | 737.7 | G8 | EG3650 | ENG | SHOP | TSRPS | INFRA | Gen | QEZ3 | GEN | MEP SUB | Bill-01 | B.1.01 |  |
| EN-2510 |  | Incorporate Comments and Resubmit Cover Slab Support Precast/Cast-in-situ Beam Details | 3d | 2022-02-16 A | 2022-02-20 A | EN-2500 | 100% |  | 737.7 | 737.7 | G9 | PC1450 | ENG | PROC | GEN | MECH | Gen | QEZ3 | GEN | MEP SUB | Bill-01 | B.1.01 | MAT |
| EN-2520 |  | Review and Approval from Engineer Cover Slab Support Precast/Cast-in-situ Beam Details | 25d | 2022-02-20 A | 2022-03-24 A | EN-2510 | 100% |  | 737.7 | 737.7 | G9 | PC1460 | ENG | PROC | GEN | MECH | Gen | QEZ3 | GEN | MEP SUB | Bill-01 | B.1.01 | MAT |
|  | 18 | **Cover Slab Support Precast/Cast-in-situ Beam Reinforcement Details** |  | 2021-09-12 | 2022-03-24 |  |  |  |  |  |  |  |  |  |  |  |  |  |  |  |  |  |  |
| EN-2810 |  | Prepare & Submit for Cover Slab Support Precast/Cast-in-situ Beam Reinforcement Details | 92d | 2021-09-12 A | 2022-01-17 A | EN-2530 | 100% | DESIGN ENGR-STRUCTURAL [90 h] | 737.7 | 737.7 | G8 | EG3640 | ENG | SHOP | TSRPS | INFRA | Gen | QEZ3 | GEN | MEP SUB | Bill-01 | B.1.01 |  |
| EN-2820 |  | Review and Comments from Engineer Cover Slab Support Precast/Cast-in-situ Beam Reinforcement Details | 20d | 2022-01-18 A | 2022-02-15 A | EN-2810 | 100% |  | 737.7 | 737.7 | G8 | EG3650 | ENG | SHOP | TSRPS | INFRA | Gen | QEZ3 | GEN | MEP SUB | Bill-01 | B.1.01 |  |
| EN-2830 |  | Incorporate Comments and Resubmit Cover Slab Support Precast/Cast-in-situ Beam Reinforcement Details | 3d | 2022-02-16 A | 2022-02-20 A | EN-2820 | 100% |  | 737.7 | 737.7 | G9 | PC1450 | ENG | PROC | GEN | MECH | Gen | QEZ3 | GEN | MEP SUB | Bill-01 | B.1.01 | MAT |
| EN-2840 |  | Review and Approval from Engineer Cover Slab Support Precast/Cast-in-situ Beam Reinforcement Details | 24d | 2022-02-21 A | 2022-03-24 A | EN-2830 | 100% |  | 737.7 | 737.7 | G9 | PC1460 | ENG | PROC | GEN | MECH | Gen | QEZ3 | GEN | MEP SUB | Bill-01 | B.1.01 | MAT |
|  | 17 | **Precast/Cast-in-situ Cover Slab Details** |  | 2021-09-12 | 2022-03-24 |  |  |  |  |  |  |  |  |  |  |  |  |  |  |  |  |  |  |
| EN-2850 |  | Prepare & Submit for Precast/Cast-in-situ Cover Slab Details | 92d | 2021-09-12 A | 2022-01-17 A | EN-2530 | 100% | DESIGN ENGR-STRUCTURAL [90 h] | 737.7 | 737.7 | G8 | EG3640 | ENG | SHOP | TSRPS | INFRA | Gen | QEZ3 | GEN | MEP SUB | Bill-01 | B.1.01 |  |
| EN-2860 |  | Review and Comments from Engineer Precast/Cast-in-situ Cover Slab Details | 20d | 2022-01-18 A | 2022-02-15 A | EN-2850 | 100% |  | 737.7 | 737.7 | G8 | EG3650 | ENG | SHOP | TSRPS | INFRA | Gen | QEZ3 | GEN | MEP SUB | Bill-01 | B.1.01 |  |
| EN-2870 |  | Incorporate Comments and Resubmit Precast/Cast-in-situ Cover Slab Details | 3d | 2022-02-16 A | 2022-02-20 A | EN-2860 | 100% |  | 737.7 | 737.7 | G9 | PC1450 | ENG | PROC | GEN | MECH | Gen | QEZ3 | GEN | MEP SUB | Bill-01 | B.1.01 | MAT |
| EN-2880 |  | Review and Approval from Engineer Precast/Cast-in-situ Cover Slab Details | 25d | 2022-02-20 A | 2022-03-24 A | EN-2870 | 100% |  | 737.7 | 737.7 | G9 | PC1460 | ENG | PROC | GEN | MECH | Gen | QEZ3 | GEN | MEP SUB | Bill-01 | B.1.01 | MAT |

Notes:
- EN-2610: Expenses: (New Expense) 737.7
- EN-2620: Expenses: (New Expense) 737.7
- EN-2630: Expenses: (New Expense) 737.7
- EN-2640: Expenses: (New Expense) 737.7
- EN-2530: Expenses: (New Expense) 737.7
- EN-2540: Expenses: (New Expense) 737.7
- EN-2550: Expenses: (New Expense) 737.7
- EN-2560: Expenses: (New Expense) 737.7
- EN-2490: Expenses: (New Expense) 737.7
- EN-2500: Expenses: (New Expense) 737.7
- EN-2510: Expenses: (New Expense) 737.7
- EN-2520: Expenses: (New Expense) 737.7
- EN-2810: Expenses: (New Expense) 737.7
- EN-2820: Expenses: (New Expense) 737.7
- EN-2830: Expenses: (New Expense) 737.7
- EN-2840: Expenses: (New Expense) 737.7
- EN-2850: Expenses: (New Expense) 737.7
- EN-2860: Expenses: (New Expense) 737.7
- EN-2870: Expenses: (New Expense) 737.7
- EN-2880: Expenses: (New Expense) 737.7

| ID | WBS | Activity | Duration | Start | Finish | Predecessors | Complete | Resources | Cost | Actual cost | Bill Code | 釬珛測鎢杸遙 | 02 Phase | 03 Section | 05 Sub-section | 04 Discipline | 06 Zone | 01 Project | 07 Buildings & Ext. Works | 09 Subcontractors | 10 BOQ Cost | 16 BOQ-1 | PRC-MTL |
| --- | --- | --- | --- | --- | --- | --- | --- | --- | --- | --- | --- | --- | --- | --- | --- | --- | --- | --- | --- | --- | --- | --- | --- |
|  | 20 | **Typical Precast/Cast-in-situ Ring Details** |  | 2021-09-12 | 2022-03-24 |  |  |  |  |  |  |  |  |  |  |  |  |  |  |  |  |  |  |
| EN-2930 |  | Prepare & Submit for Typical Precast/Cast-in-situ Ring Details | 109d | 2021-09-12 A | 2022-02-10 A | EN-2530 | 100% | DESIGN ENGR-STRUCTURAL [90 h] | 737.7 | 737.7 | G8 | EG3640 | ENG | SHOP | TSRPS | INFRA | Gen | QEZ3 | GEN | MEP SUB | Bill-01 | B.1.01 |  |
| EN-2940 |  | Review and Comments from Engineer Typical Precast/Cast-in-situ Ring Details | 20d | 2022-01-18 A | 2022-02-15 A | EN-2930 | 100% |  | 737.7 | 737.7 | G8 | EG3650 | ENG | SHOP | TSRPS | INFRA | Gen | QEZ3 | GEN | MEP SUB | Bill-01 | B.1.01 |  |
| EN-2950 |  | Incorporate Comments and Resubmit Typical Precast/Cast-in-situ Ring Details | 4d | 2022-02-15 A | 2022-02-20 A | EN-2940 | 100% |  | 737.7 | 737.7 | G9 | PC1450 | ENG | PROC | GEN | MECH | Gen | QEZ3 | GEN | MEP SUB | Bill-01 | B.1.01 | MAT |
| EN-2960 |  | Review and Approval from Engineer Typical Precast/Cast-in-situ Ring Details | 24d | 2022-02-21 A | 2022-03-24 A | EN-2950 | 100% |  | 737.7 | 737.7 | G9 | PC1460 | ENG | PROC | GEN | MECH | Gen | QEZ3 | GEN | MEP SUB | Bill-01 | B.1.01 | MAT |
|  | 19 | **Typical Precast/Cast-in-situ Ring Reinforcement Details** |  | 2021-09-12 | 2022-03-24 |  |  |  |  |  |  |  |  |  |  |  |  |  |  |  |  |  |  |
| EN-2890 |  | Prepare & Submit for Typical Precast/Cast-in-situ Ring Reinforcement Details | 92d | 2021-09-12 A | 2022-01-17 A | EN-2530 | 100% |  | 737.7 | 737.7 | G8 | EG3640 | ENG | SHOP | TSRPS | INFRA | Gen | QEZ3 | GEN | MEP SUB | Bill-01 | B.1.01 |  |
| EN-2900 |  | Review and Comments from Engineer Typical Precast/Cast-in-situ Ring Reinforcement Details | 20d | 2022-01-18 A | 2022-02-15 A | EN-2890 | 100% |  | 737.7 | 737.7 | G8 | EG3650 | ENG | SHOP | TSRPS | INFRA | Gen | QEZ3 | GEN | MEP SUB | Bill-01 | B.1.01 |  |
| EN-2910 |  | Incorporate Comments and Resubmit Typical Precast/Cast-in-situ Ring Reinforcement Details | 3d | 2022-02-16 A | 2022-02-20 A | EN-2900 | 100% |  | 737.7 | 737.7 | G9 | PC1450 | ENG | PROC | GEN | MECH | Gen | QEZ3 | GEN | MEP SUB | Bill-01 | B.1.01 | MAT |
| EN-2920 |  | Review and Approval from Engineer Typical Precast/Cast-in-situ Ring Reinforcement Details | 24d | 2022-02-21 A | 2022-03-24 A | EN-2910 | 100% |  | 737.7 | 737.7 | G9 | PC1460 | ENG | PROC | GEN | MECH | Gen | QEZ3 | GEN | MEP SUB | Bill-01 | B.1.01 | MAT |
|  | 15 | **Civil Outline for Portable Water Tank & Pumps** |  | 2021-12-14 | 2022-03-24 |  |  |  |  |  |  |  |  |  |  |  |  |  |  |  |  |  |  |
| EN-2690 |  | Prepare & Submit for Civil Outline for TSE Water Tank & Pumps | 36d | 2021-12-14 A | 2022-02-01 A | EN-2890 | 100% | DESIGN ENGR-STRUCTURAL [90 h] | 737.7 | 737.7 | G8 | EG3640 | ENG | SHOP | TSRPS | INFRA | Gen | QEZ3 | GEN | MEP SUB | Bill-01 | B.1.01 |  |
| EN-2700 |  | Review and Comments from Engineer Civil Outline for TSE Water Tank & Pumps | 10d | 2022-02-01 A | 2022-02-15 A | EN-2690 | 100% |  | 737.7 | 737.7 | G8 | EG3650 | ENG | SHOP | TSRPS | INFRA | Gen | QEZ3 | GEN | MEP SUB | Bill-01 | B.1.01 |  |
| EN-2710 |  | Incorporate Comments and Resubmit Civil Outline for TSE Water Tank & Pumps | 3d | 2022-02-16 A | 2022-02-20 A | EN-2700 | 100% |  | 737.7 | 737.7 | G9 | PC1450 | ENG | PROC | GEN | MECH | Gen | QEZ3 | GEN | MEP SUB | Bill-01 | B.1.01 | MAT |
| EN-2720 |  | Review and Approval from Engineer Civil Outline for TSE Water Tank & Pumps | 25d | 2022-02-20 A | 2022-03-24 A | EN-2710 | 100% |  | 737.7 | 737.7 | G9 | PC1460 | ENG | PROC | GEN | MECH | Gen | QEZ3 | GEN | MEP SUB | Bill-01 | B.1.01 | MAT |
|  | 14 | **Civil Outline for Kahramaa Water Tank & Pumps** |  | 2021-12-14 | 2022-02-24 |  |  |  |  |  |  |  |  |  |  |  |  |  |  |  |  |  |  |
| EN-2730 |  | Prepare & Submit for Civil Outline for Kahramaa Water Tank & Pumps | 42d | 2021-12-14 A | 2022-02-10 A | EN-2890 | 100% | DESIGN ENGR-STRUCTURAL [90 h] | 737.7 | 737.7 | G8 | EG3640 | ENG | SHOP | TSRPS | INFRA | Gen | QEZ3 | GEN | MEP SUB | Bill-01 | B.1.01 |  |
| EN-2740 |  | Review and Comments from Engineer Civil Outline for Kahramaa Water Tank & Pumps | 3d | 2022-02-13 A | 2022-02-15 A | EN-2730 | 100% |  | 737.7 | 737.7 | G8 | EG3650 | ENG | SHOP | TSRPS | INFRA | Gen | QEZ3 | GEN | MEP SUB | Bill-01 | B.1.01 |  |
| EN-2750 |  | Incorporate Comments and Resubmit Civil Outline for Kahramaa Water Tank & Pumps | 3d | 2022-02-16 A | 2022-02-20 A | EN-2740 | 100% |  | 737.7 | 737.7 | G9 | PC1450 | ENG | PROC | GEN | MECH | Gen | QEZ3 | GEN | MEP SUB | Bill-01 | B.1.01 | MAT |
| EN-2760 |  | Review and Approval from Engineer Civil Outline for Kahramaa Water Tank & Pumps | 4d | 2022-02-21 A | 2022-02-24 A | EN-2750 | 100% |  | 737.7 | 737.7 | G9 | PC1460 | ENG | PROC | GEN | MECH | Gen | QEZ3 | GEN | MEP SUB | Bill-01 | B.1.01 | MAT |
|  | 21 | **Civil Outline for Deep Shaft Lift Pumping Station** |  | 2021-12-14 | 2022-03-24 |  |  |  |  |  |  |  |  |  |  |  |  |  |  |  |  |  |  |
| EN-2970 |  | Prepare & Submit for Civil Outline for Deep Shaft Lift Pumping Station | 36d | 2021-12-14 A | 2022-02-01 A | EN-2890 | 100% | DESIGN ENGR-STRUCTURAL [90 h] | 737.7 | 737.7 | G8 | EG3640 | ENG | SHOP | TSRPS | INFRA | Gen | QEZ3 | GEN | MEP SUB | Bill-01 | B.1.01 |  |
| EN-2980 |  | Review and Comments from Engineer Civil Outline for Deep Shaft Lift Pumping Station | 10d | 2022-02-01 A | 2022-02-15 A | EN-2970 | 100% |  | 737.7 | 737.7 | G8 | EG3650 | ENG | SHOP | TSRPS | INFRA | Gen | QEZ3 | GEN | MEP SUB | Bill-01 | B.1.01 |  |
| EN-2990 |  | Incorporate Comments and Resubmit Civil Outline for Deep Shaft Lift Pumping Station | 3d | 2022-02-16 A | 2022-02-20 A | EN-2980 | 100% |  | 737.7 | 737.7 | G9 | PC1450 | ENG | PROC | GEN | MECH | Gen | QEZ3 | GEN | MEP SUB | Bill-01 | B.1.01 | MAT |
| EN-3000 |  | Review and Approval from Engineer Civil Outline for Deep Shaft Lift Pumping Station | 24d | 2022-02-21 A | 2022-03-24 A | EN-2990 | 100% |  | 737.7 | 737.7 | G9 | PC1460 | ENG | PROC | GEN | MECH | Gen | QEZ3 | GEN | MEP SUB | Bill-01 | B.1.01 | MAT |

Notes:
- EN-2930: Expenses: (New Expense) 737.7
- EN-2940: Expenses: (New Expense) 737.7
- EN-2950: Expenses: (New Expense) 737.7
- EN-2960: Expenses: (New Expense) 737.7
- EN-2890: Expenses: (New Expense) 737.7
- EN-2900: Expenses: (New Expense) 737.7
- EN-2910: Expenses: (New Expense) 737.7
- EN-2920: Expenses: (New Expense) 737.7
- EN-2690: Expenses: (New Expense) 737.7
- EN-2700: Expenses: (New Expense) 737.7
- EN-2710: Expenses: (New Expense) 737.7
- EN-2720: Expenses: (New Expense) 737.7
- EN-2730: Expenses: (New Expense) 737.7
- EN-2740: Expenses: (New Expense) 737.7
- EN-2750: Expenses: (New Expense) 737.7
- EN-2760: Expenses: (New Expense) 737.7
- EN-2970: Expenses: (New Expense) 737.7
- EN-2980: Expenses: (New Expense) 737.7
- EN-2990: Expenses: (New Expense) 737.7
- EN-3000: Expenses: (New Expense) 737.7

| ID | WBS | Activity | Duration | Start | Finish | Predecessors | Complete | Resources | Cost | Actual cost | Bill Code | 釬珛測鎢杸遙 | 02 Phase | 03 Section | 05 Sub-section | 04 Discipline | 06 Zone | 01 Project | 07 Buildings & Ext. Works | 09 Subcontractors | 10 BOQ Cost | 16 BOQ-1 | PRC-MTL |
| --- | --- | --- | --- | --- | --- | --- | --- | --- | --- | --- | --- | --- | --- | --- | --- | --- | --- | --- | --- | --- | --- | --- | --- |
|  | 22 | **Road and Hardscape details** |  | 2021-08-22 | 2022-04-03 |  |  |  |  |  |  |  |  |  |  |  |  |  |  |  |  |  |  |
| EN-3010 |  | Prepare & Submit for Road and Hard scape | 118d | 2021-08-22 A | 2022-02-01 A | EN-2170 | 100% | DESIGN ENGR-STRUCTURAL [90 h] | 737.7 | 737.7 | G8 | EG3640 | ENG | SHOP | TSRPS | INFRA | Gen | QEZ3 | GEN | MEP SUB | Bill-01 | B.1.01 |  |
| EN-3020 |  | Review and Comments from Engineer Road and Hard scape | 33d | 2022-02-01 A | 2022-03-20 A | EN-3010 | 100% |  | 737.7 | 737.7 | G8 | EG3650 | ENG | SHOP | TSRPS | INFRA | Gen | QEZ3 | GEN | MEP SUB | Bill-01 | B.1.01 |  |
| EN-3030 |  | Incorporate Comments and Resubmit Road and Hard scape | 4d | 2022-03-20 A | 2022-03-23 A | EN-3020 | 100% |  | 737.7 | 737.7 | G9 | PC1450 | ENG | PROC | GEN | MECH | Gen | QEZ3 | GEN | MEP SUB | Bill-01 | B.1.01 | MAT |
| EN-3040 |  | Review and Approval from Engineer Road and Hard scape | 8d | 2022-03-23 A | 2022-04-03 A | EN-3030 | 100% |  | 737.7 | 737.7 | G9 | PC1460 | ENG | PROC | GEN | MECH | Gen | QEZ3 | GEN | MEP SUB | Bill-01 | B.1.01 | MAT |
|  | 5 | **Mechanical Works Shop Drawing** |  | 2021-08-22 | 2022-06-23 |  |  |  |  |  |  |  |  |  |  |  |  |  |  |  |  |  |  |
|  | 13 | **Intermediate Level Plan At Section 2 And Section B-B** |  | 2021-08-22 | 2022-01-23 |  |  |  |  |  |  |  |  |  |  |  |  |  |  |  |  |  |  |
| EN-3500 |  | Prepare & Submit for Mechanical Shop Drawing for Deep Shaft Lift Pumping Station | 10d | 2021-08-22 A | 2021-09-02 A | EN-1400 | 100% | DESIGN ENGR-MECHANICAL [90 h]; DRAFTSMAN [90 h] | 737.7 | 737.7 | G8 | EG3640 | ENG | SHOP | TSRPS | INFRA | Gen | QEZ3 | GEN | MEP SUB | Bill-01 | B.1.01 |  |
| EN-3510 |  | Review and Comments from Engineer Mechanical Shop Drawing for Deep Shaft Lift Pumping Station | 6d | 2021-09-05 A | 2021-09-12 A | EN-3500 | 100% |  | 737.7 | 737.7 | G8 | EG3650 | ENG | SHOP | TSRPS | INFRA | Gen | QEZ3 | GEN | MEP SUB | Bill-01 | B.1.01 |  |
| EN-3520 |  | Incorporate Comments and Resubmit Mechanical Shop Drawing for Deep Shaft Lift Pumping Station | 63d | 2021-09-13 A | 2021-12-08 A | EN-3510 | 100% |  | 737.7 | 737.7 | G9 | PC1450 | ENG | PROC | GEN | MECH | Gen | QEZ3 | GEN | MEP SUB | Bill-01 | B.1.01 | MAT |
| EN-3530 |  | Review and Approval from Engineer Mechanical Shop Drawing for Deep Shaft Lift Pumping Station | 32d | 2021-12-09 A | 2022-01-23 A | EN-3520 | 100% |  | 737.7 | 737.7 | G9 | PC1460 | ENG | PROC | GEN | MECH | Gen | QEZ3 | GEN | MEP SUB | Bill-01 | B.1.01 | MAT |
|  | 12 | **Sectional Details A-A** |  | 2021-08-22 | 2021-12-16 |  |  |  |  |  |  |  |  |  |  |  |  |  |  |  |  |  |  |
| EN-3460 |  | Prepare & Submit for Mechanical Shop Drawing for Deep Shaft Lift Pumping Station | 10d | 2021-08-22 A | 2021-09-02 A | EN-1400 | 100% | DESIGN ENGR-MECHANICAL [90 h]; DRAFTSMAN [90 h] | 737.7 | 737.7 | G8 | EG3640 | ENG | SHOP | TSRPS | INFRA | Gen | QEZ3 | GEN | MEP SUB | Bill-01 | B.1.01 |  |
| EN-3470 |  | Review and Comments from Engineer Mechanical Shop Drawing for Deep Shaft Lift Pumping Station | 6d | 2021-09-05 A | 2021-09-12 A | EN-3460 | 100% |  | 737.7 | 737.7 | G8 | EG3650 | ENG | SHOP | TSRPS | INFRA | Gen | QEZ3 | GEN | MEP SUB | Bill-01 | B.1.01 |  |
| EN-3480 |  | Incorporate Comments and Resubmit Mechanical Shop Drawing for Deep Shaft Lift Pumping Station | 60d | 2021-09-13 A | 2021-12-05 A | EN-3470 | 100% |  | 737.7 | 737.7 | G9 | PC1450 | ENG | PROC | GEN | MECH | Gen | QEZ3 | GEN | MEP SUB | Bill-01 | B.1.01 | MAT |
| EN-3490 |  | Review and Approval from Engineer Mechanical Shop Drawing for Deep Shaft Lift Pumping Station | 9d | 2021-12-06 A | 2021-12-16 A | EN-3480 | 100% |  | 737.7 | 737.7 | G9 | PC1460 | ENG | PROC | GEN | MECH | Gen | QEZ3 | GEN | MEP SUB | Bill-01 | B.1.01 | MAT |
|  | 11 | **Bottom Floor Plan At Section 1** |  | 2021-08-22 | 2021-12-20 |  |  |  |  |  |  |  |  |  |  |  |  |  |  |  |  |  |  |
| EN-3420 |  | Prepare & Submit for Mechanical Shop Drawing for Deep Shaft Lift Pumping Station | 10d | 2021-08-22 A | 2021-09-02 A | EN-1400 | 100% | DESIGN ENGR-MECHANICAL [90 h]; DRAFTSMAN [90 h] | 737.7 | 737.7 | G8 | EG3640 | ENG | SHOP | TSRPS | INFRA | Gen | QEZ3 | GEN | MEP SUB | Bill-01 | B.1.01 |  |
| EN-3430 |  | Review and Comments from Engineer Mechanical Shop Drawing for Deep Shaft Lift Pumping Station | 5d | 2021-09-05 A | 2021-09-09 A | EN-3420 | 100% |  | 737.7 | 737.7 | G8 | EG3650 | ENG | SHOP | TSRPS | INFRA | Gen | QEZ3 | GEN | MEP SUB | Bill-01 | B.1.01 |  |
| EN-3440 |  | Incorporate Comments and Resubmit Mechanical Shop Drawing for Deep Shaft Lift Pumping Station | 65d | 2021-09-12 A | 2021-12-09 A | EN-3430 | 100% |  | 737.7 | 737.7 | G9 | PC1450 | ENG | PROC | GEN | MECH | Gen | QEZ3 | GEN | MEP SUB | Bill-01 | B.1.01 | MAT |
| EN-3450 |  | Review and Approval from Engineer Mechanical Shop Drawing for Deep Shaft Lift Pumping Station | 7d | 2021-12-12 A | 2021-12-20 A | EN-3440 | 100% |  | 737.7 | 737.7 | G9 | PC1460 | ENG | PROC | GEN | MECH | Gen | QEZ3 | GEN | MEP SUB | Bill-01 | B.1.01 | MAT |
|  | 10 | **Roof Level Plan At Section 3** |  | 2021-08-22 | 2021-12-20 |  |  |  |  |  |  |  |  |  |  |  |  |  |  |  |  |  |  |
| EN-3380 |  | Prepare & Submit for Mechanical Shop Drawing for Deep Shaft Lift Pumping Station | 10d | 2021-08-22 A | 2021-09-02 A | EN-1400 | 100% | DESIGN ENGR-MECHANICAL [90 h]; DRAFTSMAN [90 h] | 737.7 | 737.7 | G8 | EG3640 | ENG | SHOP | TSRPS | INFRA | Gen | QEZ3 | GEN | MEP SUB | Bill-01 | B.1.01 |  |
| EN-3390 |  | Review and Comments from Engineer Mechanical Shop Drawing for Deep Shaft Lift Pumping Station | 6d | 2021-09-05 A | 2021-09-12 A | EN-3380 | 100% |  | 737.7 | 737.7 | G8 | EG3650 | ENG | SHOP | TSRPS | INFRA | Gen | QEZ3 | GEN | MEP SUB | Bill-01 | B.1.01 |  |
| EN-3400 |  | Incorporate Comments and Resubmit Mechanical Shop Drawing for Deep Shaft Lift Pumping Station | 64d | 2021-09-13 A | 2021-12-09 A | EN-3390 | 100% |  | 737.7 | 737.7 | G9 | PC1450 | ENG | PROC | GEN | MECH | Gen | QEZ3 | GEN | MEP SUB | Bill-01 | B.1.01 | MAT |
| EN-3410 |  | Review and Approval from Engineer Mechanical Shop Drawing for Deep Shaft Lift Pumping Station | 7d | 2021-12-12 A | 2021-12-20 A | EN-3400 | 100% |  | 737.7 | 737.7 | G9 | PC1460 | ENG | PROC | GEN | MECH | Gen | QEZ3 | GEN | MEP SUB | Bill-01 | B.1.01 | MAT |

Notes:
- EN-3010: Expenses: (New Expense) 737.7
- EN-3020: Expenses: (New Expense) 737.7
- EN-3030: Expenses: (New Expense) 737.7
- EN-3040: Expenses: (New Expense) 737.7
- EN-3500: Expenses: (New Expense) 737.7
- EN-3510: Expenses: (New Expense) 737.7
- EN-3520: Expenses: (New Expense) 737.7
- EN-3530: Expenses: (New Expense) 737.7
- EN-3460: Expenses: (New Expense) 737.7
- EN-3470: Expenses: (New Expense) 737.7
- EN-3480: Expenses: (New Expense) 737.7
- EN-3490: Expenses: (New Expense) 737.7
- EN-3420: Expenses: (New Expense) 737.7
- EN-3430: Expenses: (New Expense) 737.7
- EN-3440: Expenses: (New Expense) 737.7
- EN-3450: Expenses: (New Expense) 737.7
- EN-3380: Expenses: (New Expense) 737.7
- EN-3390: Expenses: (New Expense) 737.7
- EN-3400: Expenses: (New Expense) 737.7
- EN-3410: Expenses: (New Expense) 737.7

| ID | WBS | Activity | Duration | Start | Finish | Predecessors | Complete | Total float | Free float | Resources | Cost | Actual cost | Bill Code | 釬珛測鎢杸遙 | 02 Phase | 03 Section | 05 Sub-section | 04 Discipline | 06 Zone | 01 Project | 07 Buildings & Ext. Works | 09 Subcontractors | 10 BOQ Cost | 16 BOQ-1 | PRC-MTL |
| --- | --- | --- | --- | --- | --- | --- | --- | --- | --- | --- | --- | --- | --- | --- | --- | --- | --- | --- | --- | --- | --- | --- | --- | --- | --- |
|  | 9 | **Flow Meter Chamber Mechanical Works Details** |  | 2021-08-22 | 2022-01-19 |  |  |  |  |  |  |  |  |  |  |  |  |  |  |  |  |  |  |  |  |
| EN-3340 |  | Prepare & Submit for Mechanical Shop Drawing for Deep Shaft Lift Pumping Station | 10d | 2021-08-22 A | 2021-09-02 A | EN-1400 | 100% |  |  | DESIGN ENGR-MECHANICAL [90 h]; DRAFTSMAN [90 h] | 737.7 | 737.7 | G8 | EG3640 | ENG | SHOP | TSRPS | INFRA | Gen | QEZ3 | GEN | MEP SUB | Bill-01 | B.1.01 |  |
| EN-3350 |  | Review and Comments from Engineer Mechanical Shop Drawing for Deep Shaft Lift Pumping Station | 5d | 2021-09-05 A | 2021-09-09 A | EN-3340 | 100% |  |  |  | 737.7 | 737.7 | G8 | EG3650 | ENG | SHOP | TSRPS | INFRA | Gen | QEZ3 | GEN | MEP SUB | Bill-01 | B.1.01 |  |
| EN-3360 |  | Incorporate Comments and Resubmit Mechanical Shop Drawing for Deep Shaft Lift Pumping Station | 92d | 2021-09-12 A | 2022-01-17 A | EN-3350 | 100% |  |  |  | 737.7 | 737.7 | G9 | PC1450 | ENG | PROC | GEN | MECH | Gen | QEZ3 | GEN | MEP SUB | Bill-01 | B.1.01 | MAT |
| EN-3370 |  | Review and Approval from Engineer Mechanical Shop Drawing for Deep Shaft Lift Pumping Station | 3d | 2022-01-17 A | 2022-01-19 A | EN-3360 | 100% |  |  |  | 737.7 | 737.7 | G9 | PC1460 | ENG | PROC | GEN | MECH | Gen | QEZ3 | GEN | MEP SUB | Bill-01 | B.1.01 | MAT |
|  | 8 | **Discharge Chamber Mechanical Works Details** |  | 2021-08-22 | 2021-12-09 |  |  |  |  |  |  |  |  |  |  |  |  |  |  |  |  |  |  |  |  |
| EN-3300 |  | Prepare & Submit for Mechanical Shop Drawing for Deep Shaft Lift Pumping Station | 10d | 2021-08-22 A | 2021-09-02 A | EN-1400 | 100% |  |  | DESIGN ENGR-MECHANICAL [90 h]; DRAFTSMAN [90 h] | 737.7 | 737.7 | G8 | EG3640 | ENG | SHOP | TSRPS | INFRA | Gen | QEZ3 | GEN | MEP SUB | Bill-01 | B.1.01 |  |
| EN-3310 |  | Review and Comments from Engineer Mechanical Shop Drawing for Deep Shaft Lift Pumping Station | 5d | 2021-09-05 A | 2021-09-09 A | EN-3300 | 100% |  |  |  | 737.7 | 737.7 | G8 | EG3650 | ENG | SHOP | TSRPS | INFRA | Gen | QEZ3 | GEN | MEP SUB | Bill-01 | B.1.01 |  |
| EN-3320 |  | Incorporate Comments and Resubmit Mechanical Shop Drawing for Deep Shaft Lift Pumping Station | 60d | 2021-09-12 A | 2021-12-02 A | EN-3310 | 100% |  |  |  | 737.7 | 737.7 | G9 | PC1450 | ENG | PROC | GEN | MECH | Gen | QEZ3 | GEN | MEP SUB | Bill-01 | B.1.01 | MAT |
| EN-3330 |  | Review and Approval from Engineer Mechanical Shop Drawing for Deep Shaft Lift Pumping Station | 5d | 2021-12-05 A | 2021-12-09 A | EN-3320 | 100% |  |  |  | 737.7 | 737.7 | G9 | PC1460 | ENG | PROC | GEN | MECH | Gen | QEZ3 | GEN | MEP SUB | Bill-01 | B.1.01 | MAT |
|  | 7 | **Sump Design And Benching** |  | 2021-08-22 | 2022-04-19 |  |  |  |  |  |  |  |  |  |  |  |  |  |  |  |  |  |  |  |  |
| EN-3260 |  | Prepare & Submit for Mechanical Shop Drawing for Deep Shaft Lift Pumping Station | 93d | 2021-08-22 A | 2021-12-28 A | EN-1400 | 100% |  |  | DESIGN ENGR-MECHANICAL [90 h]; DRAFTSMAN [90 h] | 737.7 | 737.7 | G8 | EG3640 | ENG | SHOP | TSRPS | INFRA | Gen | QEZ3 | GEN | MEP SUB | Bill-01 | B.1.01 |  |
| EN-3270 |  | Review and Comments from Engineer Mechanical Shop Drawing for Deep Shaft Lift Pumping Station | 2d | 2021-12-29 A | 2021-12-30 A | EN-3260 | 100% |  |  |  | 737.7 | 737.7 | G8 | EG3650 | ENG | SHOP | TSRPS | INFRA | Gen | QEZ3 | GEN | MEP SUB | Bill-01 | B.1.01 |  |
| EN-3280 |  | Incorporate Comments and Resubmit Mechanical Shop Drawing for Deep Shaft Lift Pumping Station | 57d | 2022-01-02 A | 2022-03-22 A | EN-3270 | 100% |  |  |  | 737.71 | 737.71 | G9 | PC1450 | ENG | PROC | GEN | MECH | Gen | QEZ3 | GEN | MEP SUB | Bill-01 | B.1.01 | MAT |
| EN-3290 |  | Review and Approval from Engineer Mechanical Shop Drawing for Deep Shaft Lift Pumping Station | 20d | 2022-03-22 A | 2022-04-18 A | EN-3280 | 100% |  |  |  | 29.51 | 29.51 | G9 | PC1460 | ENG | PROC | GEN | MECH | Gen | QEZ3 | GEN | MEP SUB | Bill-01 | B.1.01 | MAT |
| EN-3290R |  | Review and Approval from Engineer Mechanical Shop Drawing for Deep Shaft Lift Pumping Station | 1d | 2022-04-19 | 2022-04-19 | EN-3280, EN-3290 |  | 190d | 189d |  | 708.19 |  | G9 | PC1460 | ENG | PROC | GEN | MECH | Gen | QEZ3 | GEN | MEP SUB | Bill-01 | B.1.01 | MAT |
|  | 6 | **Odour Control Arrangement Plan And Details** |  | 2021-08-22 | 2022-04-26 |  |  |  |  |  |  |  |  |  |  |  |  |  |  |  |  |  |  |  |  |
| EN-3220 |  | Prepare & Submit for Mechanical Shop Drawing for Deep Shaft Lift Pumping Station | 80d | 2021-08-22 A | 2021-12-09 A | EN-1400 | 100% |  |  | DESIGN ENGR-MECHANICAL [90 h]; DRAFTSMAN [90 h] | 737.7 | 737.7 | G8 | EG3640 | ENG | SHOP | TSRPS | INFRA | Gen | QEZ3 | GEN | MEP SUB | Bill-01 | B.1.01 |  |
| EN-3230 |  | Review and Comments from Engineer Mechanical Shop Drawing for Deep Shaft Lift Pumping Station | 20d | 2021-12-12 A | 2022-01-06 A | EN-3220 | 100% |  |  |  | 737.71 | 737.71 | G8 | EG3650 | ENG | SHOP | TSRPS | INFRA | Gen | QEZ3 | GEN | MEP SUB | Bill-01 | B.1.01 |  |
| EN-3240 |  | Incorporate Comments and Resubmit Mechanical Shop Drawing for Deep Shaft Lift Pumping Station | 91d | 2021-12-12 A | 2022-04-18 A | EN-3230 | 100% |  |  |  | 29.51 | 29.51 | G9 | PC1450 | ENG | PROC | GEN | MECH | Gen | QEZ3 | GEN | MEP SUB | Bill-01 | B.1.01 | MAT |
| EN-3240R |  | Incorporate Comments and Resubmit Mechanical Shop Drawing for Deep Shaft Lift Pumping Station | 1d | 2022-04-19 | 2022-04-19 | EN-3230, EN-3240 |  | 181d | 0d |  | 708.19 |  | G9 | PC1450 | ENG | PROC | GEN | MECH | Gen | QEZ3 | GEN | MEP SUB | Bill-01 | B.1.01 | MAT |
| EN-3250 |  | Review and Approval from Engineer Mechanical Shop Drawing for Deep Shaft Lift Pumping Station | 5d | 2022-04-20 | 2022-04-26 | EN-3240, EN-3240R |  | 181d | 180d |  | 737.7 |  | G9 | PC1460 | ENG | PROC | GEN | MECH | Gen | QEZ3 | GEN | MEP SUB | Bill-01 | B.1.01 | MAT |
|  | 5 | **Site Foul Sewer Network** |  | 2021-08-22 | 2022-03-03 |  |  |  |  |  |  |  |  |  |  |  |  |  |  |  |  |  |  |  |  |
| EN-3180 |  | Prepare & Submit for Mechanical Shop Drawing for Deep Shaft Lift Pumping Station | 118d | 2021-08-22 A | 2022-02-01 A | EN-1400 | 100% |  |  | DESIGN ENGR-MECHANICAL [90 h]; DRAFTSMAN [90 h] | 737.7 | 737.7 | G8 | EG3640 | ENG | SHOP | TSRPS | INFRA | Gen | QEZ3 | GEN | MEP SUB | Bill-01 | B.1.01 |  |
| EN-3190 |  | Review and Comments from Engineer Mechanical Shop Drawing for Deep Shaft Lift Pumping Station | 10d | 2022-02-01 A | 2022-02-15 A | EN-3180 | 100% |  |  |  | 737.7 | 737.7 | G8 | EG3650 | ENG | SHOP | TSRPS | INFRA | Gen | QEZ3 | GEN | MEP SUB | Bill-01 | B.1.01 |  |
| EN-3200 |  | Incorporate Comments and Resubmit Mechanical Shop Drawing for Deep Shaft Lift Pumping Station | 7d | 2022-02-16 A | 2022-02-24 A | EN-3190 | 100% |  |  |  | 737.7 | 737.7 | G9 | PC1450 | ENG | PROC | GEN | MECH | Gen | QEZ3 | GEN | MEP SUB | Bill-01 | B.1.01 | MAT |
| EN-3210 |  | Review and Approval from Engineer Mechanical Shop Drawing for Deep Shaft Lift Pumping Station | 5d | 2022-02-27 A | 2022-03-03 A | EN-3200 | 100% |  |  |  | 737.7 | 737.7 | G9 | PC1460 | ENG | PROC | GEN | MECH | Gen | QEZ3 | GEN | MEP SUB | Bill-01 | B.1.01 | MAT |

Notes:
- EN-3340: Expenses: (New Expense) 737.7
- EN-3350: Expenses: (New Expense) 737.7
- EN-3360: Expenses: (New Expense) 737.7
- EN-3370: Expenses: (New Expense) 737.7
- EN-3300: Expenses: (New Expense) 737.7
- EN-3310: Expenses: (New Expense) 737.7
- EN-3320: Expenses: (New Expense) 737.7
- EN-3330: Expenses: (New Expense) 737.7
- EN-3260: Expenses: (New Expense) 737.7
- EN-3270: Expenses: (New Expense) 737.7
- EN-3280: Expenses: (New Expense) 737.71
- EN-3290: Expenses: (New Expense) 29.51
- EN-3290R: Expenses: (New Expense) 708.19
- EN-3220: Expenses: (New Expense) 737.7
- EN-3230: Expenses: (New Expense) 737.71
- EN-3240: Expenses: (New Expense) 29.51
- EN-3240R: Expenses: (New Expense) 708.19
- EN-3250: Expenses: (New Expense) 737.7
- EN-3180: Expenses: (New Expense) 737.7
- EN-3190: Expenses: (New Expense) 737.7
- EN-3200: Expenses: (New Expense) 737.7
- EN-3210: Expenses: (New Expense) 737.7

| ID | WBS | Activity | Duration | Start | Finish | Predecessors | Complete | Total float | Free float | Resources | Cost | Actual cost | Bill Code | 釬珛測鎢杸遙 | 02 Phase | 03 Section | 05 Sub-section | 04 Discipline | 06 Zone | 01 Project | 07 Buildings & Ext. Works | 09 Subcontractors | 10 BOQ Cost | 16 BOQ-1 | PRC-MTL |
| --- | --- | --- | --- | --- | --- | --- | --- | --- | --- | --- | --- | --- | --- | --- | --- | --- | --- | --- | --- | --- | --- | --- | --- | --- | --- |
|  | 4 | **Overall Pumping Station M&E General Arrangement Plan** |  | 2021-08-22 | 2022-02-21 |  |  |  |  |  |  |  |  |  |  |  |  |  |  |  |  |  |  |  |  |
| EN-3140 |  | Prepare & Submit for Mechanical Shop Drawing for Deep Shaft Lift Pumping Station | 79d | 2021-08-22 A | 2021-12-08 A | EN-1400 | 100% |  |  | DESIGN ENGR-MECHANICAL [90 h]; DRAFTSMAN [90 h] | 737.7 | 737.7 | G8 | EG3640 | ENG | SHOP | TSRPS | INFRA | Gen | QEZ3 | GEN | MEP SUB | Bill-01 | B.1.01 |  |
| EN-3150 |  | Review and Comments from Engineer Mechanical Shop Drawing for Deep Shaft Lift Pumping Station | 31d | 2021-12-09 A | 2022-01-20 A | EN-3140 | 100% |  |  |  | 737.7 | 737.7 | G8 | EG3650 | ENG | SHOP | TSRPS | INFRA | Gen | QEZ3 | GEN | MEP SUB | Bill-01 | B.1.01 |  |
| EN-3160 |  | Incorporate Comments and Resubmit Mechanical Shop Drawing for Deep Shaft Lift Pumping Station | 17d | 2022-01-20 A | 2022-02-14 A | EN-3150 | 100% |  |  |  | 737.7 | 737.7 | G9 | PC1450 | ENG | PROC | GEN | MECH | Gen | QEZ3 | GEN | MEP SUB | Bill-01 | B.1.01 | MAT |
| EN-3170 |  | Review and Approval from Engineer Mechanical Shop Drawing for Deep Shaft Lift Pumping Station | 5d | 2022-02-15 A | 2022-02-21 A | EN-3160 | 100% |  |  |  | 737.7 | 737.7 | G9 | PC1460 | ENG | PROC | GEN | MECH | Gen | QEZ3 | GEN | MEP SUB | Bill-01 | B.1.01 | MAT |
|  | 2 | **Rising Main-Plan And Profile** |  | 2021-08-22 | 2022-03-03 |  |  |  |  |  |  |  |  |  |  |  |  |  |  |  |  |  |  |  |  |
| EN-3100 |  | Prepare & Submit for Mechanical Shop Drawing for Deep Shaft Lift Pumping Station | 75d | 2021-08-22 A | 2021-12-02 A | EN-1400 | 100% |  |  | DESIGN ENGR-MECHANICAL [90 h]; DRAFTSMAN [90 h] | 737.7 | 737.7 | G8 | EG3640 | ENG | SHOP | TSRPS | INFRA | Gen | QEZ3 | GEN | MEP SUB | Bill-01 | B.1.01 |  |
| EN-3110 |  | Review and Comments from Engineer Mechanical Shop Drawing for Deep Shaft Lift Pumping Station | 5d | 2021-12-05 A | 2021-12-09 A | EN-3100 | 100% |  |  |  | 737.7 | 737.7 | G8 | EG3650 | ENG | SHOP | TSRPS | INFRA | Gen | QEZ3 | GEN | MEP SUB | Bill-01 | B.1.01 |  |
| EN-3120 |  | Incorporate Comments and Resubmit Mechanical Shop Drawing for Deep Shaft Lift Pumping Station | 15d | 2021-12-12 A | 2021-12-30 A | EN-3110 | 100% |  |  |  | 737.7 | 737.7 | G9 | PC1450 | ENG | PROC | GEN | MECH | Gen | QEZ3 | GEN | MEP SUB | Bill-01 | B.1.01 | MAT |
| EN-3130 |  | Review and Approval from Engineer Mechanical Shop Drawing for Deep Shaft Lift Pumping Station | 44d | 2022-01-02 A | 2022-03-03 A | EN-3120 | 100% |  |  |  | 737.7 | 737.7 | G9 | PC1460 | ENG | PROC | GEN | MECH | Gen | QEZ3 | GEN | MEP SUB | Bill-01 | B.1.01 | MAT |
|  | 1 | **Potable Water Supply General Arrangement Plan** |  | 2021-08-22 | 2022-06-05 |  |  |  |  |  |  |  |  |  |  |  |  |  |  |  |  |  |  |  |  |
| EN-3060 |  | Prepare & Submit for Mechanical Shop Drawing for Deep Shaft Lift Pumping Station | 171d | 2021-08-22 A | 2022-04-18 A | EN-1400 | 100% |  |  | DESIGN ENGR-MECHANICAL [90 h]; DRAFTSMAN [90 h] | 29.52 | 29.52 | G8 | EG3640 | ENG | SHOP | TSRPS | INFRA | Gen | QEZ3 | GEN | MEP SUB | Bill-01 | B.1.01 |  |
| EN-3060R |  | Prepare & Submit for Mechanical Shop Drawing for Deep Shaft Lift Pumping Station | 1d | 2022-04-19 | 2022-04-19 | EN-1400, EN-3060 |  | 165d | 0d | DESIGN ENGR-MECHANICAL [90 h]; DRAFTSMAN [90 h] | 708.19 |  | G8 | EG3640 | ENG | SHOP | TSRPS | INFRA | Gen | QEZ3 | GEN | MEP SUB | Bill-01 | B.1.01 |  |
| EN-3070 |  | Review and Comments from Engineer Mechanical Shop Drawing for Deep Shaft Lift Pumping Station | 20d | 2022-04-20 | 2022-05-22 | EN-3060, EN-3060R |  | 165d | 0d |  | 737.7 |  | G8 | EG3650 | ENG | SHOP | TSRPS | INFRA | Gen | QEZ3 | GEN | MEP SUB | Bill-01 | B.1.01 |  |
| EN-3080 |  | Incorporate Comments and Resubmit Mechanical Shop Drawing for Deep Shaft Lift Pumping Station | 5d | 2022-05-23 | 2022-05-29 | EN-3070 |  | 165d | 0d |  | 737.7 |  | G9 | PC1450 | ENG | PROC | GEN | MECH | Gen | QEZ3 | GEN | MEP SUB | Bill-01 | B.1.01 | MAT |
| EN-3090 |  | Review and Approval from Engineer Mechanical Shop Drawing for Deep Shaft Lift Pumping Station | 5d | 2022-05-30 | 2022-06-05 | EN-3080 |  | 165d | 164d |  | 737.7 |  | G9 | PC1460 | ENG | PROC | GEN | MECH | Gen | QEZ3 | GEN | MEP SUB | Bill-01 | B.1.01 | MAT |
|  | 3 | **Potable Water Supply General Arrangement Section** |  | 2021-12-07 | 2022-06-23 |  |  |  |  |  |  |  |  |  |  |  |  |  |  |  |  |  |  |  |  |
| EN-2130 |  | Prepare & Submit for Mechanical Shop Drawing for Deep Shaft Lift Pumping Station | 94d | 2021-12-07 A | 2022-04-18 A | EN-2970, EN-1400 | 100% |  |  | DESIGN ENGR-MECHANICAL [90 h]; DRAFTSMAN [90 h] | 29.52 | 29.52 | G8 | EG3640 | ENG | SHOP | TSRPS | INFRA | Gen | QEZ3 | GEN | MEP SUB | Bill-01 | B.1.01 |  |
| EN-2130R |  | Prepare & Submit for Mechanical Shop Drawing for Deep Shaft Lift Pumping Station | 15d | 2022-04-19 | 2022-05-12 | EN-2970, EN-1400, EN-2130 |  | 150d | 0d | DESIGN ENGR-MECHANICAL [90 h]; DRAFTSMAN [90 h] | 708.19 |  | G8 | EG3640 | ENG | SHOP | TSRPS | INFRA | Gen | QEZ3 | GEN | MEP SUB | Bill-01 | B.1.01 |  |
| EN-2140 |  | Review and Comments from Engineer Mechanical Shop Drawing for Deep Shaft Lift Pumping Station | 20d | 2022-05-15 | 2022-06-09 | EN-2130, EN-2130R |  | 150d | 0d |  | 737.7 |  | G8 | EG3650 | ENG | SHOP | TSRPS | INFRA | Gen | QEZ3 | GEN | MEP SUB | Bill-01 | B.1.01 |  |
| EN-2150 |  | Incorporate Comments and Resubmit Mechanical Shop Drawing for Deep Shaft Lift Pumping Station | 5d | 2022-06-12 | 2022-06-16 | EN-2140 |  | 150d | 0d |  | 737.7 |  | G9 | PC1450 | ENG | PROC | GEN | MECH | Gen | QEZ3 | GEN | MEP SUB | Bill-01 | B.1.01 | MAT |
| EN-2160 |  | Review and Approval from Engineer Mechanical Shop Drawing for Deep Shaft Lift Pumping Station | 5d | 2022-06-19 | 2022-06-23 | EN-2150 |  | 150d |  |  | 737.7 |  | G9 | PC1460 | ENG | PROC | GEN | MECH | Gen | QEZ3 | GEN | MEP SUB | Bill-01 | B.1.01 | MAT |
|  | 14 | **Potable Water Supply Miscellaneous Details** |  | 2021-08-22 | 2022-06-23 |  |  |  |  |  |  |  |  |  |  |  |  |  |  |  |  |  |  |  |  |
| EN-3540 |  | Prepare & Submit for Mechanical Shop Drawing for Deep Shaft Lift Pumping Station | 171d | 2021-08-22 A | 2022-04-18 A | EN-1400 | 100% |  |  | DESIGN ENGR-MECHANICAL [90 h]; DRAFTSMAN [90 h] | 29.52 | 29.52 | G8 | EG3640 | ENG | SHOP | TSRPS | INFRA | Gen | QEZ3 | GEN | MEP SUB | Bill-01 | B.1.01 |  |
| EN-3540R |  | Prepare & Submit for Mechanical Shop Drawing for Deep Shaft Lift Pumping Station | 15d | 2022-04-19 | 2022-05-12 | EN-1400, EN-3540 |  | 151d | 0d | DESIGN ENGR-MECHANICAL [90 h]; DRAFTSMAN [90 h] | 708.19 |  | G8 | EG3640 | ENG | SHOP | TSRPS | INFRA | Gen | QEZ3 | GEN | MEP SUB | Bill-01 | B.1.01 |  |
| EN-3550 |  | Review and Comments from Engineer Mechanical Shop Drawing for Deep Shaft Lift Pumping Station | 20d | 2022-05-15 | 2022-06-09 | EN-3540, EN-3540R |  | 151d | 0d |  | 737.7 |  | G8 | EG3650 | ENG | SHOP | TSRPS | INFRA | Gen | QEZ3 | GEN | MEP SUB | Bill-01 | B.1.01 |  |
| EN-3560 |  | Incorporate Comments and Resubmit Mechanical Shop Drawing for Deep Shaft Lift Pumping Station | 5d | 2022-06-12 | 2022-06-16 | EN-3550 |  | 151d | 0d |  | 737.7 |  | G9 | PC1450 | ENG | PROC | GEN | MECH | Gen | QEZ3 | GEN | MEP SUB | Bill-01 | B.1.01 | MAT |
| EN-3570 |  | Review and Approval from Engineer Mechanical Shop Drawing for Deep Shaft Lift Pumping Station | 5d | 2022-06-19 | 2022-06-23 | EN-3560 |  | 151d | 150d |  | 737.7 |  | G9 | PC1460 | ENG | PROC | GEN | MECH | Gen | QEZ3 | GEN | MEP SUB | Bill-01 | B.1.01 | MAT |

Notes:
- EN-3140: Expenses: (New Expense) 737.7
- EN-3150: Expenses: (New Expense) 737.7
- EN-3160: Expenses: (New Expense) 737.7
- EN-3170: Expenses: (New Expense) 737.7
- EN-3100: Expenses: (New Expense) 737.7
- EN-3110: Expenses: (New Expense) 737.7
- EN-3120: Expenses: (New Expense) 737.7
- EN-3130: Expenses: (New Expense) 737.7
- EN-3060: Expenses: (New Expense) 29.52
- EN-3060R: Expenses: (New Expense) 708.19
- EN-3070: Expenses: (New Expense) 737.7
- EN-3080: Expenses: (New Expense) 737.7
- EN-3090: Expenses: (New Expense) 737.7
- EN-2130: Expenses: (New Expense) 29.52
- EN-2130R: Expenses: (New Expense) 708.19
- EN-2140: Expenses: (New Expense) 737.7
- EN-2150: Expenses: (New Expense) 737.7
- EN-2160: Expenses: (New Expense) 737.7
- EN-3540: Expenses: (New Expense) 29.52
- EN-3540R: Expenses: (New Expense) 708.19
- EN-3550: Expenses: (New Expense) 737.7
- EN-3560: Expenses: (New Expense) 737.7
- EN-3570: Expenses: (New Expense) 737.7

| ID | WBS | Activity | Duration | Start | Finish | Predecessors | Complete | Total float | Free float | Resources | Cost | Actual cost | Bill Code | 釬珛測鎢杸遙 | 02 Phase | 03 Section | 05 Sub-section | 04 Discipline | 06 Zone | 01 Project | 07 Buildings & Ext. Works | 09 Subcontractors | 10 BOQ Cost | 16 BOQ-1 | PRC-MTL |
| --- | --- | --- | --- | --- | --- | --- | --- | --- | --- | --- | --- | --- | --- | --- | --- | --- | --- | --- | --- | --- | --- | --- | --- | --- | --- |
|  | 15 | **Storm Water Drainage Details** |  | 2021-08-22 | 2022-05-02 |  |  |  |  |  |  |  |  |  |  |  |  |  |  |  |  |  |  |  |  |
| EN-3580 |  | Prepare & Submit for Mechanical Shop Drawing for Deep Shaft Lift Pumping Station | 130d | 2021-08-22 A | 2022-02-20 A | EN-1400 | 100% |  |  | DESIGN ENGR-MECHANICAL [90 h]; DRAFTSMAN [90 h] | 737.71 | 737.71 | G8 | EG3640 | ENG | SHOP | TSRPS | INFRA | Gen | QEZ3 | GEN | MEP SUB | Bill-01 | B.1.01 |  |
| EN-3590 |  | Review and Comments from Engineer Mechanical Shop Drawing for Deep Shaft Lift Pumping Station | 4d | 2022-02-20 A | 2022-02-23 A | EN-3580 | 100% |  |  |  | 737.7 | 737.7 | G8 | EG3650 | ENG | SHOP | TSRPS | INFRA | Gen | QEZ3 | GEN | MEP SUB | Bill-01 | B.1.01 |  |
| EN-3600 |  | Incorporate Comments and Resubmit Mechanical Shop Drawing for Deep Shaft Lift Pumping Station | 39d | 2022-02-23 A | 2022-04-18 A | EN-3590 | 100% |  |  |  | 29.51 | 29.51 | G9 | PC1450 | ENG | PROC | GEN | MECH | Gen | QEZ3 | GEN | MEP SUB | Bill-01 | B.1.01 | MAT |
| EN-3600R |  | Incorporate Comments and Resubmit Mechanical Shop Drawing for Deep Shaft Lift Pumping Station | 5d | 2022-04-19 | 2022-04-25 | EN-3590, EN-3600 |  | 182d | 0d |  | 708.19 |  | G9 | PC1450 | ENG | PROC | GEN | MECH | Gen | QEZ3 | GEN | MEP SUB | Bill-01 | B.1.01 | MAT |
| EN-3610 |  | Review and Approval from Engineer Mechanical Shop Drawing for Deep Shaft Lift Pumping Station | 5d | 2022-04-26 | 2022-05-02 | EN-3600R |  | 182d | 165.67d |  | 737.7 |  | G9 | PC1460 | ENG | PROC | GEN | MECH | Gen | QEZ3 | GEN | MEP SUB | Bill-01 | B.1.01 | MAT |
|  | 16 | **Bulk Fuel Tank Details** |  | 2021-08-22 | 2022-02-23 |  |  |  |  |  |  |  |  |  |  |  |  |  |  |  |  |  |  |  |  |
| EN-3620 |  | Prepare & Submit for Mechanical Shop Drawing for Deep Shaft Lift Pumping Station | 124d | 2021-08-22 A | 2022-02-10 A | EN-1400 | 100% |  |  | DESIGN ENGR-MECHANICAL [90 h]; DRAFTSMAN [90 h] | 737.7 | 737.7 | G8 | EG3640 | ENG | SHOP | TSRPS | INFRA | Gen | QEZ3 | GEN | MEP SUB | Bill-01 | B.1.01 |  |
| EN-3630 |  | Review and Comments from Engineer Mechanical Shop Drawing for Deep Shaft Lift Pumping Station | 3d | 2022-02-10 A | 2022-02-14 A | EN-3620 | 100% |  |  |  | 737.7 | 737.7 | G8 | EG3650 | ENG | SHOP | TSRPS | INFRA | Gen | QEZ3 | GEN | MEP SUB | Bill-01 | B.1.01 |  |
| EN-3640 |  | Incorporate Comments and Resubmit Mechanical Shop Drawing for Deep Shaft Lift Pumping Station | 4d | 2022-02-15 A | 2022-02-20 A | EN-3630 | 100% |  |  |  | 737.7 | 737.7 | G9 | PC1450 | ENG | PROC | GEN | MECH | Gen | QEZ3 | GEN | MEP SUB | Bill-01 | B.1.01 | MAT |
| EN-3650 |  | Review and Approval from Engineer Mechanical Shop Drawing for Deep Shaft Lift Pumping Station | 3d | 2022-02-21 A | 2022-02-23 A | EN-3640 | 100% |  |  |  | 737.7 | 737.7 | G9 | PC1460 | ENG | PROC | GEN | MECH | Gen | QEZ3 | GEN | MEP SUB | Bill-01 | B.1.01 | MAT |
|  | 17 | **Diesel Generator And Daily Tank Details** |  | 2021-08-22 | 2022-06-23 |  |  |  |  |  |  |  |  |  |  |  |  |  |  |  |  |  |  |  |  |
| EN-3660 |  | Prepare & Submit for Mechanical Shop Drawing for Deep Shaft Lift Pumping Station | 171d | 2021-08-22 A | 2022-04-18 A | EN-1400 | 100% |  |  | DESIGN ENGR-MECHANICAL [90 h]; DRAFTSMAN [90 h] | 29.52 | 29.52 | G8 | EG3640 | ENG | SHOP | TSRPS | INFRA | Gen | QEZ3 | GEN | MEP SUB | Bill-01 | B.1.01 |  |
| EN-3660R |  | Prepare & Submit for Mechanical Shop Drawing for Deep Shaft Lift Pumping Station | 15d | 2022-04-19 | 2022-05-12 | EN-1400 |  | 150d | 0d | DESIGN ENGR-MECHANICAL [90 h]; DRAFTSMAN [90 h] | 708.19 |  | G8 | EG3640 | ENG | SHOP | TSRPS | INFRA | Gen | QEZ3 | GEN | MEP SUB | Bill-01 | B.1.01 |  |
| EN-3670 |  | Review and Comments from Engineer Mechanical Shop Drawing for Deep Shaft Lift Pumping Station | 20d | 2022-05-15 | 2022-06-09 | EN-3660, EN-3660R |  | 150d | 0d |  | 737.7 |  | G8 | EG3650 | ENG | SHOP | TSRPS | INFRA | Gen | QEZ3 | GEN | MEP SUB | Bill-01 | B.1.01 |  |
| EN-3680 |  | Incorporate Comments and Resubmit Mechanical Shop Drawing for Deep Shaft Lift Pumping Station | 5d | 2022-06-12 | 2022-06-16 | EN-3670 |  | 150d | 0d |  | 737.7 |  | G9 | PC1450 | ENG | PROC | GEN | MECH | Gen | QEZ3 | GEN | MEP SUB | Bill-01 | B.1.01 | MAT |
| EN-3690 |  | Review and Approval from Engineer Mechanical Shop Drawing for Deep Shaft Lift Pumping Station | 5d | 2022-06-19 | 2022-06-23 | EN-3680 |  | 150d |  |  | 737.7 |  | G9 | PC1460 | ENG | PROC | GEN | MECH | Gen | QEZ3 | GEN | MEP SUB | Bill-01 | B.1.01 | MAT |
|  | 18 | **Lifting Equipment'S Layout And Fixing Details** |  | 2021-08-22 | 2022-06-23 |  |  |  |  |  |  |  |  |  |  |  |  |  |  |  |  |  |  |  |  |
| EN-3700 |  | Prepare & Submit for Mechanical Shop Drawing for Deep Shaft Lift Pumping Station | 171d | 2021-08-22 A | 2022-04-18 A | EN-1400 | 100% |  |  | DESIGN ENGR-MECHANICAL [90 h]; DRAFTSMAN [90 h] | 29.52 | 29.52 | G8 | EG3640 | ENG | SHOP | TSRPS | INFRA | Gen | QEZ3 | GEN | MEP SUB | Bill-01 | B.1.01 |  |
| EN-3700R |  | Prepare & Submit for Mechanical Shop Drawing for Deep Shaft Lift Pumping Station | 15d | 2022-04-19 | 2022-05-12 | EN-1400, EN-3700 |  | 146d | 0d | DESIGN ENGR-MECHANICAL [90 h]; DRAFTSMAN [90 h] | 708.19 |  | G8 | EG3640 | ENG | SHOP | TSRPS | INFRA | Gen | QEZ3 | GEN | MEP SUB | Bill-01 | B.1.01 |  |
| EN-3710 |  | Review and Comments from Engineer Mechanical Shop Drawing for Deep Shaft Lift Pumping Station | 20d | 2022-05-15 | 2022-06-09 | EN-3700, EN-3700R |  | 146d | 0d |  | 737.7 |  | G8 | EG3650 | ENG | SHOP | TSRPS | INFRA | Gen | QEZ3 | GEN | MEP SUB | Bill-01 | B.1.01 |  |
| EN-3720 |  | Incorporate Comments and Resubmit Mechanical Shop Drawing for Deep Shaft Lift Pumping Station | 5d | 2022-06-12 | 2022-06-16 | EN-3710 |  | 146d | 0d |  | 737.7 |  | G9 | PC1450 | ENG | PROC | GEN | MECH | Gen | QEZ3 | GEN | MEP SUB | Bill-01 | B.1.01 | MAT |
| EN-3730 |  | Review and Approval from Engineer Mechanical Shop Drawing for Deep Shaft Lift Pumping Station | 5d | 2022-06-19 | 2022-06-23 | EN-3720 |  | 146d | 145d |  | 737.7 |  | G9 | PC1460 | ENG | PROC | GEN | MECH | Gen | QEZ3 | GEN | MEP SUB | Bill-01 | B.1.01 | MAT |
|  | 19 | **Macerator Installation Details** |  | 2021-08-22 | 2022-04-25 |  |  |  |  |  |  |  |  |  |  |  |  |  |  |  |  |  |  |  |  |
| EN-3740 |  | Prepare & Submit for Mechanical Shop Drawing for Deep Shaft Lift Pumping Station | 55d | 2021-08-22 A | 2021-11-04 A | EN-1400 | 100% |  |  | DESIGN ENGR-MECHANICAL [90 h]; DRAFTSMAN [90 h] | 737.71 | 737.71 | G8 | EG3640 | ENG | SHOP | TSRPS | INFRA | Gen | QEZ3 | GEN | MEP SUB | Bill-01 | B.1.01 |  |
| EN-3750 |  | Review and Comments from Engineer Mechanical Shop Drawing for Deep Shaft Lift Pumping Station | 5d | 2021-11-07 A | 2021-11-11 A | EN-3740 | 100% |  |  |  | 737.7 | 737.7 | G8 | EG3650 | ENG | SHOP | TSRPS | INFRA | Gen | QEZ3 | GEN | MEP SUB | Bill-01 | B.1.01 |  |
| EN-3760 |  | Incorporate Comments and Resubmit Mechanical Shop Drawing for Deep Shaft Lift Pumping Station | 60d | 2021-11-14 A | 2022-02-03 A | EN-3750 | 100% |  |  |  | 737.7 | 737.7 | G9 | PC1450 | ENG | PROC | GEN | MECH | Gen | QEZ3 | GEN | MEP SUB | Bill-01 | B.1.01 | MAT |
| EN-3770 |  | Review and Approval from Engineer Mechanical Shop Drawing for Deep Shaft Lift Pumping Station | 52d | 2022-02-03 A | 2022-04-18 A | EN-3760 | 100% |  |  |  | 29.51 | 29.51 | G9 | PC1460 | ENG | PROC | GEN | MECH | Gen | QEZ3 | GEN | MEP SUB | Bill-01 | B.1.01 | MAT |
| EN-3770R |  | Review and Approval from Engineer Mechanical Shop Drawing for Deep Shaft Lift Pumping Station | 5d | 2022-04-19 | 2022-04-25 | EN-3760, EN-3770 |  | 186d | 185d |  | 708.19 |  | G9 | PC1460 | ENG | PROC | GEN | MECH | Gen | QEZ3 | GEN | MEP SUB | Bill-01 | B.1.01 | MAT |

Notes:
- EN-3580: Expenses: (New Expense) 737.71
- EN-3590: Expenses: (New Expense) 737.7
- EN-3600: Expenses: (New Expense) 29.51
- EN-3600R: Expenses: (New Expense) 708.19
- EN-3610: Expenses: (New Expense) 737.7
- EN-3620: Expenses: (New Expense) 737.7
- EN-3630: Expenses: (New Expense) 737.7
- EN-3640: Expenses: (New Expense) 737.7
- EN-3650: Expenses: (New Expense) 737.7
- EN-3660: Expenses: (New Expense) 29.52
- EN-3660R: Expenses: (New Expense) 708.19
- EN-3670: Expenses: (New Expense) 737.7
- EN-3680: Expenses: (New Expense) 737.7
- EN-3690: Expenses: (New Expense) 737.7
- EN-3700: Expenses: (New Expense) 29.52
- EN-3700R: Expenses: (New Expense) 708.19
- EN-3710: Expenses: (New Expense) 737.7
- EN-3720: Expenses: (New Expense) 737.7
- EN-3730: Expenses: (New Expense) 737.7
- EN-3740: Expenses: (New Expense) 737.71
- EN-3750: Expenses: (New Expense) 737.7
- EN-3760: Expenses: (New Expense) 737.7
- EN-3770: Expenses: (New Expense) 29.51
- EN-3770R: Expenses: (New Expense) 708.19

| ID | WBS | Activity | Duration | Start | Finish | Predecessors | Complete | Resources | Cost | Actual cost | Bill Code | 釬珛測鎢杸遙 | 02 Phase | 03 Section | 05 Sub-section | 04 Discipline | 06 Zone | 01 Project | 07 Buildings & Ext. Works | 09 Subcontractors | 10 BOQ Cost | 16 BOQ-1 | PRC-MTL |
| --- | --- | --- | --- | --- | --- | --- | --- | --- | --- | --- | --- | --- | --- | --- | --- | --- | --- | --- | --- | --- | --- | --- | --- |
|  | 20 | **Penstock Ga** |  | 2021-08-22 | 2022-03-01 |  |  |  |  |  |  |  |  |  |  |  |  |  |  |  |  |  |  |
| EN-3780 |  | Prepare & Submit for Mechanical Shop Drawing for Deep Shaft Lift Pumping Station | 80d | 2021-08-22 A | 2021-12-09 A | EN-1400 | 100% | DESIGN ENGR-MECHANICAL [90 h]; DRAFTSMAN [90 h] | 737.7 | 737.7 | G8 | EG3640 | ENG | SHOP | TSRPS | INFRA | Gen | QEZ3 | GEN | MEP SUB | Bill-01 | B.1.01 |  |
| EN-3790 |  | Review and Comments from Engineer Mechanical Shop Drawing for Deep Shaft Lift Pumping Station | 20d | 2021-12-12 A | 2022-01-06 A | EN-3780 | 100% |  | 737.7 | 737.7 | G8 | EG3650 | ENG | SHOP | TSRPS | INFRA | Gen | QEZ3 | GEN | MEP SUB | Bill-01 | B.1.01 |  |
| EN-3800 |  | Incorporate Comments and Resubmit Mechanical Shop Drawing for Deep Shaft Lift Pumping Station | 50d | 2021-12-12 A | 2022-02-20 A | EN-3790 | 100% |  | 737.7 | 737.7 | G9 | PC1450 | ENG | PROC | GEN | MECH | Gen | QEZ3 | GEN | MEP SUB | Bill-01 | B.1.01 | MAT |
| EN-3810 |  | Review and Approval from Engineer Mechanical Shop Drawing for Deep Shaft Lift Pumping Station | 8d | 2022-02-20 A | 2022-03-01 A | EN-3800 | 100% |  | 737.7 | 737.7 | G9 | PC1460 | ENG | PROC | GEN | MECH | Gen | QEZ3 | GEN | MEP SUB | Bill-01 | B.1.01 | MAT |
|  | 21 | **Pipe Support Details** |  | 2021-08-22 | 2022-02-23 |  |  |  |  |  |  |  |  |  |  |  |  |  |  |  |  |  |  |
| EN-3820 |  | Prepare & Submit for Mechanical Shop Drawing for Deep Shaft Lift Pumping Station | 119d | 2021-08-22 A | 2022-02-02 A | EN-1400 | 100% | DESIGN ENGR-MECHANICAL [90 h]; DRAFTSMAN [90 h] | 737.7 | 737.7 | G8 | EG3640 | ENG | SHOP | TSRPS | INFRA | Gen | QEZ3 | GEN | MEP SUB | Bill-01 | B.1.01 |  |
| EN-3830 |  | Review and Comments from Engineer Mechanical Shop Drawing for Deep Shaft Lift Pumping Station | 9d | 2022-02-02 A | 2022-02-15 A | EN-3820 | 100% |  | 737.7 | 737.7 | G8 | EG3650 | ENG | SHOP | TSRPS | INFRA | Gen | QEZ3 | GEN | MEP SUB | Bill-01 | B.1.01 |  |
| EN-3840 |  | Incorporate Comments and Resubmit Mechanical Shop Drawing for Deep Shaft Lift Pumping Station | 4d | 2022-02-16 A | 2022-02-21 A | EN-3830 | 100% |  | 737.7 | 737.7 | G9 | PC1450 | ENG | PROC | GEN | MECH | Gen | QEZ3 | GEN | MEP SUB | Bill-01 | B.1.01 | MAT |
| EN-3850 |  | Review and Approval from Engineer Mechanical Shop Drawing for Deep Shaft Lift Pumping Station | 3d | 2022-02-21 A | 2022-02-23 A | EN-3840 | 100% |  | 737.7 | 737.7 | G9 | PC1460 | ENG | PROC | GEN | MECH | Gen | QEZ3 | GEN | MEP SUB | Bill-01 | B.1.01 | MAT |
|  | 1 | **Electrical Works Shop Drawing** |  | 2021-08-09 | 2022-05-29 |  |  |  |  |  |  |  |  |  |  |  |  |  |  |  |  |  |  |
|  | 17 | **ELECTRICAL** |  | 2021-08-11 | 2022-05-02 |  |  |  |  |  |  |  |  |  |  |  |  |  |  |  |  |  |  |
|  | 4 | **DB Schedules (Lighting & Small Power** |  | 2021-10-14 | 2022-02-20 |  |  |  |  |  |  |  |  |  |  |  |  |  |  |  |  |  |  |
| EN-1610 |  | Prepare & Submit for DB Schedule | 9d | 2021-10-14 A | 2021-10-26 A | EN-2970 FF | 100% | DESIGN ENGR-ELECTRICAL [36 h] | 737.7 | 737.7 | G8 | EG3640 | ENG | SHOP | TSRPS | INFRA | Gen | QEZ3 | GEN | MEP SUB | Bill-01 | B.1.01 |  |
| EN-1620 |  | Review and Comments from Engineer DB Schedule | 6d | 2021-10-27 A | 2021-11-03 A | EN-1610 | 100% |  | 737.7 | 737.7 | G8 | EG3650 | ENG | SHOP | TSRPS | INFRA | Gen | QEZ3 | GEN | MEP SUB | Bill-01 | B.1.01 |  |
| EN-1630 |  | Incorporate Comments and Resubmit DB Schedule | 73d | 2021-11-04 A | 2022-02-15 A | EN-1620 | 100% |  | 737.7 | 737.7 | G9 | PC1450 | ENG | PROC | GEN | MECH | Gen | QEZ3 | GEN | MEP SUB | Bill-01 | B.1.01 | MAT |
| EN-1640 |  | Review and Approval from Engineer DB Schedule | 3d | 2022-02-16 A | 2022-02-20 A | EN-1630 | 100% |  | 737.7 | 737.7 | G9 | PC1460 | ENG | PROC | GEN | MECH | Gen | QEZ3 | GEN | MEP SUB | Bill-01 | B.1.01 | MAT |
|  | 5 | **Single Line Diagram** |  | 2021-09-01 | 2021-12-20 |  |  |  |  |  |  |  |  |  |  |  |  |  |  |  |  |  |  |
| EN-1650 |  | Prepare & Submit for Single LIne Diagram | 2d | 2021-09-01 A | 2021-09-02 A | PRM-1660 | 100% | DESIGN ENGR-ELECTRICAL [36 h] | 491.83 | 491.83 | G8 | EG3640 | ENG | SHOP | TSRPS | INFRA | Gen | QEZ3 | GEN | MEP SUB | Bill-01 | B.1.01 |  |
| EN-1660 |  | Review and Comments from Engineer Single LIne Diagram | 5d | 2021-09-05 A | 2021-09-09 A | EN-1650 | 100% |  | 491.83 | 491.83 | G8 | EG3650 | ENG | SHOP | TSRPS | INFRA | Gen | QEZ3 | GEN | MEP SUB | Bill-01 | B.1.01 |  |
| EN-1670 |  | Incorporate Comments and Resubmit Single LIne Diagram | 41d | 2021-09-09 A | 2021-11-04 A | EN-1660 | 100% |  | 491.83 | 491.83 | G9 | PC1450 | ENG | PROC | GEN | MECH | Gen | QEZ3 | GEN | MEP SUB | Bill-01 | B.1.01 | MAT |
| EN-2290 |  | Prepare & Submit for Single LIne Diagram - Kahramaa | 18d | 2021-11-16 A | 2021-12-09 A | EN-1650 | 100% |  | 491.83 | 491.83 |  |  |  |  |  |  |  |  |  |  | Bill-01 |  |  |
| EN-1680 |  | Review and Approval from Engineer Single LIne Diagram | 5d | 2021-12-12 A | 2021-12-16 A | EN-1670 | 100% |  | 491.83 | 491.84 | G9 | PC1460 | ENG | PROC | GEN | MECH | Gen | QEZ3 | GEN | MEP SUB | Bill-01 | B.1.01 | MAT |
| EN-3050 |  | Review and Approval from Enginee for Single LIne Diagram - Kahramaa | 3d | 2021-12-16 A | 2021-12-20 A | EN-2290 | 100% |  | 491.83 | 491.84 |  |  |  |  |  |  |  |  |  |  | Bill-01 |  |  |

Notes:
- EN-3780: Expenses: (New Expense) 737.7
- EN-3790: Expenses: (New Expense) 737.7
- EN-3800: Expenses: (New Expense) 737.7
- EN-3810: Expenses: (New Expense) 737.7
- EN-3820: Expenses: (New Expense) 737.7
- EN-3830: Expenses: (New Expense) 737.7
- EN-3840: Expenses: (New Expense) 737.7
- EN-3850: Expenses: (New Expense) 737.7
- EN-1610: Expenses: (New Expense) 737.7
- EN-1620: Expenses: (New Expense) 737.7
- EN-1630: Expenses: (New Expense) 737.7
- EN-1640: Expenses: (New Expense) 737.7
- EN-1650: Expenses: (New Expense) 491.83
- EN-1660: Expenses: (New Expense) 491.83
- EN-1670: Expenses: (New Expense) 491.83
- EN-2290: Expenses: (New Expense Item) 491.83
- EN-1680: Expenses: (New Expense)1 491.83
- EN-3050: Expenses: (New Expense Item) 491.83

| ID | WBS | Activity | Duration | Start | Finish | Predecessors | Complete | Total float | Free float | Resources | Cost | Actual cost | Bill Code | 釬珛測鎢杸遙 | 02 Phase | 03 Section | 05 Sub-section | 04 Discipline | 06 Zone | 01 Project | 07 Buildings & Ext. Works | 09 Subcontractors | 10 BOQ Cost | 16 BOQ-1 | PRC-MTL |
| --- | --- | --- | --- | --- | --- | --- | --- | --- | --- | --- | --- | --- | --- | --- | --- | --- | --- | --- | --- | --- | --- | --- | --- | --- | --- |
|  | 6 | **MCC Building Layout** |  | 2021-10-24 | 2022-03-07 |  |  |  |  |  |  |  |  |  |  |  |  |  |  |  |  |  |  |  |  |
| EN-1690 |  | Prepare & Submit for MCC Building Lay Out | 35d | 2021-10-24 A | 2021-12-09 A | EN-2970 | 100% |  |  | DESIGN ENGR-ELECTRICAL [36 h] | 737.7 | 737.7 | G8 | EG3640 | ENG | SHOP | TSRPS | INFRA | Gen | QEZ3 | GEN | MEP SUB | Bill-01 | B.1.01 |  |
| EN-1700 |  | Review and Comments from Engineer MCC Building Lay Out | 4d | 2021-12-12 A | 2021-12-15 A | EN-1690 | 100% |  |  |  | 737.7 | 737.7 | G8 | EG3650 | ENG | SHOP | TSRPS | INFRA | Gen | QEZ3 | GEN | MEP SUB | Bill-01 | B.1.01 |  |
| EN-1710 |  | Incorporate Comments and Resubmit MCC Building Lay Out | 53d | 2021-12-16 A | 2022-03-01 A | EN-1700 | 100% |  |  |  | 737.7 | 737.7 | G9 | PC1450 | ENG | PROC | GEN | MECH | Gen | QEZ3 | GEN | MEP SUB | Bill-01 | B.1.01 | MAT |
| EN-1720 |  | Review and Approval from Engineer MCC Building Lay Out | 5d | 2022-03-01 A | 2022-03-07 A | EN-1710 | 100% |  |  |  | 737.7 | 737.7 | G9 | PC1460 | ENG | PROC | GEN | MECH | Gen | QEZ3 | GEN | MEP SUB | Bill-01 | B.1.01 | MAT |
|  | 7 | **Lighting & Small Power** |  | 2021-12-15 | 2022-03-17 |  |  |  |  |  |  |  |  |  |  |  |  |  |  |  |  |  |  |  |  |
| EN-1730 |  | Prepare & Submit for Small Power and Lighting | 7d | 2021-12-15 A | 2021-12-23 A | EN-1690 FF+2d | 100% |  |  | DESIGN ENGR-ELECTRICAL [36 h] | 737.7 | 737.7 | G8 | EG3640 | ENG | SHOP | TSRPS | INFRA | Gen | QEZ3 | GEN | MEP SUB | Bill-01 | B.1.01 |  |
| EN-1740 |  | Review and Comments from Engineer Small Power and Lighting | 7d | 2021-12-26 A | 2022-01-03 A | EN-1730 | 100% |  |  |  | 737.7 | 737.7 | G8 | EG3650 | ENG | SHOP | TSRPS | INFRA | Gen | QEZ3 | GEN | MEP SUB | Bill-01 | B.1.01 |  |
| EN-1750 |  | Incorporate Comments and Resubmit Small Power and Lighting | 47d | 2022-01-04 A | 2022-03-10 A | EN-1740 | 100% |  |  |  | 737.7 | 737.7 | G9 | PC1450 | ENG | PROC | GEN | MECH | Gen | QEZ3 | GEN | MEP SUB | Bill-01 | B.1.01 | MAT |
| EN-1760 |  | Review and Approval from Engineer Small Power and Lighting | 6d | 2022-03-10 A | 2022-03-17 A | EN-1750 | 100% |  |  |  | 737.7 | 737.7 | G9 | PC1460 | ENG | PROC | GEN | MECH | Gen | QEZ3 | GEN | MEP SUB | Bill-01 | B.1.01 | MAT |
|  | 9 | **Cable Routing Layout with details** |  | 2021-12-26 | 2022-04-26 |  |  |  |  |  |  |  |  |  |  |  |  |  |  |  |  |  |  |  |  |
| EN-1810 |  | Prepare & Submit for Cable Routing Lay Out Details | 16d | 2021-12-26 A | 2022-01-16 A | EN-1730 | 100% |  |  | DESIGN ENGR-ELECTRICAL [36 h] | 737.7 | 737.7 | G8 | EG3640 | ENG | SHOP | TSRPS | INFRA | Gen | QEZ3 | GEN | MEP SUB | Bill-01 | B.1.01 |  |
| EN-1820 |  | Review and Comments from Engineer Cable Routing Lay Out Details | 21d | 2021-12-26 A | 2022-01-23 A | EN-1810 | 100% |  |  |  | 737.7 | 737.7 | G8 | EG3650 | ENG | SHOP | TSRPS | INFRA | Gen | QEZ3 | GEN | MEP SUB | Bill-01 | B.1.01 |  |
| EN-1830 |  | Incorporate Comments and Resubmit Cable Routing Lay Out Details | 60d | 2022-01-24 A | 2022-04-18 A | EN-1820 | 100% |  |  |  | 29.51 | 29.51 | G9 | PC1450 | ENG | PROC | GEN | MECH | Gen | QEZ3 | GEN | MEP SUB | Bill-01 | B.1.01 | MAT |
| EN-1830R |  | Incorporate Comments and Resubmit Cable Routing Lay Out Details | 1d | 2022-04-19 | 2022-04-19 | EN-1820, EN-1830 |  | 126d | 0d |  | 708.19 |  | G9 | PC1450 | ENG | PROC | GEN | MECH | Gen | QEZ3 | GEN | MEP SUB | Bill-01 | B.1.01 | MAT |
| EN-1840 |  | Review and Approval from Engineer Cable Routing Lay Out Details | 5d | 2022-04-20 | 2022-04-26 | EN-1830, EN-1830R |  | 126d | 62.67d |  | 737.7 |  | G9 | PC1460 | ENG | PROC | GEN | MECH | Gen | QEZ3 | GEN | MEP SUB | Bill-01 | B.1.01 | MAT |
|  | 10 | **Earthing and Lightning Layout with details** |  | 2021-11-15 | 2022-05-02 |  |  |  |  |  |  |  |  |  |  |  |  |  |  |  |  |  |  |  |  |
| EN-1850 |  | Prepare & Submit for Earthing and Lighning Protection Lay Out | 29d | 2021-11-15 A | 2021-12-23 A | EN-1810 FF | 100% |  |  | DESIGN ENGR-ELECTRICAL [36 h] | 737.7 | 737.7 | G8 | EG3640 | ENG | SHOP | TSRPS | INFRA | Gen | QEZ3 | GEN | MEP SUB | Bill-01 | B.1.01 |  |
| EN-1860 |  | Review and Comments from Engineer Earthing and Lighning Protection Lay Out | 7d | 2021-12-26 A | 2022-01-03 A | EN-1850 | 100% |  |  |  | 737.7 | 737.7 | G8 | EG3650 | ENG | SHOP | TSRPS | INFRA | Gen | QEZ3 | GEN | MEP SUB | Bill-01 | B.1.01 |  |
| EN-1870 |  | Incorporate Comments and Resubmit Earthing and Lighning Protection Lay Out | 75d | 2022-01-03 A | 2022-04-18 A | EN-1860 | 100% |  |  |  | 29.51 | 29.51 | G9 | PC1450 | ENG | PROC | GEN | MECH | Gen | QEZ3 | GEN | MEP SUB | Bill-01 | B.1.01 | MAT |
| EN-1870R |  | Incorporate Comments and Resubmit Earthing and Lighning Protection Lay Out | 5d | 2022-04-19 | 2022-04-25 | EN-1860, EN-1870 |  | 195d | 0d |  | 708.19 |  | G9 | PC1450 | ENG | PROC | GEN | MECH | Gen | QEZ3 | GEN | MEP SUB | Bill-01 | B.1.01 | MAT |
| EN-1880 |  | Review and Approval from Engineer Earthing and Lighning Protection Lay Out | 5d | 2022-04-26 | 2022-05-02 | EN-1870, EN-1870R |  | 195d | 11d |  | 737.7 |  | G9 | PC1460 | ENG | PROC | GEN | MECH | Gen | QEZ3 | GEN | MEP SUB | Bill-01 | B.1.01 | MAT |
|  | 3 | **Cable Schedule (Power, Instrument and Control)** |  | 2021-08-11 | 2021-12-14 |  |  |  |  |  |  |  |  |  |  |  |  |  |  |  |  |  |  |  |  |
| EN-1490 |  | Prepare & Submit for Cable Schedule | 2d | 2021-08-11 A | 2021-08-12 A | EN-1810 FF | 100% |  |  | DESIGN ENGR-ELECTRICAL [36 h] | 737.7 | 737.7 | G8 | EG3640 | ENG | SHOP | TSRPS | INFRA | Gen | QEZ3 | GEN | MEP SUB | Bill-01 | B.1.01 |  |
| EN-1500 |  | Review and Comments from Engineer Cable Schedule | 3d | 2021-08-15 A | 2021-08-17 A | EN-1490 | 100% |  |  |  | 737.7 | 737.7 | G8 | EG3650 | ENG | SHOP | TSRPS | INFRA | Gen | QEZ3 | GEN | MEP SUB | Bill-01 | B.1.01 |  |
| EN-1510 |  | Incorporate Comments and Resubmit Cable Schedule | 81d | 2021-08-18 A | 2021-12-08 A | EN-1500 | 100% |  |  |  | 737.7 | 737.7 | G9 | PC1450 | ENG | PROC | GEN | MECH | Gen | QEZ3 | GEN | MEP SUB | Bill-01 | B.1.01 | MAT |
| EN-1520 |  | Review and Approval from Engineer Cable Schedule | 4d | 2021-12-09 A | 2021-12-14 A | EN-1510 | 100% |  |  |  | 737.7 | 737.7 | G9 | PC1460 | ENG | PROC | GEN | MECH | Gen | QEZ3 | GEN | MEP SUB | Bill-01 | B.1.01 | MAT |

Notes:
- EN-1690: Expenses: (New Expense)1 737.7
- EN-1700: Expenses: (New Expense)1 737.7
- EN-1710: Expenses: (New Expense)1 737.7
- EN-1720: Expenses: (New Expense)1 737.7
- EN-1730: Expenses: (New Expense)1 737.7
- EN-1740: Expenses: (New Expense)1 737.7
- EN-1750: Expenses: (New Expense)1 737.7
- EN-1760: Expenses: (New Expense)1 737.7
- EN-1810: Expenses: (New Expense)1 737.7
- EN-1820: Expenses: (New Expense)1 737.7
- EN-1830: Expenses: (New Expense)1 29.51
- EN-1830R: Expenses: (New Expense)1 708.19
- EN-1840: Expenses: (New Expense)1 737.7
- EN-1850: Expenses: (New Expense)1 737.7
- EN-1860: Expenses: (New Expense)1 737.7
- EN-1870: Expenses: (New Expense)1 29.51
- EN-1870R: Expenses: (New Expense)1 708.19
- EN-1880: Expenses: (New Expense)1 737.7
- EN-1490: Expenses: (New Expense)1 737.7
- EN-1500: Expenses: (New Expense)1 737.7
- EN-1510: Expenses: (New Expense)1 737.7
- EN-1520: Expenses: (New Expense)1 737.7

| ID | WBS | Activity | Duration | Start | Finish | Predecessors | Complete | Total float | Free float | Resources | Cost | Actual cost | Bill Code | 釬珛測鎢杸遙 | 02 Phase | 03 Section | 05 Sub-section | 04 Discipline | 06 Zone | 01 Project | 07 Buildings & Ext. Works | 09 Subcontractors | 10 BOQ Cost | 16 BOQ-1 | PRC-MTL |
| --- | --- | --- | --- | --- | --- | --- | --- | --- | --- | --- | --- | --- | --- | --- | --- | --- | --- | --- | --- | --- | --- | --- | --- | --- | --- |
|  | 18 | **ICA** |  | 2021-08-09 | 2022-05-29 |  |  |  |  |  |  |  |  |  |  |  |  |  |  |  |  |  |  |  |  |
|  | 1 | **Instrument Index** |  | 2021-08-22 | 2022-02-21 |  |  |  |  |  |  |  |  |  |  |  |  |  |  |  |  |  |  |  |  |
| EN-1530 |  | Prepare & Submit for Instrument Index | 87d | 2021-08-22 A | 2021-12-20 A | EN-1400 | 100% |  |  | DESIGN ENGR-ELECTRICAL [36 h] | 737.7 | 737.7 | G8 | EG3640 | ENG | SHOP | TSRPS | INFRA | Gen | QEZ3 | GEN | MEP SUB | Bill-01 | B.1.01 |  |
| EN-1540 |  | Review and Comments from Engineer Instrument Index | 3d | 2021-12-21 A | 2021-12-23 A | EN-1530 | 100% |  |  |  | 737.7 | 737.7 | G8 | EG3650 | ENG | SHOP | TSRPS | INFRA | Gen | QEZ3 | GEN | MEP SUB | Bill-01 | B.1.01 |  |
| EN-1550 |  | Incorporate Comments and Resubmit Instrument Index | 36d | 2021-12-26 A | 2022-02-14 A | EN-1540 | 100% |  |  |  | 737.7 | 737.7 | G9 | PC1450 | ENG | PROC | GEN | MECH | Gen | QEZ3 | GEN | MEP SUB | Bill-01 | B.1.01 | MAT |
| EN-1560 |  | Review and Approval from Engineer Instrument Index | 5d | 2022-02-15 A | 2022-02-21 A | EN-1550 | 100% |  |  |  | 737.7 | 737.7 | G9 | PC1460 | ENG | PROC | GEN | MECH | Gen | QEZ3 | GEN | MEP SUB | Bill-01 | B.1.01 | MAT |
|  | 2 | **Control Philosophy** |  | 2021-08-09 | 2021-11-28 |  |  |  |  |  |  |  |  |  |  |  |  |  |  |  |  |  |  |  |  |
| EN-1570 |  | Prepare & Submit for Control Philosophy | 6d | 2021-08-09 A | 2021-08-16 A | EN-1440 | 100% |  |  | DESIGN ENGR-ELECTRICAL [36 h] | 737.7 | 737.7 | G8 | EG3640 | ENG | SHOP | TSRPS | INFRA | Gen | QEZ3 | GEN | MEP SUB | Bill-01 | B.1.01 |  |
| EN-1580 |  | Review and Comments from Engineer Control Philosophy | 8d | 2021-08-17 A | 2021-08-26 A | EN-1570 | 100% |  |  |  | 737.7 | 737.7 | G8 | EG3650 | ENG | SHOP | TSRPS | INFRA | Gen | QEZ3 | GEN | MEP SUB | Bill-01 | B.1.01 |  |
| EN-1590 |  | Incorporate Comments and Resubmit Control Philosophy | 64d | 2021-08-29 A | 2021-11-24 A | EN-1580 | 100% |  |  |  | 737.7 | 737.7 | G9 | PC1450 | ENG | PROC | GEN | MECH | Gen | QEZ3 | GEN | MEP SUB | Bill-01 | B.1.01 | MAT |
| EN-1600 |  | Review and Approval from Engineer Control Philosophy | 2d | 2021-11-25 A | 2021-11-28 A | EN-1590 | 100% |  |  |  | 737.7 | 737.7 | G9 | PC1460 | ENG | PROC | GEN | MECH | Gen | QEZ3 | GEN | MEP SUB | Bill-01 | B.1.01 | MAT |
|  | 8 | **Fire Alarm System** |  | 2021-12-07 | 2022-05-29 |  |  |  |  |  |  |  |  |  |  |  |  |  |  |  |  |  |  |  |  |
| EN-1770 |  | Prepare & Submit for Fire Alarm System | 94d | 2021-12-07 A | 2022-04-18 A | EN-1690 | 100% |  |  | DESIGN ENGR-ELECTRICAL [36 h] | 29.51 | 29.51 | G8 | EG3640 | ENG | SHOP | TSRPS | INFRA | Gen | QEZ3 | GEN | MEP SUB | Bill-01 | B.1.01 |  |
| EN-1770R |  | Prepare & Submit for Fire Alarm System | 1d | 2022-04-19 | 2022-04-19 | EN-1690, EN-1770 |  | 184d | 0d | DESIGN ENGR-ELECTRICAL [36 h] | 708.19 |  | G8 | EG3640 | ENG | SHOP | TSRPS | INFRA | Gen | QEZ3 | GEN | MEP SUB | Bill-01 | B.1.01 |  |
| EN-1780 |  | Review and Comments from Engineer Fire Alarm System | 15d | 2022-04-20 | 2022-05-15 | EN-1770, EN-1770R |  | 184d | 0d |  | 737.7 |  | G8 | EG3650 | ENG | SHOP | TSRPS | INFRA | Gen | QEZ3 | GEN | MEP SUB | Bill-01 | B.1.01 |  |
| EN-1790 |  | Incorporate Comments and Resubmit Fire Alarm System | 5d | 2022-05-16 | 2022-05-22 | EN-1780 |  | 184d | 0d |  | 737.7 |  | G9 | PC1450 | ENG | PROC | GEN | MECH | Gen | QEZ3 | GEN | MEP SUB | Bill-01 | B.1.01 | MAT |
| EN-1800 |  | Review and Approval from Engineer Fire Alarm System | 5d | 2022-05-23 | 2022-05-29 | EN-1790, EN-1880 |  | 184d | 170d |  | 737.7 |  | G9 | PC1460 | ENG | PROC | GEN | MECH | Gen | QEZ3 | GEN | MEP SUB | Bill-01 | B.1.01 | MAT |
|  | 11 | **Instrument & Control Block Diagram** |  | 2021-08-22 | 2022-05-02 |  |  |  |  |  |  |  |  |  |  |  |  |  |  |  |  |  |  |  |  |
| EN-1890 |  | Prepare & Submit for Instrument & Control Block Diagram | 24d | 2021-08-22 A | 2021-09-22 A | EN-1400 | 100% |  |  | DESIGN ENGR-ELECTRICAL [90 h] | 737.7 | 737.7 | G8 | EG3640 | ENG | SHOP | TSRPS | INFRA | Gen | QEZ3 | GEN | MEP SUB | Bill-01 | B.1.01 |  |
| EN-1900 |  | Review and Comments from Engineer Instrument & Control Block Diagram | 4d | 2021-09-23 A | 2021-09-28 A | EN-1890 | 100% |  |  |  | 737.7 | 737.7 | G8 | EG3650 | ENG | SHOP | TSRPS | INFRA | Gen | QEZ3 | GEN | MEP SUB | Bill-01 | B.1.01 |  |
| EN-1910 |  | Incorporate Comments and Resubmit Instrument & Control Block Diagram | 143d | 2021-09-29 A | 2022-04-18 A | EN-1900 | 100% |  |  |  | 29.51 | 29.51 | G9 | PC1450 | ENG | PROC | GEN | MECH | Gen | QEZ3 | GEN | MEP SUB | Bill-01 | B.1.01 | MAT |
| EN-1910R |  | Incorporate Comments and Resubmit Instrument & Control Block Diagram | 5d | 2022-04-19 | 2022-04-25 | EN-1900, EN-1910 |  | 10d | 0d |  | 708.19 |  | G9 | PC1450 | ENG | PROC | GEN | MECH | Gen | QEZ3 | GEN | MEP SUB | Bill-01 | B.1.01 | MAT |
| EN-1920 |  | Review and Approval from Engineer Instrument & Control Block Diagram | 5d | 2022-04-26 | 2022-05-02 | EN-1910, EN-1910R |  | 10d |  |  | 737.7 |  | G9 | PC1460 | ENG | PROC | GEN | MECH | Gen | QEZ3 | GEN | MEP SUB | Bill-01 | B.1.01 | MAT |
|  | 12 | **System Architecture** |  | 2021-08-22 | 2022-02-21 |  |  |  |  |  |  |  |  |  |  |  |  |  |  |  |  |  |  |  |  |
| EN-1930 |  | Prepare & Submit for System Architecture | 79d | 2021-08-22 A | 2021-12-08 A | EN-1400 | 100% |  |  | DESIGN ENGR-ELECTRICAL [36 h] | 737.7 | 737.7 | G8 | EG3640 | ENG | SHOP | TSRPS | INFRA | Gen | QEZ3 | GEN | MEP SUB | Bill-01 | B.1.01 |  |
| EN-1940 |  | Review and Comments from Engineer System Architecture | 4d | 2021-12-09 A | 2021-12-14 A | EN-1930 | 100% |  |  |  | 737.7 | 737.7 | G8 | EG3650 | ENG | SHOP | TSRPS | INFRA | Gen | QEZ3 | GEN | MEP SUB | Bill-01 | B.1.01 |  |
| EN-1950 |  | Incorporate Comments and Resubmit System Architecture | 43d | 2021-12-15 A | 2022-02-14 A | EN-1940 | 100% |  |  |  | 737.7 | 737.7 | G9 | PC1450 | ENG | PROC | GEN | MECH | Gen | QEZ3 | GEN | MEP SUB | Bill-01 | B.1.01 | MAT |
| EN-1960 |  | Review and Approval from Engineer System Architecture | 5d | 2022-02-15 A | 2022-02-21 A | EN-1950 | 100% |  |  |  | 737.7 | 737.7 | G9 | PC1460 | ENG | PROC | GEN | MECH | Gen | QEZ3 | GEN | MEP SUB | Bill-01 | B.1.01 | MAT |

Notes:
- EN-1530: Expenses: (New Expense)1 737.7
- EN-1540: Expenses: (New Expense)1 737.7
- EN-1550: Expenses: (New Expense)1 737.7
- EN-1560: Expenses: (New Expense)1 737.7
- EN-1570: Expenses: (New Expense)1 737.7
- EN-1580: Expenses: (New Expense)1 737.7
- EN-1590: Expenses: (New Expense)1 737.7
- EN-1600: Expenses: (New Expense)1 737.7
- EN-1770: Expenses: (New Expense)1 29.51
- EN-1770R: Expenses: (New Expense)1 708.19
- EN-1780: Expenses: (New Expense)1 737.7
- EN-1790: Expenses: (New Expense)1 737.7
- EN-1800: Expenses: (New Expense)1 737.7
- EN-1890: Expenses: (New Expense)1 737.7
- EN-1900: Expenses: (New Expense)1 737.7
- EN-1910: Expenses: (New Expense)1 29.51
- EN-1910R: Expenses: (New Expense)1 708.19
- EN-1920: Expenses: (New Expense)1 737.7
- EN-1930: Expenses: (New Expense)1 737.7
- EN-1940: Expenses: (New Expense)1 737.7
- EN-1950: Expenses: (New Expense)1 737.7
- EN-1960: Expenses: (New Expense)1 737.7

| ID | WBS | Activity | Duration | Start | Finish | Predecessors | Complete | Total float | Free float | Resources | Cost | Actual cost | Bill Code | 釬珛測鎢杸遙 | 02 Phase | 03 Section | 05 Sub-section | 04 Discipline | 06 Zone | 01 Project | 07 Buildings & Ext. Works | 09 Subcontractors | 10 BOQ Cost | 16 BOQ-1 | PRC-MTL | X-Utilities | user_text1 |
| --- | --- | --- | --- | --- | --- | --- | --- | --- | --- | --- | --- | --- | --- | --- | --- | --- | --- | --- | --- | --- | --- | --- | --- | --- | --- | --- | --- |
|  | 13 | **I/O List** |  | 2021-08-22 | 2022-02-21 |  |  |  |  |  |  |  |  |  |  |  |  |  |  |  |  |  |  |  |  |  |  |
| EN-1970 |  | Prepare & Submit for I/O List | 80d | 2021-08-22 A | 2021-12-09 A | EN-1400 | 100% |  |  | DESIGN ENGR-ELECTRICAL [36 h] | 737.7 | 737.7 | G8 | EG3640 | ENG | SHOP | TSRPS | INFRA | Gen | QEZ3 | GEN | MEP SUB | Bill-01 | B.1.01 |  |  |  |
| EN-1980 |  | Review and Comments from Engineer I/O List | 3d | 2021-12-12 A | 2021-12-14 A | EN-1970 | 100% |  |  |  | 737.7 | 737.7 | G8 | EG3650 | ENG | SHOP | TSRPS | INFRA | Gen | QEZ3 | GEN | MEP SUB | Bill-01 | B.1.01 |  |  |  |
| EN-1990 |  | Incorporate Comments and Resubmit I/O List | 43d | 2021-12-15 A | 2022-02-14 A | EN-1980 | 100% |  |  |  | 737.7 | 737.7 | G9 | PC1450 | ENG | PROC | GEN | MECH | Gen | QEZ3 | GEN | MEP SUB | Bill-01 | B.1.01 | MAT |  |  |
| EN-2000 |  | Review and Approval from Engineer I/O List | 5d | 2022-02-15 A | 2022-02-21 A | EN-1990 | 100% |  |  |  | 737.7 | 737.7 | G9 | PC1460 | ENG | PROC | GEN | MECH | Gen | QEZ3 | GEN | MEP SUB | Bill-01 | B.1.01 | MAT |  |  |
|  | 14 | **Interconection Wiring Diagram** |  | 2021-12-12 | 2022-05-26 |  |  |  |  |  |  |  |  |  |  |  |  |  |  |  |  |  |  |  |  |  |  |
| EN-2010 |  | Prepare & Submit for Interconnecting Diagram | 39d | 2021-12-12 A | 2022-02-02 A | PRE-1670 | 100% |  |  | DESIGN ENGR-ELECTRICAL [36 h] | 737.7 | 737.7 | G8 | EG3640 | ENG | SHOP | TSRPS | INFRA | Gen | QEZ3 | GEN | MEP SUB | Bill-01 | B.1.01 |  |  |  |
| EN-2020 |  | Review and Comments from Engineer Interconnecting Diagram | 52d | 2022-02-03 A | 2022-04-18 A | EN-2010 | 100% |  |  |  | 29.51 | 29.51 | G8 | EG3650 | ENG | SHOP | TSRPS | INFRA | Gen | QEZ3 | GEN | MEP SUB | Bill-01 | B.1.01 |  |  |  |
| EN-2020R |  | Review and Comments from Engineer Interconnecting Diagram | 15d | 2022-04-19 | 2022-05-12 | EN-2010, EN-2020 |  | 0d |  |  | 708.19 |  | G8 | EG3650 | ENG | SHOP | TSRPS | INFRA | Gen | QEZ3 | GEN | MEP SUB | Bill-01 | B.1.01 |  |  |  |
| EN-2030 |  | Incorporate Comments and Resubmit Interconnecting Diagram | 5d | 2022-05-15 | 2022-05-19 | EN-2020, EN-2020R |  | 0d |  |  | 737.7 |  | G9 | PC1450 | ENG | PROC | GEN | MECH | Gen | QEZ3 | GEN | MEP SUB | Bill-01 | B.1.01 | MAT |  |  |
| EN-2040 |  | Review and Approval from Engineer Interconnecting Diagram | 5d | 2022-05-22 | 2022-05-26 | EN-2030, EN-1920 |  | 0d |  |  | 737.7 |  | G9 | PC1460 | ENG | PROC | GEN | MECH | Gen | QEZ3 | GEN | MEP SUB | Bill-01 | B.1.01 | MAT |  |  |
|  | 15 | **FDS** |  | 2021-09-06 | 2022-03-17 |  |  |  |  |  |  |  |  |  |  |  |  |  |  |  |  |  |  |  |  |  |  |
| EN-2050 |  | Prepare & Submit for Functional Design Specs | 86d | 2021-09-06 A | 2022-01-03 A | EN-1400, EN-1970 | 100% |  |  | DESIGN ENGR-ELECTRICAL [36 h] | 737.7 | 737.7 | G8 | EG3640 | ENG | SHOP | TSRPS | INFRA | Gen | QEZ3 | GEN | MEP SUB | Bill-01 | B.1.01 |  |  |  |
| EN-2060 |  | Review and Comments from Engineer Functional Design Specs | 24d | 2022-01-04 A | 2022-02-06 A | EN-2050 | 100% |  |  |  | 737.7 | 737.7 | G8 | EG3650 | ENG | SHOP | TSRPS | INFRA | Gen | QEZ3 | GEN | MEP SUB | Bill-01 | B.1.01 |  |  |  |
| EN-2070 |  | Incorporate Comments and Resubmit Functional Design Specs | 18d | 2022-02-06 A | 2022-03-02 A | EN-2060 | 100% |  |  |  | 737.7 | 737.7 | G9 | PC1450 | ENG | PROC | GEN | MECH | Gen | QEZ3 | GEN | MEP SUB | Bill-01 | B.1.01 | MAT |  |  |
| EN-2080 |  | Review and Approval from Engineer Functional Design Specs | 12d | 2022-03-02 A | 2022-03-17 A | EN-2070 | 100% |  |  |  | 737.7 | 737.7 | G9 | PC1460 | ENG | PROC | GEN | MECH | Gen | QEZ3 | GEN | MEP SUB | Bill-01 | B.1.01 | MAT |  |  |
|  | 16 | **Hook-up Drawing** |  | 2021-09-07 | 2022-05-02 |  |  |  |  |  |  |  |  |  |  |  |  |  |  |  |  |  |  |  |  |  |  |
| EN-2090 |  | Prepare & Submit for Hook Up Drawings | 132d | 2021-09-07 A | 2022-03-10 A | EN-1400, EN-2050 | 100% |  |  | DESIGN ENGR-ELECTRICAL [36 h] | 737.7 | 737.7 | G8 | EG3640 | ENG | SHOP | TSRPS | INFRA | Gen | QEZ3 | GEN | MEP SUB | Bill-01 | B.1.01 |  |  |  |
| EN-2100 |  | Review and Comments from Engineer Hook Up Drawings | 5d | 2022-03-13 A | 2022-03-17 A | EN-2090 | 100% |  |  |  | 737.7 | 737.7 | G8 | EG3650 | ENG | SHOP | TSRPS | INFRA | Gen | QEZ3 | GEN | MEP SUB | Bill-01 | B.1.01 |  |  |  |
| EN-2110 |  | Incorporate Comments and Resubmit Hook Up Drawings | 22d | 2022-03-20 A | 2022-04-18 A | EN-2100 | 100% |  |  |  | 29.51 | 29.51 | G9 | PC1450 | ENG | PROC | GEN | MECH | Gen | QEZ3 | GEN | MEP SUB | Bill-01 | B.1.01 | MAT |  |  |
| EN-2110R |  | Incorporate Comments and Resubmit Hook Up Drawings | 5d | 2022-04-19 | 2022-04-25 | EN-2100, EN-2110 |  | 185d | 0d |  | 708.19 |  | G9 | PC1450 | ENG | PROC | GEN | MECH | Gen | QEZ3 | GEN | MEP SUB | Bill-01 | B.1.01 | MAT |  |  |
| EN-2120 |  | Review and Approval from Engineer Hook Up Drawings | 5d | 2022-04-26 | 2022-05-02 | EN-2110, EN-2110R |  | 185d |  |  | 737.7 |  | G9 | PC1460 | ENG | PROC | GEN | MECH | Gen | QEZ3 | GEN | MEP SUB | Bill-01 | B.1.01 | MAT |  |  |
|  | 2 | **Method Statement** |  | 2021-06-30 | 2022-05-12 |  |  |  |  |  |  |  |  |  |  |  |  |  |  |  |  |  |  |  |  |  |  |
|  | 3 | **Civil Works - Method Statement** |  | 2021-06-30 | 2022-04-20 |  |  |  |  |  |  |  |  |  |  |  |  |  |  |  |  |  |  |  |  |  |  |
| MS-1240 |  | Prepare & Submit Civil Works Method statement | 58d | 2021-06-30 A | 2021-09-22 A | G1010 | 100% |  |  |  | 2,926.25 | 2,926.25 | G1 | SB1240 | ENG | MS | GEN | GEN | Gen | QEZ3 | GEN |  | Bill-01 | B.1.01 |  | x | a |
| MS-1250 |  | Review/Comments/Approval from Engineer Civil Works Method statement | 1d | 2021-09-22 A | 2021-09-22 A | MS-1240 | 100% |  |  |  | 2,926.25 | 2,926.25 | G1 | SB1250 | ENG | MS | GEN | GEN | Gen | QEZ3 | GEN |  | Bill-01 | B.1.01 |  | x | a |
| MS-1260 |  | Method Statement Resubmission Civil Works Method statement | 148d | 2021-09-22 A | 2022-04-18 A | MS-1250 | 100% |  |  |  | 2,487.31 | 2,487.31 | G1 | SB1250 | ENG | MS | GEN | GEN | Gen | QEZ3 | GEN |  | Bill-01 | B.1.01 |  | x | a |
| MS-1270 |  | Review/Comments/Approval from Engineer Civil Works Method statement | 32d | 2022-03-06 A | 2022-04-18 A | MS-1260 SS | 100% |  |  |  | 2,487.31 | 2,487.31 | G1 | SB1250 | ENG | MS | GEN | GEN | Gen | QEZ3 | GEN |  | Bill-01 | B.1.01 |  | x | a |
| MS-1260R |  | Method Statement Resubmission Civil Works Method statement | 2d | 2022-04-19 | 2022-04-20 | MS-1250, MS-1260 |  | 4.33d | 0d |  | 438.94 |  | G1 | SB1250 | ENG | MS | GEN | GEN | Gen | QEZ3 | GEN |  | Bill-01 | B.1.01 |  | x | a |
| MS-1270R |  | Review/Comments/Approval from Engineer Civil Works Method statement | 2d | 2022-04-19 | 2022-04-20 | MS-1260 SS, MS-1270, MS-1260R SS |  | 4.33d | 4d |  | 438.94 |  | G1 | SB1250 | ENG | MS | GEN | GEN | Gen | QEZ3 | GEN |  | Bill-01 | B.1.01 |  | x | a |

Notes:
- EN-1970: Expenses: (New Expense)1 737.7
- EN-1980: Expenses: (New Expense)1 737.7
- EN-1990: Expenses: (New Expense)1 737.7
- EN-2000: Expenses: (New Expense)1 737.7
- EN-2010: Expenses: (New Expense)1 737.7
- EN-2020: Expenses: (New Expense)1 29.51
- EN-2020R: Expenses: (New Expense)1 708.19
- EN-2030: Expenses: (New Expense)1 737.7
- EN-2040: Expenses: (New Expense)1 737.7
- EN-2050: Expenses: (New Expense)1 737.7
- EN-2060: Expenses: (New Expense)1 737.7
- EN-2070: Expenses: (New Expense)1 737.7
- EN-2080: Expenses: (New Expense)1 737.7
- EN-2090: Expenses: (New Expense)1 737.7
- EN-2100: Expenses: (New Expense)1 737.7
- EN-2110: Expenses: (New Expense)1 29.51
- EN-2110R: Expenses: (New Expense)1 708.19
- EN-2120: Expenses: (New Expense)1 737.7
- MS-1240: Expenses: (New Expense) 2926.25
- MS-1250: Expenses: (New Expense) 2926.25
- MS-1260: Expenses: (New Expense) 2487.31
- MS-1270: Expenses: (New Expense) 2487.31
- MS-1260R: Expenses: (New Expense) 438.94
- MS-1270R: Expenses: (New Expense) 438.94

| ID | WBS | Activity | Duration | Start | Finish | Predecessors | Complete | Total float | Free float | Cost | Actual cost | Bill Code | X-Utilities | user_text1 | 釬珛測鎢杸遙 | 02 Phase | 03 Section | 05 Sub-section | 04 Discipline | 06 Zone | 01 Project | 07 Buildings & Ext. Works | 10 BOQ Cost | 16 BOQ-1 | 13 BOQ-4 |
| --- | --- | --- | --- | --- | --- | --- | --- | --- | --- | --- | --- | --- | --- | --- | --- | --- | --- | --- | --- | --- | --- | --- | --- | --- | --- |
|  | 15 | **Mechanical Works - Method Statement** |  | 2021-09-27 | 2022-05-12 |  |  |  |  |  |  |  |  |  |  |  |  |  |  |  |  |  |  |  |  |
| MS-1000 |  | Prepare & Submit Mechanical Works Method Statement | 29d | 2021-09-27 A | 2021-11-04 A | PR-1010, MS-1250 | 100% |  |  | 2,926.25 | 2,926.25 | G1 | x | a | SB1240 | ENG | MS | GEN | GEN | Gen | QEZ3 | GEN | Bill-01 | B.1.01 |  |
| MS-1030 |  | Review/Comments/Approval from Engineer Mechanical Works Method Statement | 11d | 2021-11-04 A | 2021-11-18 A | MS-1000 | 100% |  |  | 2,926.25 | 2,926.25 | G1 | x | a | SB1250 | ENG | MS | GEN | GEN | Gen | QEZ3 | GEN | Bill-01 | B.1.01 |  |
| MS-1080 |  | Method Statement Resubmission Mechanical Works Method Statement | 106d | 2021-11-21 A | 2022-04-18 A | MS-1030 | 100% |  |  | 2,487.31 | 2,487.31 | G1 | x | a | SB1250 | ENG | MS | GEN | GEN | Gen | QEZ3 | GEN | Bill-01 | B.1.01 |  |
| MS-1120 |  | Review/Comments/Approval from Engineer Mechanical Works Method Statement | 12d | 2022-04-03 A | 2022-04-18 A | MS-1080 SS | 100% |  |  | 2,487.31 | 2,487.31 | G1 | x | a | SB1250 | ENG | MS | GEN | GEN | Gen | QEZ3 | GEN | Bill-01 | B.1.01 |  |
| MS-1080E |  | Method Statement Resubmission Mechanical Works Method Statement | 10d | 2022-04-19 | 2022-05-02 | MS-1030, MS-1080 |  | 180d | 0d | 438.94 |  | G1 | x | a | SB1250 | ENG | MS | GEN | GEN | Gen | QEZ3 | GEN | Bill-01 | B.1.01 |  |
| MS-1120R |  | Review/Comments/Approval from Engineer Mechanical Works Method Statement | 15d | 2022-04-19 | 2022-05-12 | MS-1080 SS, MS-1120, MS-1080E SS |  | 180d |  | 438.94 |  | G1 | x | a | SB1250 | ENG | MS | GEN | GEN | Gen | QEZ3 | GEN | Bill-01 | B.1.01 |  |
|  | 1 | **Electrical Works - Method Statement** |  | 2021-10-05 | 2022-05-11 |  |  |  |  |  |  |  |  |  |  |  |  |  |  |  |  |  |  |  |  |
| MS-1010 |  | Prepare & Submit Electrical Works Method Statement | 23d | 2021-10-05 A | 2021-11-04 A | PR-1010, MS-1000, MS-1280 | 100% |  |  | 2,926.25 | 2,926.25 | G1 | x | a | SB1240 | ENG | MS | GEN | GEN | Gen | QEZ3 | GEN | Bill-01 | B.1.01 |  |
| MS-1040 |  | Review/Comments/Approval from Engineer Electrical Works Method Statement | 11d | 2021-11-04 A | 2021-11-18 A | MS-1010 | 100% |  |  | 2,926.25 | 2,926.25 | G1 | x | a | SB1250 | ENG | MS | GEN | GEN | Gen | QEZ3 | GEN | Bill-01 | B.1.01 |  |
| MS-1090 |  | Method Statement Resubmission Electrical Works Method Statement | 106d | 2021-11-21 A | 2022-04-18 A | MS-1040 | 100% |  |  | 2,633.63 | 2,633.63 | G1 | x | a | SB1250 | ENG | MS | GEN | GEN | Gen | QEZ3 | GEN | Bill-01 | B.1.01 |  |
| MS-1130 |  | Review/Comments/Approval from Engineer Electrical Works Method Statement | 12d | 2022-04-03 A | 2022-04-18 A | MS-1090 SS | 100% |  |  | 2,633.63 | 2,633.63 | G1 | x | a | SB1250 | ENG | MS | GEN | GEN | Gen | QEZ3 | GEN | Bill-01 | B.1.01 |  |
| MS-1090R |  | Method Statement Resubmission Electrical Works Method Statement | 10d | 2022-04-19 | 2022-05-02 | MS-1040 |  | 115d | 0d | 292.62 |  | G1 | x | a | SB1250 | ENG | MS | GEN | GEN | Gen | QEZ3 | GEN | Bill-01 | B.1.01 |  |
| MS-1130R |  | Review/Comments/Approval from Engineer Electrical Works Method Statement | 14d | 2022-04-19 | 2022-05-11 | MS-1090 SS, MS-1130, MS-1090R SS |  | 115d | 54.67d | 292.62 |  | G1 | x | a | SB1250 | ENG | MS | GEN | GEN | Gen | QEZ3 | GEN | Bill-01 | B.1.01 |  |
|  | 16 | **SCADA/PLC - Method Statement** |  | 2021-12-21 | 2022-02-27 |  |  |  |  |  |  |  |  |  |  |  |  |  |  |  |  |  |  |  |  |
| MS-1110 |  | Prepare & Submit PLC/SCADA installation Method Statement | 13d | 2021-12-21 A | 2022-01-06 A | PR-1010, MS-1010, MS-1320, MS-1340 | 100% |  |  | 2,926.25 | 2,926.25 | G1 | x | a | SB1240 | ENG | MS | GEN | GEN | Gen | QEZ3 | GEN | Bill-01 | B.1.01 |  |
| MS-1170 |  | Review/Comments/Approval from Engineer PLC/SCADA installation Method Statement | 1d | 2022-01-06 A | 2022-01-06 A | MS-1110 | 100% |  |  | 2,926.25 | 2,926.25 | G1 | x | a | SB1250 | ENG | MS | GEN | GEN | Gen | QEZ3 | GEN | Bill-01 | B.1.01 |  |
| MS-1210 |  | Method Statement Resubmission PLC/SCADA installation Method Statement | 25d | 2022-01-09 A | 2022-02-13 A | MS-1170 | 100% |  |  | 2,926.25 | 2,926.25 | G1 | x | a | SB1250 | ENG | MS | GEN | GEN | Gen | QEZ3 | GEN | Bill-01 | B.1.01 |  |
| MS-1230 |  | Review/Comments/Approval from Engineer PLC/SCADA installation Method Statement | 11d | 2022-02-13 A | 2022-02-27 A | MS-1210 | 100% |  |  | 2,926.25 | 2,926.25 | G1 | x | a | SB1250 | ENG | MS | GEN | GEN | Gen | QEZ3 | GEN | Bill-01 | B.1.01 |  |
|  | 2 | **Field Instrument Works - Method Statement** |  | 2021-09-07 | 2022-05-12 |  |  |  |  |  |  |  |  |  |  |  |  |  |  |  |  |  |  |  |  |
| MS-1280 |  | Prepare & Submit Feild Instrument Works Method Statement | 78d | 2021-09-07 A | 2021-12-23 A | PR-1010, MS-1250 | 100% |  |  | 2,926.25 | 2,926.25 | G1 | x | a | SB1240 | ENG | MS | GEN | GEN | Gen | QEZ3 | GEN | Bill-04 |  | B.4.01 |
| MS-1290 |  | Review/Comments/Approval from Engineer Feild Instrument Works Method Statement | 9d | 2021-12-23 A | 2022-01-04 A | MS-1280 | 100% |  |  | 2,926.25 | 2,926.25 | G1 | x | a | SB1250 | ENG | MS | GEN | GEN | Gen | QEZ3 | GEN | Bill-04 |  | B.4.01 |
| MS-1300 |  | Method Statement Resubmission Feild Instrument Works Method Statement | 73d | 2022-01-05 A | 2022-04-18 A | MS-1290 | 100% |  |  | 2,487.31 | 2,487.31 | G1 | x | a | SB1250 | ENG | MS | GEN | GEN | Gen | QEZ3 | GEN | Bill-04 |  | B.4.01 |
| MS-1310 |  | Review/Comments/Approval from Engineer Feild Instrument Works Method Statement | 12d | 2022-04-03 A | 2022-04-18 A | MS-1300 SS | 100% |  |  | 2,487.31 | 2,487.31 | G1 | x | a | SB1250 | ENG | MS | GEN | GEN | Gen | QEZ3 | GEN | Bill-04 |  | B.4.01 |
| MS-1300R |  | Method Statement Resubmission Feild Instrument Works Method Statement | 10d | 2022-04-19 | 2022-05-02 | MS-1290, MS-1300 |  | 180d | 0d | 438.94 |  | G1 | x | a | SB1250 | ENG | MS | GEN | GEN | Gen | QEZ3 | GEN | Bill-04 |  | B.4.01 |
| MS-1310R |  | Review/Comments/Approval from Engineer Feild Instrument Works Method Statement | 15d | 2022-04-19 | 2022-05-12 | MS-1300 SS, MS-1310, MS-1300R SS |  | 180d |  | 438.94 |  | G1 | x | a | SB1250 | ENG | MS | GEN | GEN | Gen | QEZ3 | GEN | Bill-04 |  | B.4.01 |

Notes:
- MS-1000: Expenses: (New Expense) 2926.25
- MS-1030: Expenses: (New Expense) 2926.25
- MS-1080: Expenses: (New Expense) 2487.31
- MS-1120: Expenses: (New Expense) 2487.31
- MS-1080E: Expenses: (New Expense) 438.94
- MS-1120R: Expenses: (New Expense) 438.94
- MS-1010: Expenses: (New Expense) 2926.25
- MS-1040: Expenses: (New Expense) 2926.25
- MS-1090: Expenses: (New Expense) 2633.63
- MS-1130: Expenses: (New Expense) 2633.63
- MS-1090R: Expenses: (New Expense) 292.62
- MS-1130R: Expenses: (New Expense) 292.62
- MS-1110: Expenses: (New Expense) 2926.25
- MS-1170: Expenses: (New Expense) 2926.25
- MS-1210: Expenses: (New Expense) 2926.25
- MS-1230: Expenses: (New Expense) 2926.25
- MS-1280: Expenses: (New Expense) 2926.25
- MS-1290: Expenses: (New Expense) 2926.25
- MS-1300: Expenses: (New Expense) 2487.31
- MS-1310: Expenses: (New Expense) 2487.31
- MS-1300R: Expenses: (New Expense) 438.94
- MS-1310R: Expenses: (New Expense) 438.94

| ID | WBS | Activity | Duration | Start | Finish | Predecessors | Complete | Total float | Free float | Calendar | Cost | Actual cost | Bill Code | X-Utilities | user_text1 | 釬珛測鎢杸遙 | 02 Phase | 03 Section | 05 Sub-section | 04 Discipline | 06 Zone | 01 Project | 07 Buildings & Ext. Works | 10 BOQ Cost | 13 BOQ-4 | PRC-MTL | 09 Subcontractors | 12 BOQ-3 |
| --- | --- | --- | --- | --- | --- | --- | --- | --- | --- | --- | --- | --- | --- | --- | --- | --- | --- | --- | --- | --- | --- | --- | --- | --- | --- | --- | --- | --- |
|  | 4 | **Cable Laying - Method Statement** |  | 2021-10-05 | 2022-02-24 |  |  |  |  |  |  |  |  |  |  |  |  |  |  |  |  |  |  |  |  |  |  |  |
| MS-1320 |  | Prepare & Submit Cable Laying Method Statement | 51d | 2021-10-05 A | 2021-12-14 A | PR-1010, MS-1000, MS-1280 | 100% |  |  |  | 2,926.25 | 2,926.25 | G1 | x | a | SB1240 | ENG | MS | GEN | GEN | Gen | QEZ3 | GEN | Bill-04 | B.4.01 |  |  |  |
| MS-1330 |  | Review/Comments/Approval from Engineer Cable Laying Method Statement | 6d | 2021-12-15 A | 2021-12-22 A | MS-1320 | 100% |  |  |  | 2,926.25 | 2,926.25 | G1 | x | a | SB1250 | ENG | MS | GEN | GEN | Gen | QEZ3 | GEN | Bill-04 | B.4.01 |  |  |  |
| MS-1340 |  | Method Statement Resubmission Cable Laying Method Statement | 33d | 2021-12-23 A | 2022-02-07 A | MS-1330 | 100% |  |  |  | 2,926.25 | 2,926.25 | G1 | x | a | SB1250 | ENG | MS | GEN | GEN | Gen | QEZ3 | GEN | Bill-04 | B.4.01 |  |  |  |
| MS-1350 |  | Review/Comments/Approval from Engineer Cable Laying Method Statement | 13d | 2022-02-07 A | 2022-02-24 A | MS-1340 | 100% |  |  |  | 2,926.25 | 2,926.25 | G1 | x | a | SB1250 | ENG | MS | GEN | GEN | Gen | QEZ3 | GEN | Bill-04 | B.4.01 |  |  |  |
|  | PRO | **PROCUREMENT** |  | 2021-08-01 | 2023-01-30 |  |  |  |  |  |  |  |  |  |  |  |  |  |  |  |  |  |  |  |  |  |  |  |
|  | 7 | **MECHANICAL MATERIAL** |  | 2021-08-01 | 2023-01-14 |  |  |  |  |  |  |  |  |  |  |  |  |  |  |  |  |  |  |  |  |  |  |  |
|  | 11 | **DI Pipes & Fittings** |  | 2021-08-04 | 2022-06-22 |  |  |  |  |  |  |  |  |  |  |  |  |  |  |  |  |  |  |  |  |  |  |  |
| PRM-1480 |  | Submit material Technical Submittal Pipes & Fittings | 34d | 2021-08-04 A | 2021-09-20 A | G1100 FS+5d | 100% |  |  |  | 16,684.76 | 16,684.76 | G9 |  |  | PC1450 | PRC | PROC | GEN | MECH | Gen | QEZ3 | GEN | Bill-03 |  | MAT | MEP SUB | B.3.01 |
| PRM-1560 |  | Review and Comments from Engineer Pipes & Fittings | 3d | 2021-09-21 A | 2021-09-23 A | PRM-1480 | 100% |  |  |  | 16,684.76 | 16,684.76 | G9 |  |  | PC1460 | PRC | PROC | GEN | MECH | Gen | QEZ3 | GEN | Bill-03 |  | MAT | MEP SUB | B.3.01 |
| PRM-1630 |  | Incorporate Comments and Resubmit Pipes & Fittings | 22d | 2021-09-26 A | 2021-10-25 A | PRM-1560 | 100% |  |  |  | 16,684.76 | 16,684.76 | G9 |  |  | PC1450 | PRC | PROC | GEN | MECH | Gen | QEZ3 | GEN | Bill-03 |  | MAT | MEP SUB | B.3.01 |
| PRM-1680 |  | Review and Approval from Engineer Pipes & Fittings | 9d | 2021-10-25 A | 2021-11-04 A | PRM-1630 | 100% |  |  |  | 16,684.76 | 16,684.76 | G9 |  |  | PC1460 | PRC | PROC | GEN | MECH | Gen | QEZ3 | GEN | Bill-03 |  | MAT | MEP SUB | B.3.01 |
| PRM-1730 |  | Enquiry / Bid Evaluation /Placing Purchase Order Pipes & Fittings | 8d | 2021-11-04 A | 2021-11-11 A | PRM-1680 | 100% |  |  | 7 DAYS W/O HOLIDAY | 16,684.76 | 16,684.76 | G9 |  |  | PC1470 | PRC | PROC | GEN | MECH | Gen | QEZ3 | GEN | Bill-03 |  | MAT | MEP SUB | B.3.01 |
| PRM-1780 |  | Manufacture / Fabrication by Supplier /FAT inspection Pipes & Fittings | 130d | 2021-11-11 A | 2022-03-20 A | PRM-1730 | 100% |  |  | 7 DAYS W/O HOLIDAY | 16,684.76 | 16,684.76 | G9 |  |  | PC1480 | PRC | PROC | GEN | MECH | Gen | QEZ3 | GEN | Bill-03 |  | MAT | MEP SUB | B.3.01 |
| PRM-1820 |  | Shipment / Delivery to Site Pipes & Fittings | 30d | 2022-03-20 A | 2022-04-18 A | PRM-1780 | 100% |  |  | 7 DAYS W/O HOLIDAY | 50,054.29 | 50,054.29 | G9 |  |  | PC1490 | PRC | PROC | GEN | MECH | Gen | QEZ3 | GEN | Bill-03 |  | MAT | MEP SUB | B.3.01 |
| PRM-1820R |  | Shipment / Delivery to Site Pipes & Fittings | 65d | 2022-04-19 | 2022-06-22 | PRM-1780, PRM-1820 |  | 206d | 104.67d | 7 DAYS W/O HOLIDAY | 16,684.76 |  | G9 |  |  | PC1490 | PRC | PROC | GEN | MECH | Gen | QEZ3 | GEN | Bill-03 |  | MAT | MEP SUB | B.3.01 |
|  | 6 | **GRP Pipe** |  | 2021-08-01 | 2021-12-30 |  |  |  |  |  |  |  |  |  |  |  |  |  |  |  |  |  |  |  |  |  |  |  |
| PRM-2330 |  | Submit material Technical Submittal GRP Pipes & Fittings | 40d | 2021-08-01 A | 2021-09-23 A | G1100 | 100% |  |  |  | 1,637.78 | 1,637.78 | G9 |  |  | PC1450 | PRC | PROC | GEN | MECH | Gen | QEZ3 | GEN | Bill-03 |  | MAT | MEP SUB | B.3.01 |
| PRM-2340 |  | Review and Comments from Engineer GRP Pipes & Fittings | 7d | 2021-09-26 A | 2021-10-04 A | PRM-2330 | 100% |  |  |  | 1,637.78 | 1,637.78 | G9 |  |  | PC1460 | PRC | PROC | GEN | MECH | Gen | QEZ3 | GEN | Bill-03 |  | MAT | MEP SUB | B.3.01 |
| PRM-2342 |  | Incorporate Comments and Resubmit GRP Pipes & Fittings | 38d | 2021-10-04 A | 2021-11-24 A | PRM-2340 | 100% |  |  |  | 1,637.78 | 1,637.78 | G9 |  |  | PC1450 | PRC | PROC | GEN | MECH | Gen | QEZ3 | GEN | Bill-03 |  | MAT | MEP SUB | B.3.01 |
| PRM-2344 |  | Review and Approval from Engineer GRP Pipes & Fittings | 1d | 2021-10-04 A | 2021-10-04 A | PRM-2342 | 100% |  |  |  | 1,637.78 | 1,637.78 | G9 |  |  | PC1460 | PRC | PROC | GEN | MECH | Gen | QEZ3 | GEN | Bill-03 |  | MAT | MEP SUB | B.3.01 |
| PRM-2350 |  | Enquiry / Bid Evaluation /Placing Purchase Order GRP Pipes & Fittings | 52d | 2021-10-04 A | 2021-11-24 A | PRM-2344 | 100% |  |  | 7 DAYS W/O HOLIDAY | 1,637.78 | 1,637.78 | G9 |  |  | PC1470 | PRC | PROC | GEN | MECH | Gen | QEZ3 | GEN | Bill-03 |  | MAT | MEP SUB | B.3.01 |
| PRM-2360 |  | Manufacture / Fabrication by Supplier /FAT inspection GRP Pipes & Fittings | 23d | 2021-11-25 A | 2021-12-17 A | PRM-2350 | 100% |  |  | 7 DAYS W/O HOLIDAY | 1,637.78 | 1,637.78 | G9 |  |  | PC1480 | PRC | PROC | GEN | MECH | Gen | QEZ3 | GEN | Bill-03 |  | MAT | MEP SUB | B.3.01 |
| PRM-2370 |  | Shipment / Delivery to Site GRP Pipes & Fittings | 10d | 2021-12-21 A | 2021-12-30 A | PRM-2360 | 100% |  |  | 7 DAYS W/O HOLIDAY | 6,552 | 6,552 | G9 |  |  | PC1490 | PRC | PROC | GEN | MECH | Gen | QEZ3 | GEN | Bill-03 |  | MAT | MEP SUB | B.3.01 |

Notes:
- MS-1320: Expenses: (New Expense) 2926.25
- MS-1330: Expenses: (New Expense) 2926.25
- MS-1340: Expenses: (New Expense) 2926.25
- MS-1350: Expenses: (New Expense) 2926.25
- PRM-1480: Expenses: (New Expense) 16684.8
- PRM-1560: Expenses: (New Expense) 16684.8
- PRM-1630: Expenses: (New Expense) 16684.8
- PRM-1680: Expenses: (New Expense) 16684.8
- PRM-1730: Expenses: (New Expense) 16684.8
- PRM-1780: Expenses: (New Expense) 16684.8
- PRM-1820: Expenses: (New Expense) 50054.3
- PRM-1820R: Expenses: (New Expense) 16684.8
- PRM-2330: Expenses: (New Expense) 1637.78
- PRM-2340: Expenses: (New Expense) 1637.78
- PRM-2342: Expenses: (New Expense) 1637.78
- PRM-2344: Expenses: (New Expense) 1637.78
- PRM-2350: Expenses: (New Expense) 1637.78
- PRM-2360: Expenses: (New Expense) 1637.78
- PRM-2370: Expenses: (New Expense) 6552

| ID | WBS | Activity | Duration | Start | Finish | Predecessors | Complete | Total float | Free float | Calendar | Cost | Actual cost | Bill Code | PRC-MTL | 釬珛測鎢杸遙 | 02 Phase | 03 Section | 05 Sub-section | 04 Discipline | 06 Zone | 01 Project | 07 Buildings & Ext. Works | 09 Subcontractors | 10 BOQ Cost | 12 BOQ-3 |
| --- | --- | --- | --- | --- | --- | --- | --- | --- | --- | --- | --- | --- | --- | --- | --- | --- | --- | --- | --- | --- | --- | --- | --- | --- | --- |
|  | 8 | **Macerator** |  | 2021-08-08 | 2023-01-01 |  |  |  |  |  |  |  |  |  |  |  |  |  |  |  |  |  |  |  |  |
| PRM-1050 |  | Submit material Technical Submittal of Macerator | 35d | 2021-08-08 A | 2021-09-23 A | G1100 FS+8d | 100% |  |  |  | 76,641.75 | 76,641.75 | G9 | MAT | PC1450 | PRC | PROC | GEN | INST | Gen | QEZ3 | GEN | MEP SUB | Bill-03 | B.3.01 |
| PRM-1120 |  | Review and Comments from Engineer of Macerator | 8d | 2021-09-26 A | 2021-10-05 A | PRM-1050 | 100% |  |  |  | 76,641.75 | 76,641.75 | G9 | MAT | PC1460 | PRC | PROC | GEN | INST | Gen | QEZ3 | GEN | MEP SUB | Bill-03 | B.3.01 |
| PRM-1190 |  | Incorporate Comments and Resubmit of Macerator | 57d | 2021-10-06 A | 2021-12-23 A | PRM-1120 | 100% |  |  |  | 76,641.75 | 76,641.75 | G9 | MAT | PC1450 | PRC | PROC | GEN | MECH | Gen | QEZ3 | GEN | MEP SUB | Bill-03 | B.3.01 |
| PRM-1330 |  | Enquiry / Bid Evaluation /Placing Purchase Order of Macerator | 17d | 2021-12-10 A | 2021-12-26 A | PRM-1260 | 100% |  |  | 7 DAYS W/O HOLIDAY | 76,641.75 | 76,641.75 | G9 | MAT | PC1470 | PRC | PROC | GEN | INST | Gen | QEZ3 | GEN | MEP SUB | Bill-03 | B.3.01 |
| PRM-1260 |  | Review and Approval from Engineer of Macerator | 23d | 2021-12-26 A | 2022-01-25 A | PRM-1190 | 100% |  |  |  | 76,641.75 | 76,641.75 | G9 | MAT | PC1460 | PRC | PROC | GEN | MECH | Gen | QEZ3 | GEN | MEP SUB | Bill-03 | B.3.01 |
| PRM-1400 |  | Manufacture / Fabrication by Supplier /FAT inspection of Macerator | 218d | 2022-04-19 | 2022-11-22 | PRM-1330 |  | 19d | 0d | 7 DAYS W/O HOLIDAY | 76,641.75 |  | G9 | MAT | PC1480 | PRC | PROC | GEN | INST | Gen | QEZ3 | GEN | MEP SUB | Bill-03 | B.3.01 |
| PRM-1580 |  | Shipment / Delivery to of Macerator | 40d | 2022-11-23 | 2023-01-01 | PRM-1400 |  | 19d | 17d | 7 DAYS W/O HOLIDAY | 306,567 |  | G9 | MAT | PC1490 | PRC | PROC | GEN | INST | Gen | QEZ3 | GEN | MEP SUB | Bill-03 | B.3.01 |
|  | 4 | **Odour Control Unit** |  | 2021-08-11 | 2023-01-14 |  |  |  |  |  |  |  |  |  |  |  |  |  |  |  |  |  |  |  |  |
| PRM-1980 |  | Submit material Technical Submittal Odour Control Unit | 34d | 2021-08-11 A | 2021-09-27 A | G1100 FS+12d | 100% |  |  |  | 54,577 | 54,577 | G9 | MAT | PC1450 | PRC | PROC | GEN | MECH | Gen | QEZ3 | GEN | MEP SUB | Bill-03 | B.3.01 |
| PRM-1990 |  | Review and Comments from Engineer Odour Control Unit | 2d | 2021-09-28 A | 2021-09-29 A | PRM-1980 | 100% |  |  |  | 54,577 | 54,577 | G9 | MAT | PC1460 | PRC | PROC | GEN | MECH | Gen | QEZ3 | GEN | MEP SUB | Bill-03 | B.3.01 |
| PRM-1992 |  | Incorporate Comments and Resubmit Odour Control Unit | 85d | 2021-09-30 A | 2022-01-26 A | PRM-1990 | 100% |  |  |  | 54,577 | 54,577 | G9 | MAT | PC1450 | PRC | PROC | GEN | MECH | Gen | QEZ3 | GEN | MEP SUB | Bill-03 | B.3.01 |
| PRM-2000 |  | Enquiry / Bid Evaluation /Placing Purchase Order Odour Control Unit | 92d | 2021-11-26 A | 2022-02-25 A | PRM-1994 | 100% |  |  | 7 DAYS W/O HOLIDAY | 54,577 | 54,577 | G9 | MAT | PC1470 | PRC | PROC | GEN | MECH | Gen | QEZ3 | GEN | MEP SUB | Bill-03 | B.3.01 |
| PRM-1994 |  | Review and Approval from Engineer Odour Control Unit | 9d | 2022-01-19 A | 2022-01-31 A | PRM-1992 | 100% |  |  |  | 54,577 | 54,577 | G9 | MAT | PC1460 | PRC | PROC | GEN | MECH | Gen | QEZ3 | GEN | MEP SUB | Bill-03 | B.3.01 |
| PRM-2010 |  | Manufacture / Fabrication by Supplier /FAT inspection Odour Control Unit | 52d | 2022-02-25 A | 2022-04-17 A | PRM-2000 | 100% |  |  | 7 DAYS W/O HOLIDAY | 32,746.2 | 32,746.2 | G9 | MAT | PC1480 | PRC | PROC | GEN | MECH | Gen | QEZ3 | GEN | MEP SUB | Bill-03 | B.3.01 |
| PRM-2010R |  | Manufacture / Fabrication by Supplier /FAT inspection Odour Control Unit | 241d | 2022-04-19 | 2022-12-15 | PRM-2000, PRM-2010 |  | 1d | 0d | 7 DAYS W/O HOLIDAY | 21,830.8 |  | G9 | MAT | PC1480 | PRC | PROC | GEN | MECH | Gen | QEZ3 | GEN | MEP SUB | Bill-03 | B.3.01 |
| PRM-2020 |  | Shipment / Delivery to Site Odour Control Unit | 30d | 2022-12-16 | 2023-01-14 | PRM-2010, PRM-2010R |  | 1d | 0d | 7 DAYS W/O HOLIDAY | 218,307.99 |  | G9 | MAT | PC1490 | PRC | PROC | GEN | MECH | Gen | QEZ3 | GEN | MEP SUB | Bill-03 | B.3.01 |
|  | 1 | **Manual Screen** |  | 2021-08-08 | 2022-10-25 |  |  |  |  |  |  |  |  |  |  |  |  |  |  |  |  |  |  |  |  |
| PRM-2380 |  | Submit material Technical Submittal of Manual Screen | 35d | 2021-08-08 A | 2021-09-23 A | G1100 FS+8d | 100% |  |  |  | 1,576.72 | 1,576.72 | G9 | MAT | PC1450 | PRC | PROC | GEN | INST | Gen | QEZ3 | GEN | MEP SUB | Bill-03 | B.3.02 |
| PRM-2390 |  | Review and Comments from Engineer of Manual Screen | 20d | 2021-09-26 A | 2021-10-21 A | PRM-2380 | 100% |  |  |  | 1,576.72 | 1,576.72 | G9 | MAT | PC1460 | PRC | PROC | GEN | INST | Gen | QEZ3 | GEN | MEP SUB | Bill-03 | B.3.02 |
| PRM-2430 |  | Incorporate Comments and Resubmit of Manual Screen | 10d | 2021-09-26 A | 2021-10-07 A | PRM-2390 | 100% |  |  |  | 1,576.72 | 1,576.72 | G9 | MAT | PC1450 | PRC | PROC | GEN | MECH | Gen | QEZ3 | GEN | MEP SUB | Bill-03 | B.3.02 |
| PRM-2440 |  | Review and Approval from Engineer of Manual Screen | 55d | 2021-10-10 A | 2021-12-23 A | PRM-2430 | 100% |  |  |  | 1,576.72 | 1,576.72 | G9 | MAT | PC1460 | PRC | PROC | GEN | MECH | Gen | QEZ3 | GEN | MEP SUB | Bill-03 | B.3.02 |
| PRM-2400 |  | Enquiry / Bid Evaluation /Placing Purchase Order of Manual Screen | 129d | 2021-12-10 A | 2022-04-17 A | PRM-2440 | 100% |  |  | 7 DAYS W/O HOLIDAY | 1,261.38 | 1,261.38 | G9 | MAT | PC1470 | PRC | PROC | GEN | INST | Gen | QEZ3 | GEN | MEP SUB | Bill-03 | B.3.02 |
| PRM-2410 |  | Manufacture / Fabrication by Supplier /FAT inspection of Manual Screen | 123d | 2021-12-16 A | 2022-04-17 A | PRM-2400 SS | 100% |  |  | 7 DAYS W/O HOLIDAY | 315.34 | 315.34 | G9 | MAT | PC1480 | PRC | PROC | GEN | INST | Gen | QEZ3 | GEN | MEP SUB | Bill-03 | B.3.02 |
| PRM-2400R |  | Enquiry / Bid Evaluation /Placing Purchase Order of Manual Screen | 10d | 2022-04-19 | 2022-04-28 | PRM-2440, PRM-2400 |  | 87d | 0d | 7 DAYS W/O HOLIDAY | 315.34 |  | G9 | MAT | PC1470 | PRC | PROC | GEN | INST | Gen | QEZ3 | GEN | MEP SUB | Bill-03 | B.3.02 |
| PRM-2410R |  | Manufacture / Fabrication by Supplier /FAT inspection of Manual Screen | 150d | 2022-04-19 | 2022-09-15 | PRM-2400 SS, PRM-2410, PRM-2400R SS |  | 87d | 0d | 7 DAYS W/O HOLIDAY | 1,261.38 |  | G9 | MAT | PC1480 | PRC | PROC | GEN | INST | Gen | QEZ3 | GEN | MEP SUB | Bill-03 | B.3.02 |
| PRM-2420 |  | Shipment / Delivery to of Manual Screen | 40d | 2022-09-16 | 2022-10-25 | PRM-2410, PRM-2410R |  | 87d | 85d | 7 DAYS W/O HOLIDAY | 6,306.9 |  | G9 | MAT | PC1490 | PRC | PROC | GEN | INST | Gen | QEZ3 | GEN | MEP SUB | Bill-03 | B.3.02 |

Notes:
- PRM-1050: Expenses: (New Expense) 76641.8
- PRM-1120: Expenses: (New Expense) 76641.8
- PRM-1190: Expenses: (New Expense) 76641.8
- PRM-1330: Expenses: (New Expense) 76641.8
- PRM-1260: Expenses: (New Expense) 76641.8
- PRM-1400: Expenses: (New Expense) 76641.8
- PRM-1580: Expenses: (New Expense) 306567
- PRM-1980: Expenses: (New Expense) 54577
- PRM-1990: Expenses: (New Expense) 54577
- PRM-1992: Expenses: (New Expense) 54577
- PRM-2000: Expenses: (New Expense) 54577
- PRM-1994: Expenses: (New Expense) 54577
- PRM-2010: Expenses: (New Expense) 32746.2
- PRM-2010R: Expenses: (New Expense) 21830.8
- PRM-2020: Expenses: (New Expense) 218308
- PRM-2380: Expenses: (New Expense) 1576.72
- PRM-2390: Expenses: (New Expense) 1576.72
- PRM-2430: Expenses: (New Expense) 1576.72
- PRM-2440: Expenses: (New Expense) 1576.72
- PRM-2400: Expenses: (New Expense) 1261.38
- PRM-2410: Expenses: (New Expense) 315.34
- PRM-2400R: Expenses: (New Expense) 315.34
- PRM-2410R: Expenses: (New Expense) 1261.38
- PRM-2420: Expenses: (New Expense) 6306.9

| ID | WBS | Activity | Duration | Start | Finish | Predecessors | Complete | Total float | Free float | Calendar | Cost | Actual cost | Bill Code | PRC-MTL | 釬珛測鎢杸遙 | 02 Phase | 03 Section | 05 Sub-section | 04 Discipline | 06 Zone | 01 Project | 07 Buildings & Ext. Works | 09 Subcontractors | 10 BOQ Cost | 12 BOQ-3 | 13 BOQ-4 |
| --- | --- | --- | --- | --- | --- | --- | --- | --- | --- | --- | --- | --- | --- | --- | --- | --- | --- | --- | --- | --- | --- | --- | --- | --- | --- | --- |
|  | 7 | **HVAC System** |  | 2021-08-19 | 2022-10-25 |  |  |  |  |  |  |  |  |  |  |  |  |  |  |  |  |  |  |  |  |  |
| PRM-2190 |  | Submit material Technical Submittal HVAC | 127d | 2021-08-19 A | 2022-02-14 A | G1100 FS+20d | 100% |  |  |  | 7,272.49 | 7,272.49 | G9 | MAT | PC1450 | PRC | PROC | GEN | MECH | Gen | QEZ3 | GEN | MEP SUB | Bill-03 | B.3.01 |  |
| PRM-2200 |  | Review and Comments from Engineer HVAC | 4d | 2022-02-15 A | 2022-02-20 A | PRM-2190 | 100% |  |  |  | 7,272.49 | 7,272.49 | G9 | MAT | PC1460 | PRC | PROC | GEN | MECH | Gen | QEZ3 | GEN | MEP SUB | Bill-03 | B.3.01 |  |
| PRM-2202 |  | Incorporate Comments and Resubmit HVAC | 6d | 2022-04-19 | 2022-04-26 | PRM-2200 |  | 63d | 0d |  | 7,272.49 |  | G9 | MAT | PC1450 | PRC | PROC | GEN | MECH | Gen | QEZ3 | GEN | MEP SUB | Bill-03 | B.3.01 |  |
| PRM-2204 |  | Review and Approval from Engineer HVAC | 5d | 2022-04-27 | 2022-05-08 | PRM-2202 |  | 63d | 0d |  | 7,272.49 |  | G9 | MAT | PC1460 | PRC | PROC | GEN | MECH | Gen | QEZ3 | GEN | MEP SUB | Bill-03 | B.3.01 |  |
| PRM-2210 |  | Enquiry / Bid Evaluation /Placing Purchase Order HVAC | 10d | 2022-05-09 | 2022-05-18 | PRM-2204 |  | 92d | 0d | 7 DAYS W/O HOLIDAY | 7,272.49 |  | G9 | MAT | PC1470 | PRC | PROC | GEN | MECH | Gen | QEZ3 | GEN | MEP SUB | Bill-03 | B.3.01 |  |
| PRM-2220 |  | Manufacture / Fabrication by Supplier /FAT inspection HVAC | 130d | 2022-05-19 | 2022-09-25 | PRM-2210 |  | 92d | 0d | 7 DAYS W/O HOLIDAY | 7,272.49 |  | G9 | MAT | PC1480 | PRC | PROC | GEN | MECH | Gen | QEZ3 | GEN | MEP SUB | Bill-03 | B.3.01 |  |
| PRM-2230 |  | Shipment / Delivery to Site HVAC | 30d | 2022-09-26 | 2022-10-25 | PRM-2220 |  | 92d | 0d | 7 DAYS W/O HOLIDAY | 29,089.95 |  | G9 | MAT | PC1490 | PRC | PROC | GEN | MECH | Gen | QEZ3 | GEN | MEP SUB | Bill-03 | B.3.01 |  |
|  | 14 | **Fuel Tank and Fuel System** |  | 2021-08-29 | 2022-09-25 |  |  |  |  |  |  |  |  |  |  |  |  |  |  |  |  |  |  |  |  |  |
| PRM-2260 |  | Submit material Technical Submittal Fuel Tank and Fuel System | 58d | 2021-08-29 A | 2021-11-16 A | G1100 FS+30d | 100% |  |  |  | 3,657.11 | 3,657.11 | G9 | MAT | PC1450 | PRC | PROC | GEN | MECH | Gen | QEZ3 | GEN | MEP SUB | Bill-03 | B.3.01 |  |
| PRM-2270 |  | Review and Comments from Engineer or Authoritie Fuel Tank and Fuel System | 60d | 2021-10-03 A | 2021-12-23 A | PRM-2260 | 100% |  |  |  | 3,657.11 | 3,657.11 | G9 | MAT | PC1460 | PRC | PROC | GEN | MECH | Gen | QEZ3 | GEN | MEP SUB | Bill-03 | B.3.01 |  |
| PRM-2272 |  | Incorporate Comments and Resubmit Fuel Tank and Fuel System | 40d | 2021-10-31 A | 2021-12-23 A | PRM-2270 | 100% |  |  |  | 3,657.11 | 3,657.11 | G9 | MAT | PC1450 | PRC | PROC | GEN | MECH | Gen | QEZ3 | GEN | MEP SUB | Bill-03 | B.3.01 |  |
| PRM-2274 |  | Review and Approval from Engineer Fuel Tank and Fuel System | 35d | 2021-11-08 A | 2021-12-26 A | PRM-2272 | 100% |  |  |  | 3,657.11 | 3,657.11 | G9 | MAT | PC1460 | PRC | PROC | GEN | MECH | Gen | QEZ3 | GEN | MEP SUB | Bill-03 | B.3.01 |  |
| PRM-2280 |  | Enquiry / Bid Evaluation /Placing Purchase Order Fuel Tank and Fuel System | 25d | 2021-11-15 A | 2021-12-09 A | PRM-2274 | 100% |  |  | 7 DAYS W/O HOLIDAY | 3,657.11 | 3,657.11 | G9 | MAT | PC1470 | PRC | PROC | GEN | MECH | Gen | QEZ3 | GEN | MEP SUB | Bill-03 | B.3.01 |  |
| PRM-2290 |  | Manufacture / Fabrication by Supplier /FAT inspection Fuel Tank and Fuel System | 131d | 2021-12-09 A | 2022-04-18 A | PRM-2280 | 100% |  |  | 7 DAYS W/O HOLIDAY | 2,559.98 | 2,559.98 | G9 | MAT | PC1480 | PRC | PROC | GEN | MECH | Gen | QEZ3 | GEN | MEP SUB | Bill-03 | B.3.01 |  |
| PRM-2290R |  | Manufacture / Fabrication by Supplier /FAT inspection Fuel Tank and Fuel System | 130d | 2022-04-19 | 2022-08-26 | PRM-2280, PRM-2290 |  | 29d | 0d | 7 DAYS W/O HOLIDAY | 1,097.13 |  | G9 | MAT | PC1480 | PRC | PROC | GEN | MECH | Gen | QEZ3 | GEN | MEP SUB | Bill-03 | B.3.01 |  |
| PRM-2300 |  | Shipment / Delivery to Site Fuel Tank and Fuel System | 30d | 2022-08-27 | 2022-09-25 | PRM-2290, PRM-2290R |  | 29d | 0d | 7 DAYS W/O HOLIDAY | 14,628.46 |  | G9 | MAT | PC1490 | PRC | PROC | GEN | MECH | Gen | QEZ3 | GEN | MEP SUB | Bill-03 | B.3.01 |  |
|  | 6 | **ELECTRICAL MATERIALS** |  | 2021-08-01 | 2023-01-29 |  |  |  |  |  |  |  |  |  |  |  |  |  |  |  |  |  |  |  |  |  |
|  | 10 | **UPS** |  | 2021-10-11 | 2023-01-15 |  |  |  |  |  |  |  |  |  |  |  |  |  |  |  |  |  |  |  |  |  |
| PRE-1100 |  | Submit material Technical Submittal UPS | 3d | 2021-10-11 A | 2021-10-13 A | G1100, EN-1960 | 100% |  |  |  | 10,450.63 | 10,450.63 | G9 | MAT | PC1450 | PRC | PROC | GEN | ELEC | Gen | QEZ3 | GEN | MEP SUB | Bill-04 |  | B.4.01 |
| PRE-1320 |  | Review and Comments from Engineer UPS | 4d | 2021-10-14 A | 2021-10-19 A | PRE-1100 | 100% |  |  |  | 10,450.63 | 10,450.63 | G9 | MAT | PC1460 | PRC | PROC | GEN | ELEC | Gen | QEZ3 | GEN | MEP SUB | Bill-04 |  | B.4.01 |
| PRE-1500 |  | Incorporate Comments and Resubmit UPS | 103d | 2021-10-20 A | 2022-03-14 A | PRE-1320 | 100% |  |  |  | 10,450.63 | 10,450.63 | G9 | MAT | PC1450 | PRC | PROC | GEN | MECH | Gen | QEZ3 | GEN | MEP SUB | Bill-04 |  | B.4.01 |
| PRE-1650 |  | Review and Approval from Engineer UPS | 5d | 2022-03-14 A | 2022-03-20 A | PRE-1500 | 100% |  |  |  | 10,450.63 | 10,450.63 | G9 | MAT | PC1460 | PRC | PROC | GEN | MECH | Gen | QEZ3 | GEN | MEP SUB | Bill-04 |  | B.4.01 |
| PRE-1810 |  | Enquiry / Bid Evaluation /Placing Purchase Order UPS | 1d | 2022-03-20 A | 2022-03-20 A | PRE-1650 | 100% |  |  | 7 DAYS W/O HOLIDAY | 10,450.63 | 10,450.63 | G9 | MAT | PC1470 | PRC | PROC | GEN | ELEC | Gen | QEZ3 | GEN | MEP SUB | Bill-04 |  | B.4.01 |
| PRE-1990 |  | Manufacture / Fabrication by Supplier /FAT inspection UPS | 30d | 2022-03-20 A | 2022-04-18 A | PRE-1810 | 100% |  |  | 7 DAYS W/O HOLIDAY | 7,315.44 | 7,315.44 | G9 | MAT | PC1480 | PRC | PROC | GEN | ELEC | Gen | QEZ3 | GEN | MEP SUB | Bill-04 |  | B.4.01 |
| PRE-1990R |  | Manufacture / Fabrication by Supplier /FAT inspection UPS | 242d | 2022-04-19 | 2022-12-16 | PRE-1810, PRE-1990 |  | 12d | 0d | 7 DAYS W/O HOLIDAY | 3,135.19 |  | G9 | MAT | PC1480 | PRC | PROC | GEN | ELEC | Gen | QEZ3 | GEN | MEP SUB | Bill-04 |  | B.4.01 |
| PRE-2190 |  | Shipment / Delivery to Site UPS | 30d | 2022-12-17 | 2023-01-15 | PRE-1990, PRE-1990R |  | 12d | 10d | 7 DAYS W/O HOLIDAY | 41,802.54 |  | G9 | MAT | PC1490 | PRC | PROC | GEN | ELEC | Gen | QEZ3 | GEN | MEP SUB | Bill-04 |  | B.4.01 |

Notes:
- PRM-2190: Expenses: (New Expense) 7272.49
- PRM-2200: Expenses: (New Expense) 7272.49
- PRM-2202: Expenses: (New Expense) 7272.49
- PRM-2204: Expenses: (New Expense) 7272.49
- PRM-2210: Expenses: (New Expense) 7272.49
- PRM-2220: Expenses: (New Expense) 7272.49
- PRM-2230: Expenses: (New Expense) 29090
- PRM-2260: Expenses: (New Expense) 3657.11
- PRM-2270: Expenses: (New Expense) 3657.11
- PRM-2272: Expenses: (New Expense) 3657.11
- PRM-2274: Expenses: (New Expense) 3657.11
- PRM-2280: Expenses: (New Expense) 3657.11
- PRM-2290: Expenses: (New Expense) 2559.98
- PRM-2290R: Expenses: (New Expense) 1097.13
- PRM-2300: Expenses: (New Expense) 14628.5
- PRE-1100: Expenses: (New Expense) 10450.6
- PRE-1320: Expenses: (New Expense) 10450.6
- PRE-1500: Expenses: (New Expense) 10450.6
- PRE-1650: Expenses: (New Expense) 10450.6
- PRE-1810: Expenses: (New Expense) 10450.6
- PRE-1990: Expenses: (New Expense) 7315.44
- PRE-1990R: Expenses: (New Expense) 3135.19
- PRE-2190: Expenses: (New Expense) 41802.5

| ID | WBS | Activity | Duration | Start | Finish | Predecessors | Complete | Total float | Free float | Calendar | Cost | Actual cost | Bill Code | PRC-MTL | 釬珛測鎢杸遙 | 02 Phase | 03 Section | 05 Sub-section | 04 Discipline | 06 Zone | 01 Project | 07 Buildings & Ext. Works | 09 Subcontractors | 10 BOQ Cost | 13 BOQ-4 |
| --- | --- | --- | --- | --- | --- | --- | --- | --- | --- | --- | --- | --- | --- | --- | --- | --- | --- | --- | --- | --- | --- | --- | --- | --- | --- |
|  | 13 | **Fire Alarm System** |  | 2021-12-21 | 2022-12-11 |  |  |  |  |  |  |  |  |  |  |  |  |  |  |  |  |  |  |  |  |
| PRI-1550 |  | Submit material Technical Submittal Fire Alarm System | 32d | 2021-12-21 A | 2022-02-02 A | G1100 FS+25d | 100% |  |  |  | 386.5 | 386.5 | G9 | MAT | PC1450 | PRC | PROC | GEN | INST | Gen | QEZ3 | GEN | MEP SUB | Bill-04 | B.4.01 |
| PRI-1600 |  | Review and Comments from Engineer Fire Alarm System | 6d | 2022-02-02 A | 2022-02-10 A | PRI-1550 | 100% |  |  |  | 386.5 | 386.5 | G9 | MAT | PC1460 | PRC | PROC | GEN | INST | Gen | QEZ3 | GEN | MEP SUB | Bill-04 | B.4.01 |
| PRI-1650 |  | Incorporate Comments and Resubmit Fire Alarm System | 4d | 2022-02-10 A | 2022-02-15 A | PRI-1600 | 100% |  |  |  | 386.5 | 386.5 | G9 | MAT | PC1450 | PRC | PROC | GEN | MECH | Gen | QEZ3 | GEN | MEP SUB | Bill-04 | B.4.01 |
| PRI-1660 |  | Review and Approval from Engineer Fire Alarm System | 44d | 2022-02-16 A | 2022-04-18 A | PRI-1650 | 100% |  |  |  | 289.87 | 289.87 | G9 | MAT | PC1460 | PRC | PROC | GEN | MECH | Gen | QEZ3 | GEN | MEP SUB | Bill-04 | B.4.01 |
| PRI-1660R |  | Review and Approval from Engineer Fire Alarm System | 5d | 2022-04-19 | 2022-04-25 | PRI-1650, PRI-1660 |  | 36d | 0d |  | 96.63 |  | G9 | MAT | PC1460 | PRC | PROC | GEN | MECH | Gen | QEZ3 | GEN | MEP SUB | Bill-04 | B.4.01 |
| PRI-1670 |  | Enquiry / Bid Evaluation /Placing Purchase Order Fire Alarm System | 10d | 2022-04-26 | 2022-05-05 | PRI-1660, PRI-1660R |  | 55d | 0d | 7 DAYS W/O HOLIDAY | 386.5 |  | G9 | MAT | PC1470 | PRC | PROC | GEN | INST | Gen | QEZ3 | GEN | MEP SUB | Bill-04 | B.4.01 |
| PRI-1680 |  | Manufacture / Fabrication by Supplier /FAT inspection Fire Alarm System | 190d | 2022-05-06 | 2022-11-11 | PRI-1670 |  | 55d | 0d | 7 DAYS W/O HOLIDAY | 386.5 |  | G9 | MAT | PC1480 | PRC | PROC | GEN | INST | Gen | QEZ3 | GEN | MEP SUB | Bill-04 | B.4.01 |
| PRI-1690 |  | Shipment / Delivery to Site Fire Alarm System | 30d | 2022-11-12 | 2022-12-11 | PRI-1680 |  | 55d | 54d | 7 DAYS W/O HOLIDAY | 1,546.5 |  | G9 | MAT | PC1490 | PRC | PROC | GEN | INST | Gen | QEZ3 | GEN | MEP SUB | Bill-04 | B.4.01 |
|  | 14 | **FM 200** |  | 2021-12-21 | 2022-09-03 |  |  |  |  |  |  |  |  |  |  |  |  |  |  |  |  |  |  |  |  |
| PRI-1770 |  | Submit material Technical Submittal FM 200 | 18d | 2021-12-21 A | 2022-01-13 A | G1100 FS+25d | 100% |  |  |  | 386.5 | 386.5 | G9 | MAT | PC1450 | PRC | PROC | GEN | INST | Gen | QEZ3 | GEN | MEP SUB | Bill-04 | B.4.01 |
| PRI-1780 |  | Review and Comments from Engineer FM 200 | 1d | 2022-01-16 A | 2022-01-16 A | PRI-1770 | 100% |  |  |  | 386.5 | 386.5 | G9 | MAT | PC1460 | PRC | PROC | GEN | INST | Gen | QEZ3 | GEN | MEP SUB | Bill-04 | B.4.01 |
| PRI-1820 |  | Incorporate Comments and Resubmit FM 200 - (Part 1) | 66d | 2022-01-16 A | 2022-04-18 A | PRI-1780 | 100% |  |  |  | 347.85 | 347.85 | G9 | MAT | PC1450 | PRC | PROC | GEN | MECH | Gen | QEZ3 | GEN | MEP SUB | Bill-04 | B.4.01 |
| PRI-1830 |  | Review and Approval from Engineer FM 200 - (Part 1) | 1d | 2022-04-18 A | 2022-04-18 A | PRI-1820 | 100% |  |  |  | 270.55 | 270.55 | G9 | MAT | PC1460 | PRC | PROC | GEN | MECH | Gen | QEZ3 | GEN | MEP SUB | Bill-04 | B.4.01 |
| PRI-1820R |  | Incorporate Comments and Resubmit FM 200 - (Part 2) | 6d | 2022-04-19 | 2022-04-26 | PRI-1780, PRI-1820 |  | 104d | 0d |  | 38.65 |  | G9 | MAT | PC1450 | PRC | PROC | GEN | MECH | Gen | QEZ3 | GEN | MEP SUB | Bill-04 | B.4.01 |
| PRI-1830R |  | Review and Approval from Engineer FM 200 - (Part 2) | 3d | 2022-04-19 | 2022-04-21 | PRI-1830 |  | 107d | 3d |  | 115.95 |  | G9 | MAT | PC1460 | PRC | PROC | GEN | MECH | Gen | QEZ3 | GEN | MEP SUB | Bill-04 | B.4.01 |
| PRI-1790 |  | Enquiry / Bid Evaluation /Placing Purchase Order FM 200 | 10d | 2022-04-27 | 2022-05-06 | PRI-1830, PRI-1820R, PRI-1830R |  | 154d | 0d | 7 DAYS W/O HOLIDAY | 386.5 |  | G9 | MAT | PC1470 | PRC | PROC | GEN | INST | Gen | QEZ3 | GEN | MEP SUB | Bill-04 | B.4.01 |
| PRI-1800 |  | Manufacture / Fabrication by Supplier /FAT inspection Fire Alarm System | 90d | 2022-05-07 | 2022-08-04 | PRI-1790 |  | 154d | 0d | 7 DAYS W/O HOLIDAY | 386.5 |  | G9 | MAT | PC1480 | PRC | PROC | GEN | INST | Gen | QEZ3 | GEN | MEP SUB | Bill-04 | B.4.01 |
| PRI-1810 |  | Shipment / Delivery to Site FM 200 | 30d | 2022-08-05 | 2022-09-03 | PRI-1800 |  | 154d | 146d | 7 DAYS W/O HOLIDAY | 1,546.5 |  | G9 | MAT | PC1490 | PRC | PROC | GEN | INST | Gen | QEZ3 | GEN | MEP SUB | Bill-04 | B.4.01 |
|  | 5 | **MCC Panel** |  | 2021-08-01 | 2022-08-21 |  |  |  |  |  |  |  |  |  |  |  |  |  |  |  |  |  |  |  |  |
| PRE-1120 |  | Submit material Technical Submittal of MCC Panel | 81d | 2021-08-01 A | 2021-11-21 A | G1100 | 100% |  |  |  | 37,297.17 | 37,297.17 | G9 | MAT | PC1450 | PRC | PROC | GEN | ELEC | Gen | QEZ3 | GEN | MEP SUB | Bill-04 | B.4.01 |
| PRE-1340 |  | Review and Comments from Engineer of MCC Panel | 9d | 2021-11-22 A | 2021-12-02 A | PRE-1120 | 100% |  |  |  | 37,297.17 | 37,297.17 | G9 | MAT | PC1460 | PRC | PROC | GEN | ELEC | Gen | QEZ3 | GEN | MEP SUB | Bill-04 | B.4.01 |
| PRE-1520 |  | Incorporate Comments and Resubmit of MCC Panel | 46d | 2021-12-05 A | 2022-02-06 A | PRE-1340 | 100% |  |  |  | 37,297.17 | 37,297.17 | G9 | MAT | PC1450 | PRC | PROC | GEN | MECH | Gen | QEZ3 | GEN | MEP SUB | Bill-04 | B.4.01 |
| PRE-1830 |  | Enquiry / Bid Evaluation /Placing Purchase Order of MCC Panel | 54d | 2022-01-10 A | 2022-03-04 A | PRE-1670 | 100% |  |  | 7 DAYS W/O HOLIDAY | 37,297.17 | 37,297.17 | G9 | MAT | PC1470 | PRC | PROC | GEN | ELEC | Gen | QEZ3 | GEN | MEP SUB | Bill-04 | B.4.01 |
| PRE-1670 |  | Review and Approval from Engineer of MCC Panel | 24d | 2022-02-06 A | 2022-03-10 A | PRE-1520 | 100% |  |  |  | 37,297.17 | 37,297.17 | G9 | MAT | PC1460 | PRC | PROC | GEN | MECH | Gen | QEZ3 | GEN | MEP SUB | Bill-04 | B.4.01 |
| PRE-2010 |  | Manufacture / Fabrication by Supplier /FAT inspection of MCC Panel | 45d | 2022-03-04 A | 2022-04-17 A | PRE-1830 | 100% |  |  | 7 DAYS W/O HOLIDAY | 18,648.59 | 18,648.59 | G9 | MAT | PC1480 | PRC | PROC | GEN | ELEC | Gen | QEZ3 | GEN | MEP SUB | Bill-04 | B.4.01 |
| PRE-2010R |  | Manufacture / Fabrication by Supplier /FAT inspection of MCC Panel | 110d | 2022-04-19 | 2022-08-06 | PRE-1830, PRE-2010 |  | 112d | 0d | 7 DAYS W/O HOLIDAY | 18,648.58 |  | G9 | MAT | PC1480 | PRC | PROC | GEN | ELEC | Gen | QEZ3 | GEN | MEP SUB | Bill-04 | B.4.01 |
| PRE-2160 |  | Shipment / Delivery to Site of MCC Panel | 15d | 2022-08-07 | 2022-08-21 | PRE-2010, PRE-2010R |  | 112d | 0d | 7 DAYS W/O HOLIDAY | 149,188.69 |  | G9 | MAT | PC1490 | PRC | PROC | GEN | ELEC | Gen | QEZ3 | GEN | MEP SUB | Bill-04 | B.4.01 |

Notes:
- PRI-1550: Expenses: (New Expense) 386.5
- PRI-1600: Expenses: (New Expense) 386.5
- PRI-1650: Expenses: (New Expense) 386.5
- PRI-1660: Expenses: (New Expense) 289.87
- PRI-1660R: Expenses: (New Expense) 96.63
- PRI-1670: Expenses: (New Expense) 386.5
- PRI-1680: Expenses: (New Expense) 386.5
- PRI-1690: Expenses: (New Expense) 1546.5
- PRI-1770: Expenses: (New Expense) 386.5
- PRI-1780: Expenses: (New Expense) 386.5
- PRI-1820: Expenses: (New Expense) 347.85
- PRI-1830: Expenses: (New Expense) 270.55
- PRI-1820R: Expenses: (New Expense) 38.65
- PRI-1830R: Expenses: (New Expense) 115.95
- PRI-1790: Expenses: (New Expense) 386.5
- PRI-1800: Expenses: (New Expense) 386.5
- PRI-1810: Expenses: (New Expense) 1546.5
- PRE-1120: Expenses: (New Expense) 37297.2
- PRE-1340: Expenses: (New Expense) 37297.2
- PRE-1520: Expenses: (New Expense) 37297.2
- PRE-1830: Expenses: (New Expense) 37297.2
- PRE-1670: Expenses: (New Expense) 37297.2
- PRE-2010: Expenses: (New Expense) 18648.6
- PRE-2010R: Expenses: (New Expense) 18648.6
- PRE-2160: Expenses: (New Expense) 149189

| ID | WBS | Activity | Duration | Start | Finish | Predecessors | Complete | Total float | Free float | Calendar | Cost | Actual cost | Bill Code | PRC-MTL | 釬珛測鎢杸遙 | 02 Phase | 03 Section | 05 Sub-section | 04 Discipline | 06 Zone | 01 Project | 07 Buildings & Ext. Works | 09 Subcontractors | 10 BOQ Cost | 13 BOQ-4 |
| --- | --- | --- | --- | --- | --- | --- | --- | --- | --- | --- | --- | --- | --- | --- | --- | --- | --- | --- | --- | --- | --- | --- | --- | --- | --- |
|  | 8 | **Junction Box** |  | 2021-08-01 | 2022-09-18 |  |  |  |  |  |  |  |  |  |  |  |  |  |  |  |  |  |  |  |  |
| PRE-1090 |  | Submit material Technical Submittal Junction Boxes | 85d | 2021-08-01 A | 2021-11-25 A | G1100 FS+15d, EN-1640 | 100% |  |  |  | 9,139.54 | 9,139.54 | G9 | MAT | PC1450 | PRC | PROC | GEN | ELEC | Gen | QEZ3 | GEN | MEP SUB | Bill-04 | B.4.01 |
| PRE-1310 |  | Review and Comments from Engineer Junction Boxes | 38d | 2021-11-28 A | 2022-01-18 A | PRE-1090 | 100% |  |  |  | 9,139.54 | 9,139.54 | G9 | MAT | PC1460 | PRC | PROC | GEN | ELEC | Gen | QEZ3 | GEN | MEP SUB | Bill-04 | B.4.01 |
| PRE-1490 |  | Incorporate Comments and Resubmit Junction Boxes | 23d | 2022-01-18 A | 2022-02-20 A | PRE-1310 | 100% |  |  |  | 9,139.54 | 9,139.54 | G9 | MAT | PC1450 | PRC | PROC | GEN | MECH | Gen | QEZ3 | GEN | MEP SUB | Bill-04 | B.4.01 |
| PRE-1640 |  | Review and Approval from Engineer Junction Boxes | 40d | 2022-02-21 A | 2022-04-17 A | PRE-1490 | 100% |  |  |  | 7,768.61 | 7,768.61 | G9 | MAT | PC1460 | PRC | PROC | GEN | MECH | Gen | QEZ3 | GEN | MEP SUB | Bill-04 | B.4.01 |
| PRE-1800 |  | Enquiry / Bid Evaluation /Placing Purchase Order Junction Boxes | 1d | 2022-04-17 A | 2022-04-17 A | PRE-1640 SS | 100% |  |  | 7 DAYS W/O HOLIDAY | 6,854.65 | 6,854.65 | G9 | MAT | PC1470 | PRC | PROC | GEN | ELEC | Gen | QEZ3 | GEN | MEP SUB | Bill-04 | B.4.01 |
| PRE-1640R |  | Review and Approval from Engineer Junction Boxes | 5d | 2022-04-19 | 2022-04-25 | PRE-1490, PRE-1640 |  | 90d | 0d |  | 1,370.93 |  | G9 | MAT | PC1460 | PRC | PROC | GEN | MECH | Gen | QEZ3 | GEN | MEP SUB | Bill-04 | B.4.01 |
| PRE-1800R |  | Enquiry / Bid Evaluation /Placing Purchase Order Junction Boxes | 10d | 2022-04-19 | 2022-04-28 | PRE-1640 SS, PRE-1800, PRE-1640R SS |  | 134d | 0d | 7 DAYS W/O HOLIDAY | 2,284.89 |  | G9 | MAT | PC1470 | PRC | PROC | GEN | ELEC | Gen | QEZ3 | GEN | MEP SUB | Bill-04 | B.4.01 |
| PRE-1980 |  | Manufacture / Fabrication by Supplier /FAT inspection Junction Boxes | 113d | 2022-04-29 | 2022-08-19 | PRE-1800, PRE-1800R |  | 134d | 0d | 7 DAYS W/O HOLIDAY | 9,139.54 |  | G9 | MAT | PC1480 | PRC | PROC | GEN | ELEC | Gen | QEZ3 | GEN | MEP SUB | Bill-04 | B.4.01 |
| PRE-2110 |  | Shipment / Delivery to Site Junction Boxes | 30d | 2022-08-20 | 2022-09-18 | PRE-1980 |  | 134d |  | 7 DAYS W/O HOLIDAY | 36,557.15 |  | G9 | MAT | PC1490 | PRC | PROC | GEN | ELEC | Gen | QEZ3 | GEN | MEP SUB | Bill-04 | B.4.01 |
|  | 11 | **VFD** |  | 2021-08-08 | 2023-01-22 |  |  |  |  |  |  |  |  |  |  |  |  |  |  |  |  |  |  |  |  |
| PRE-1020 |  | Submit material Technical Submittal VFD | 33d | 2021-08-08 A | 2021-09-21 A | G1100 FS+15d, EN-1680 | 100% |  |  |  | 1,953.69 | 1,953.69 | G9 | MAT | PC1450 | PRC | PROC | GEN | ELEC | Gen | QEZ3 | GEN | MEP SUB | Bill-04 | B.4.01 |
| PRE-1240 |  | Review and Comments from Engineer VFD | 69d | 2021-09-21 A | 2021-12-26 A | PRE-1020 | 100% |  |  |  | 1,953.69 | 1,953.69 | G9 | MAT | PC1460 | PRC | PROC | GEN | ELEC | Gen | QEZ3 | GEN | MEP SUB | Bill-04 | B.4.01 |
| PRE-1420 |  | Incorporate Comments and Resubmit VFD | 1d | 2021-12-26 A | 2021-12-26 A | PRE-1240 | 100% |  |  |  | 1,953.69 | 1,953.69 | G9 | MAT | PC1450 | PRC | PROC | GEN | MECH | Gen | QEZ3 | GEN | MEP SUB | Bill-04 | B.4.01 |
| PRE-1580 |  | Review and Approval from Engineer VFD | 1d | 2021-12-26 A | 2021-12-26 A | PRE-1420 | 100% |  |  |  | 1,953.69 | 1,953.69 | G9 | MAT | PC1460 | PRC | PROC | GEN | MECH | Gen | QEZ3 | GEN | MEP SUB | Bill-04 | B.4.01 |
| PRE-1740 |  | Enquiry / Bid Evaluation /Placing Purchase Order VFD | 89d | 2021-12-26 A | 2022-03-24 A | PRE-1580 | 100% |  |  | 7 DAYS W/O HOLIDAY | 1,953.69 | 1,953.69 | G9 | MAT | PC1470 | PRC | PROC | GEN | ELEC | Gen | QEZ3 | GEN | MEP SUB | Bill-04 | B.4.01 |
| PRE-1920 |  | Manufacture / Fabrication by Supplier /FAT inspection VFD | 25d | 2022-03-24 A | 2022-04-17 A | PRE-1740 | 100% |  |  | 7 DAYS W/O HOLIDAY | 390.74 | 390.74 | G9 | MAT | PC1480 | PRC | PROC | GEN | ELEC | Gen | QEZ3 | GEN | MEP SUB | Bill-04 | B.4.01 |
| PRE-1920R |  | Manufacture / Fabrication by Supplier /FAT inspection VFD | 239d | 2022-04-19 | 2022-12-13 | PRE-1740, PRE-1920 |  | 1d | 0d | 7 DAYS W/O HOLIDAY | 1,562.95 |  | G9 | MAT | PC1480 | PRC | PROC | GEN | ELEC | Gen | QEZ3 | GEN | MEP SUB | Bill-04 | B.4.01 |
| PRE-2120 |  | Shipment / Delivery to Site VFD | 40d | 2022-12-14 | 2023-01-22 | PRE-1920, PRE-1920R |  | 1d | 0d | 7 DAYS W/O HOLIDAY | 7,814.76 |  | G9 | MAT | PC1490 | PRC | PROC | GEN | ELEC | Gen | QEZ3 | GEN | MEP SUB | Bill-04 | B.4.01 |
|  | 12 | **Standby Diesel Generator** |  | 2021-11-09 | 2022-09-07 |  |  |  |  |  |  |  |  |  |  |  |  |  |  |  |  |  |  |  |  |
| PRE-1110 |  | Submit material Technical Submittal DG Set | 10d | 2021-11-09 A | 2021-11-22 A | EN-1660 | 100% |  |  |  | 38,097.38 | 38,097.38 | G9 | MAT | PC1450 | PRC | PROC | GEN | ELEC | Gen | QEZ3 | GEN | MEP SUB | Bill-04 | B.4.01 |
| PRE-1330 |  | Review and Comments from Engineer DG Set | 3d | 2021-11-22 A | 2021-11-24 A | PRE-1110 | 100% |  |  |  | 38,097.38 | 38,097.38 | G9 | MAT | PC1460 | PRC | PROC | GEN | ELEC | Gen | QEZ3 | GEN | MEP SUB | Bill-04 | B.4.01 |
| PRE-1510 |  | Incorporate Comments and Resubmit DG Set | 53d | 2021-11-24 A | 2022-02-06 A | PRE-1330 | 100% |  |  |  | 38,097.38 | 38,097.38 | G9 | MAT | PC1450 | PRC | PROC | GEN | MECH | Gen | QEZ3 | GEN | MEP SUB | Bill-04 | B.4.01 |
| PRE-1660 |  | Review and Approval from Engineer DG Set | 50d | 2022-02-06 A | 2022-04-17 A | PRE-1510 | 100% |  |  |  | 34,287.64 | 34,287.64 | G9 | MAT | PC1460 | PRC | PROC | GEN | MECH | Gen | QEZ3 | GEN | MEP SUB | Bill-04 | B.4.01 |
| PRE-1820 |  | Enquiry / Bid Evaluation /Placing Purchase Order DG Set | 71d | 2022-02-06 A | 2022-04-17 A | PRE-1660 SS | 100% |  |  | 7 DAYS W/O HOLIDAY | 34,287.64 | 34,287.64 | G9 | MAT | PC1470 | PRC | PROC | GEN | ELEC | Gen | QEZ3 | GEN | MEP SUB | Bill-04 | B.4.01 |
| PRE-1660R |  | Review and Approval from Engineer DG Set | 5d | 2022-04-19 | 2022-04-25 | PRE-1510, PRE-1660 |  | 30d | 0d |  | 3,809.74 |  | G9 | MAT | PC1460 | PRC | PROC | GEN | MECH | Gen | QEZ3 | GEN | MEP SUB | Bill-04 | B.4.01 |
| PRE-1820R |  | Enquiry / Bid Evaluation /Placing Purchase Order DG Set | 5d | 2022-04-26 | 2022-04-30 | PRE-1660 SS, PRE-1820, PRE-1660R |  | 47d | 0d | 7 DAYS W/O HOLIDAY | 3,809.74 |  | G9 | MAT | PC1470 | PRC | PROC | GEN | ELEC | Gen | QEZ3 | GEN | MEP SUB | Bill-04 | B.4.01 |
| PRE-2000 |  | Manufacture / Fabrication by Supplier /FAT inspection DG Set | 100d | 2022-05-01 | 2022-08-08 | PRE-1820, PRE-1820R |  | 47d | 0d | 7 DAYS W/O HOLIDAY | 38,097.38 |  | G9 | MAT | PC1480 | PRC | PROC | GEN | ELEC | Gen | QEZ3 | GEN | MEP SUB | Bill-04 | B.4.01 |
| PRE-2200 |  | Shipment / Delivery to Site DG Set | 30d | 2022-08-09 | 2022-09-07 | PRE-2000 |  | 47d | 18d | 7 DAYS W/O HOLIDAY | 152,389.51 |  | G9 | MAT | PC1490 | PRC | PROC | GEN | ELEC | Gen | QEZ3 | GEN | MEP SUB | Bill-04 | B.4.01 |

Notes:
- PRE-1090: Expenses: (New Expense) 9139.54
- PRE-1310: Expenses: (New Expense) 9139.54
- PRE-1490: Expenses: (New Expense) 9139.54
- PRE-1640: Expenses: (New Expense) 7768.61
- PRE-1800: Expenses: (New Expense) 6854.65
- PRE-1640R: Expenses: (New Expense) 1370.93
- PRE-1800R: Expenses: (New Expense) 2284.89
- PRE-1980: Expenses: (New Expense) 9139.54
- PRE-2110: Expenses: (New Expense) 36557.2
- PRE-1020: Expenses: (New Expense) 1953.69
- PRE-1240: Expenses: (New Expense) 1953.69
- PRE-1420: Expenses: (New Expense) 1953.69
- PRE-1580: Expenses: (New Expense) 1953.69
- PRE-1740: Expenses: (New Expense) 1953.69
- PRE-1920: Expenses: (New Expense) 390.74
- PRE-1920R: Expenses: (New Expense) 1562.95
- PRE-2120: Expenses: (New Expense) 7814.76
- PRE-1110: Expenses: (New Expense) 38097.4
- PRE-1330: Expenses: (New Expense) 38097.4
- PRE-1510: Expenses: (New Expense) 38097.4
- PRE-1660: Expenses: (New Expense) 34287.6
- PRE-1820: Expenses: (New Expense) 34287.6
- PRE-1660R: Expenses: (New Expense) 3809.74
- PRE-1820R: Expenses: (New Expense) 3809.74
- PRE-2000: Expenses: (New Expense) 38097.4
- PRE-2200: Expenses: (New Expense) 152390

| ID | WBS | Activity | Duration | Start | Finish | Predecessors | Complete | Total float | Free float | Calendar | Cost | Actual cost | Bill Code | PRC-MTL | 釬珛測鎢杸遙 | 02 Phase | 03 Section | 05 Sub-section | 04 Discipline | 06 Zone | 01 Project | 07 Buildings & Ext. Works | 09 Subcontractors | 10 BOQ Cost | 13 BOQ-4 |
| --- | --- | --- | --- | --- | --- | --- | --- | --- | --- | --- | --- | --- | --- | --- | --- | --- | --- | --- | --- | --- | --- | --- | --- | --- | --- |
|  | 9 | **Power Cables** |  | 2021-11-10 | 2022-05-19 |  |  |  |  |  |  |  |  |  |  |  |  |  |  |  |  |  |  |  |  |
| PRE-1070 |  | Submit material Technical Submittal Power Cables | 6d | 2021-11-10 A | 2021-11-17 A | G1100 FS+30d, EN-1520, EN-3050 | 100% |  |  |  | 5,291.19 | 5,291.19 | G9 | MAT | PC1450 | PRC | PROC | GEN | ELEC | Gen | QEZ3 | GEN | MEP SUB | Bill-04 | B.4.01 |
| PRE-1290 |  | Review and Comments from Engineer Power Cables | 3d | 2021-11-18 A | 2021-11-22 A | PRE-1070 | 100% |  |  |  | 5,291.19 | 5,291.19 | G9 | MAT | PC1460 | PRC | PROC | GEN | ELEC | Gen | QEZ3 | GEN | MEP SUB | Bill-04 | B.4.01 |
| PRE-1470 |  | Incorporate Comments and Resubmit Power Cables | 72d | 2021-11-23 A | 2022-03-03 A | PRE-1290 | 100% |  |  |  | 5,291.19 | 5,291.19 | G9 | MAT | PC1450 | PRC | PROC | GEN | MECH | Gen | QEZ3 | GEN | MEP SUB | Bill-04 | B.4.01 |
| PRE-1620 |  | Review and Approval from Engineer Power Cables | 6d | 2022-03-06 A | 2022-03-13 A | PRE-1470 | 100% |  |  |  | 5,291.19 | 5,291.19 | G9 | MAT | PC1460 | PRC | PROC | GEN | MECH | Gen | QEZ3 | GEN | MEP SUB | Bill-04 | B.4.01 |
| PRE-1780 |  | Enquiry / Bid Evaluation /Placing Purchase Order Power Cables | 1d | 2022-03-14 A | 2022-03-14 A | PRE-1620 | 100% |  |  | 7 DAYS W/O HOLIDAY | 5,291.19 | 5,291.19 | G9 | MAT | PC1470 | PRC | PROC | GEN | ELEC | Gen | QEZ3 | GEN | MEP SUB | Bill-04 | B.4.01 |
| PRE-1960 |  | Manufacture / Fabrication by Supplier /FAT inspection Power Cables - (Part 1) | 1d | 2022-04-18 A | 2022-04-18 A | PRE-1780 | 100% |  |  | 7 DAYS W/O HOLIDAY | 1,058.24 | 1,058.24 | G9 | MAT | PC1480 | PRC | PROC | GEN | ELEC | Gen | QEZ3 | GEN | MEP SUB | Bill-04 | B.4.01 |
| PRE-1960R |  | Manufacture / Fabrication by Supplier /FAT inspection Power Cables - (Part 2) | 1d | 2022-04-19 | 2022-04-19 | PRE-1960 |  | 269d | 0d | 7 DAYS W/O HOLIDAY | 4,232.95 |  | G9 | MAT | PC1480 | PRC | PROC | GEN | ELEC | Gen | QEZ3 | GEN | MEP SUB | Bill-04 | B.4.01 |
| PRE-2130 |  | Shipment / Delivery to Site Power Cables | 30d | 2022-04-20 | 2022-05-19 | PRE-1960R |  | 269d | 268d | 7 DAYS W/O HOLIDAY | 21,164.76 |  | G9 | MAT | PC1490 | PRC | PROC | GEN | ELEC | Gen | QEZ3 | GEN | MEP SUB | Bill-04 | B.4.01 |
|  | 4 | **Cable Tray and Accessories** |  | 2021-11-15 | 2022-05-08 |  |  |  |  |  |  |  |  |  |  |  |  |  |  |  |  |  |  |  |  |
| PRE-1080 |  | Submit material Technical Submittal Cable Tray and Accessories | 8d | 2021-11-15 A | 2021-11-24 A | PRE-1120, PRE-1670, PRE-1830 | 100% |  |  |  | 870.61 | 870.61 | G9 | MAT | PC1450 | PRC | PROC | GEN | ELEC | Gen | QEZ3 | GEN | MEP SUB | Bill-04 | B.4.01 |
| PRE-1300 |  | Review and Comments from Engineer Cable Tray and Accessories | 15d | 2021-11-25 A | 2021-12-15 A | PRE-1080 | 100% |  |  |  | 870.61 | 870.61 | G9 | MAT | PC1460 | PRC | PROC | GEN | ELEC | Gen | QEZ3 | GEN | MEP SUB | Bill-04 | B.4.01 |
| PRE-1480 |  | Incorporate Comments and Resubmit | 48d | 2021-12-07 A | 2022-02-13 A | PRE-1300 | 100% |  |  |  | 870.61 | 870.61 | G9 | MAT | PC1450 | PRC | PROC | GEN | MECH | Gen | QEZ3 | GEN | MEP SUB | Bill-04 | B.4.01 |
| PRE-1630 |  | Review and Approval from Engineer | 4d | 2022-02-14 A | 2022-02-17 A | PRE-1480 | 100% |  |  |  | 870.61 | 870.61 | G9 | MAT | PC1460 | PRC | PROC | GEN | MECH | Gen | QEZ3 | GEN | MEP SUB | Bill-04 | B.4.01 |
| PRE-1790 |  | Enquiry / Bid Evaluation /Placing Purchase Order Cable Tray and Accessories | 1d | 2022-02-20 A | 2022-02-20 A | PRE-1630 | 100% |  |  | 7 DAYS W/O HOLIDAY | 870.61 | 870.61 | G9 | MAT | PC1470 | PRC | PROC | GEN | ELEC | Gen | QEZ3 | GEN | MEP SUB | Bill-04 | B.4.01 |
| PRE-1970 |  | Manufacture / Fabrication by Supplier /FAT inspection Cable Tray and Accessories | 29d | 2022-02-20 A | 2022-03-20 A | PRE-1790 | 100% |  |  | 7 DAYS W/O HOLIDAY | 870.61 | 870.62 | G9 | MAT | PC1480 | PRC | PROC | GEN | ELEC | Gen | QEZ3 | GEN | MEP SUB | Bill-04 | B.4.01 |
| PRE-2180 |  | Shipment / Delivery to Site Cable Tray and Accessories | 20d | 2022-04-19 | 2022-05-08 | PRE-1970 |  | 217d | 105d | 7 DAYS W/O HOLIDAY | 3,482.44 |  | G9 | MAT | PC1490 | PRC | PROC | GEN | ELEC | Gen | QEZ3 | GEN | MEP SUB | Bill-04 | B.4.01 |
|  | 6 | **Lightning & Earthing** |  | 2021-12-15 | 2022-07-17 |  |  |  |  |  |  |  |  |  |  |  |  |  |  |  |  |  |  |  |  |
| PRE-1050 |  | Submit supplier / material for approval-Lightning Protection and Earthing | 5d | 2021-12-15 A | 2021-12-21 A | G1100 FS+30d | 100% |  |  |  | 4,599.31 | 4,599.31 | G9 | MAT | PC1450 | PRC | PROC | GEN | ELEC | Gen | QEZ3 | GEN | MEP SUB | Bill-04 | B.4.01 |
| PRE-1270 |  | Review and Comments from Engineer l-Lightning Protection and Earthing | 7d | 2021-12-22 A | 2021-12-30 A | PRE-1050 | 100% |  |  |  | 4,599.31 | 4,599.31 | G9 | MAT | PC1460 | PRC | PROC | GEN | ELEC | Gen | QEZ3 | GEN | MEP SUB | Bill-04 | B.4.01 |
| PRE-1450 |  | Incorporate Comments and Resubmit Lightning Protection and Earthing | 32d | 2022-01-02 A | 2022-02-15 A | PRE-1270 | 100% |  |  |  | 4,599.31 | 4,599.31 | G9 | MAT | PC1450 | PRC | PROC | GEN | MECH | Gen | QEZ3 | GEN | MEP SUB | Bill-04 | B.4.01 |
| PRE-1600 |  | Review and Approval from Engineer Lightning Protection and Earthing | 9d | 2022-02-16 A | 2022-02-28 A | PRE-1450 | 100% |  |  |  | 4,599.31 | 4,599.31 | G9 | MAT | PC1460 | PRC | PROC | GEN | MECH | Gen | QEZ3 | GEN | MEP SUB | Bill-04 | B.4.01 |
| PRE-1760 |  | Enquiry / Bid Evaluation /Placing Purchase Orderl Lightning Protection and Earthing | 49d | 2022-02-28 A | 2022-04-17 A | PRE-1600 | 100% |  |  | 7 DAYS W/O HOLIDAY | 2,299.66 | 2,299.66 | G9 | MAT | PC1470 | PRC | PROC | GEN | ELEC | Gen | QEZ3 | GEN | MEP SUB | Bill-04 | B.4.01 |
| PRE-1760R |  | Enquiry / Bid Evaluation /Placing Purchase Orderl Lightning Protection and Earthing | 10d | 2022-04-19 | 2022-04-28 | PRE-1600, PRE-1760 |  | 210d | 0d | 7 DAYS W/O HOLIDAY | 2,299.66 |  | G9 | MAT | PC1470 | PRC | PROC | GEN | ELEC | Gen | QEZ3 | GEN | MEP SUB | Bill-04 | B.4.01 |
| PRE-1940 |  | Manufacture / Fabrication by Supplier /FAT inspectionl Lightning Protection and Earthing | 60d | 2022-04-29 | 2022-06-27 | PRE-1760, PRE-1760R |  | 210d | 0d | 7 DAYS W/O HOLIDAY | 4,599.31 |  | G9 | MAT | PC1480 | PRC | PROC | GEN | ELEC | Gen | QEZ3 | GEN | MEP SUB | Bill-04 | B.4.01 |
| PRE-2090 |  | Shipment / Delivery to Site Lightning Protection and Earthing | 20d | 2022-06-28 | 2022-07-17 | PRE-1940 |  | 210d | 208d | 7 DAYS W/O HOLIDAY | 18,397.26 |  | G9 | MAT | PC1490 | PRC | PROC | GEN | ELEC | Gen | QEZ3 | GEN | MEP SUB | Bill-04 | B.4.01 |

Notes:
- PRE-1070: Expenses: (New Expense) 5291.19
- PRE-1290: Expenses: (New Expense) 5291.19
- PRE-1470: Expenses: (New Expense) 5291.19
- PRE-1620: Expenses: (New Expense) 5291.19
- PRE-1780: Expenses: (New Expense) 5291.19
- PRE-1960: Expenses: (New Expense) 1058.24
- PRE-1960R: Expenses: (New Expense) 4232.95
- PRE-2130: Expenses: (New Expense) 21164.8
- PRE-1080: Expenses: (New Expense) 870.61
- PRE-1300: Expenses: (New Expense) 870.61
- PRE-1480: Expenses: (New Expense) 870.61
- PRE-1630: Expenses: (New Expense) 870.61
- PRE-1790: Expenses: (New Expense) 870.61
- PRE-1970: Expenses: (New Expense) 870.61
- PRE-2180: Expenses: (New Expense) 3482.44
- PRE-1050: Expenses: (New Expense) 4599.31
- PRE-1270: Expenses: (New Expense) 4599.31
- PRE-1450: Expenses: (New Expense) 4599.31
- PRE-1600: Expenses: (New Expense) 4599.31
- PRE-1760: Expenses: (New Expense) 2299.66
- PRE-1760R: Expenses: (New Expense) 2299.66
- PRE-1940: Expenses: (New Expense) 4599.31
- PRE-2090: Expenses: (New Expense) 18397.3

| ID | WBS | Activity | Duration | Start | Finish | Predecessors | Complete | Total float | Free float | Calendar | Cost | Actual cost | Bill Code | PRC-MTL | 釬珛測鎢杸遙 | 02 Phase | 03 Section | 05 Sub-section | 04 Discipline | 06 Zone | 01 Project | 07 Buildings & Ext. Works | 09 Subcontractors | 10 BOQ Cost | 13 BOQ-4 |
| --- | --- | --- | --- | --- | --- | --- | --- | --- | --- | --- | --- | --- | --- | --- | --- | --- | --- | --- | --- | --- | --- | --- | --- | --- | --- |
|  | 3 | **Electrical Wiring Devices** |  | 2021-12-15 | 2023-01-29 |  |  |  |  |  |  |  |  |  |  |  |  |  |  |  |  |  |  |  |  |
| PRE-1010 |  | Submit material Technical Submittal Wiring devices | 5d | 2021-12-15 A | 2021-12-21 A | G1100 FS+40d, EN-1760 | 100% |  |  |  | 5,651.61 | 5,651.61 | G9 | MAT | PC1450 | PRC | PROC | GEN | ELEC | Gen | QEZ3 | GEN | MEP SUB | Bill-04 | B.4.01 |
| PRE-1230 |  | Review and Comments from Engineer Wiring devices | 6d | 2021-12-22 A | 2021-12-29 A | PRE-1010 | 100% |  |  |  | 5,651.61 | 5,651.61 | G9 | MAT | PC1460 | PRC | PROC | GEN | ELEC | Gen | QEZ3 | GEN | MEP SUB | Bill-04 | B.4.01 |
| PRE-1410 |  | Incorporate Comments and Resubmit Wiring devices | 36d | 2021-12-30 A | 2022-02-20 A | PRE-1230 | 100% |  |  |  | 5,651.61 | 5,651.61 | G9 | MAT | PC1450 | PRC | PROC | GEN | MECH | Gen | QEZ3 | GEN | MEP SUB | Bill-04 | B.4.01 |
| PRE-1570 |  | Review and Approval from Engineer Wiring devices - (Part 1) | 41d | 2022-02-21 A | 2022-04-18 A | PRE-1410 | 100% |  |  |  | 4,521.29 | 4,521.29 | G9 | MAT | PC1460 | PRC | PROC | GEN | MECH | Gen | QEZ3 | GEN | MEP SUB | Bill-04 | B.4.01 |
| PRE-1730 |  | Enquiry / Bid Evaluation /Placing Purchase Order Wiring devices - (Part 1) | 1d | 2022-04-18 A | 2022-04-18 A | PRE-1230 | 100% |  |  | 7 DAYS W/O HOLIDAY | 4,521.29 | 4,521.29 | G9 | MAT | PC1470 | PRC | PROC | GEN | ELEC | Gen | QEZ3 | GEN | MEP SUB | Bill-04 | B.4.01 |
| PRE-1570R |  | Review and Approval from Engineer Wiring devices - (Part 2) | 4d | 2022-04-19 | 2022-04-24 | PRE-1410, PRE-1570 |  | 1d | 0d |  | 1,130.32 |  | G9 | MAT | PC1460 | PRC | PROC | GEN | MECH | Gen | QEZ3 | GEN | MEP SUB | Bill-04 | B.4.01 |
| PRE-1730R |  | Enquiry / Bid Evaluation /Placing Purchase Order Wiring devices - (Part 2) | 10d | 2022-04-25 | 2022-05-04 | PRE-1570, PRE-1570R, PRE-1730 |  | 1d | 0d | 7 DAYS W/O HOLIDAY | 1,130.32 |  | G9 | MAT | PC1470 | PRC | PROC | GEN | ELEC | Gen | QEZ3 | GEN | MEP SUB | Bill-04 | B.4.01 |
| PRE-1910 |  | Manufacture / Fabrication by Supplier /FAT inspection Wiring devices | 240d | 2022-05-05 | 2022-12-30 | PRE-1730, PRE-1730R |  | 1d | 0d | 7 DAYS W/O HOLIDAY | 5,651.61 |  | G9 | MAT | PC1480 | PRC | PROC | GEN | ELEC | Gen | QEZ3 | GEN | MEP SUB | Bill-04 | B.4.01 |
| PRE-2080 |  | Shipment / Delivery to Site Wiring devices | 30d | 2022-12-31 | 2023-01-29 | PRE-1910 |  | 1d |  | 7 DAYS W/O HOLIDAY | 22,606.43 |  | G9 | MAT | PC1490 | PRC | PROC | GEN | ELEC | Gen | QEZ3 | GEN | MEP SUB | Bill-04 | B.4.01 |
|  | 1 | **Conduits (PVC & GI)** |  | 2021-12-15 | 2022-05-28 |  |  |  |  |  |  |  |  |  |  |  |  |  |  |  |  |  |  |  |  |
| PRE-1040 |  | Submit material Technical Submittal Conduit | 9d | 2021-12-15 A | 2021-12-27 A | G1100 FS+40d, PRE-1010 SS | 100% |  |  |  | 5,748.63 | 5,748.63 | G9 | MAT | PC1450 | PRC | PROC | GEN | ELEC | Gen | QEZ3 | GEN | MEP SUB | Bill-04 | B.4.01 |
| PRE-1260 |  | Review and Comments from Engineer Conduit | 9d | 2021-12-27 A | 2022-01-06 A | PRE-1040 | 100% |  |  |  | 5,748.63 | 5,748.63 | G9 | MAT | PC1460 | PRC | PROC | GEN | ELEC | Gen | QEZ3 | GEN | MEP SUB | Bill-04 | B.4.01 |
| PRE-1440 |  | Incorporate Comments and Resubmit Conduit | 30d | 2022-01-09 A | 2022-02-20 A | PRE-1260 | 100% |  |  |  | 5,748.63 | 5,748.63 | G9 | MAT | PC1450 | PRC | PROC | GEN | MECH | Gen | QEZ3 | GEN | MEP SUB | Bill-04 | B.4.01 |
| PRE-1590 |  | Review and Approval from Engineer Conduit | 14d | 2022-02-21 A | 2022-03-10 A | PRE-1440 | 100% |  |  |  | 5,748.63 | 5,748.63 | G9 | MAT | PC1460 | PRC | PROC | GEN | MECH | Gen | QEZ3 | GEN | MEP SUB | Bill-04 | B.4.01 |
| PRE-1750 |  | Enquiry / Bid Evaluation /Placing Purchase Order Conduit | 9d | 2022-03-12 A | 2022-03-20 A | PRE-1590 | 100% |  |  | 7 DAYS W/O HOLIDAY | 5,748.63 | 5,748.63 | G9 | MAT | PC1470 | PRC | PROC | GEN | ELEC | Gen | QEZ3 | GEN | MEP SUB | Bill-04 | B.4.01 |
| PRE-1930 |  | Manufacture / Fabrication by Supplier /FAT inspection Conduit | 30d | 2022-03-20 A | 2022-04-18 A | PRE-1750 | 100% |  |  | 7 DAYS W/O HOLIDAY | 4,311.47 | 4,311.47 | G9 | MAT | PC1480 | PRC | PROC | GEN | ELEC | Gen | QEZ3 | GEN | MEP SUB | Bill-04 | B.4.01 |
| PRE-1930R |  | Manufacture / Fabrication by Supplier /FAT inspection Conduit | 30d | 2022-04-19 | 2022-05-18 | PRE-1750, PRE-1930 |  | 260d | 0d | 7 DAYS W/O HOLIDAY | 1,437.16 |  | G9 | MAT | PC1480 | PRC | PROC | GEN | ELEC | Gen | QEZ3 | GEN | MEP SUB | Bill-04 | B.4.01 |
| PRE-2060 |  | Shipment / Delivery to Site Conduit | 10d | 2022-05-19 | 2022-05-28 | PRE-1930, PRE-1930R |  | 260d | 259d | 7 DAYS W/O HOLIDAY | 22,994.51 |  | G9 | MAT | PC1490 | PRC | PROC | GEN | ELEC | Gen | QEZ3 | GEN | MEP SUB | Bill-04 | B.4.01 |
|  | 2 | **Isolator, Switch, Sockets & Accessories** |  | 2021-11-14 | 2022-07-24 |  |  |  |  |  |  |  |  |  |  |  |  |  |  |  |  |  |  |  |  |
| PRE-1000 |  | Submit material Technical Submittal Isolator,Switch, Socket , Accessories | 6d | 2021-11-14 A | 2021-11-21 A | G1100 FS+40d, PRE-1040 SS | 100% |  |  |  | 30,903.52 | 30,903.52 | G9 | MAT | PC1450 | PRC | PROC | GEN | ELEC | Gen | QEZ3 | GEN | MEP SUB | Bill-04 | B.4.03 |
| PRE-1220 |  | Review and Comments from Engineer Isolator,Switch, Socket , Accessories | 9d | 2021-11-22 A | 2021-12-02 A | PRE-1000 | 100% |  |  |  | 30,903.52 | 30,903.52 | G9 | MAT | PC1460 | PRC | PROC | GEN | ELEC | Gen | QEZ3 | GEN | MEP SUB | Bill-04 | B.4.03 |
| PRE-1400 |  | Incorporate Comments and Resubmit Isolator,Switch, Socket , Accessories | 33d | 2021-12-05 A | 2022-01-18 A | PRE-1220 | 100% |  |  |  | 30,903.52 | 30,903.52 | G9 | MAT | PC1450 | PRC | PROC | GEN | MECH | Gen | QEZ3 | GEN | MEP SUB | Bill-04 | B.4.03 |
| PRE-1560 |  | Review and Approval from Engineer Isolator,Switch, Socket , Accessories | 5d | 2022-04-19 | 2022-04-25 | PRE-1400 |  | 130d | 0d |  | 30,903.52 |  | G9 | MAT | PC1460 | PRC | PROC | GEN | MECH | Gen | QEZ3 | GEN | MEP SUB | Bill-04 | B.4.03 |
| PRE-1720 |  | Enquiry / Bid Evaluation /Placing Purchase Order Isolator,Switch, Socket , Accessories | 10d | 2022-04-26 | 2022-05-05 | PRE-1560 |  | 190d | 0d | 7 DAYS W/O HOLIDAY | 30,903.52 |  | G9 | MAT | PC1470 | PRC | PROC | GEN | ELEC | Gen | QEZ3 | GEN | MEP SUB | Bill-04 | B.4.03 |
| PRE-1900 |  | Manufacture / Fabrication by Supplier /FAT inspection Isolator,Switch, Socket , Accessories | 60d | 2022-05-06 | 2022-07-04 | PRE-1720 |  | 190d | 0d | 7 DAYS W/O HOLIDAY | 30,903.52 |  | G9 | MAT | PC1480 | PRC | PROC | GEN | ELEC | Gen | QEZ3 | GEN | MEP SUB | Bill-04 | B.4.03 |
| PRE-2070 |  | Shipment / Delivery to Site Isolator,Switch, Socket , Accessories | 20d | 2022-07-05 | 2022-07-24 | PRE-1900 |  | 190d |  | 7 DAYS W/O HOLIDAY | 123,614.09 |  | G9 | MAT | PC1490 | PRC | PROC | GEN | ELEC | Gen | QEZ3 | GEN | MEP SUB | Bill-04 | B.4.03 |

Notes:
- PRE-1010: Expenses: (New Expense) 5651.61
- PRE-1230: Expenses: (New Expense) 5651.61
- PRE-1410: Expenses: (New Expense) 5651.61
- PRE-1570: Expenses: (New Expense) 4521.29
- PRE-1730: Expenses: (New Expense) 4521.29
- PRE-1570R: Expenses: (New Expense) 1130.32
- PRE-1730R: Expenses: (New Expense) 1130.32
- PRE-1910: Expenses: (New Expense) 5651.61
- PRE-2080: Expenses: (New Expense) 22606.4
- PRE-1040: Expenses: (New Expense) 5748.63
- PRE-1260: Expenses: (New Expense) 5748.63
- PRE-1440: Expenses: (New Expense) 5748.63
- PRE-1590: Expenses: (New Expense) 5748.63
- PRE-1750: Expenses: (New Expense) 5748.63
- PRE-1930: Expenses: (New Expense) 4311.47
- PRE-1930R: Expenses: (New Expense) 1437.16
- PRE-2060: Expenses: (New Expense) 22994.5
- PRE-1000: Expenses: (New Expense) 30903.5
- PRE-1220: Expenses: (New Expense) 30903.5
- PRE-1400: Expenses: (New Expense) 30903.5
- PRE-1560: Expenses: (New Expense) 30903.5
- PRE-1720: Expenses: (New Expense) 30903.5
- PRE-1900: Expenses: (New Expense) 30903.5
- PRE-2070: Expenses: (New Expense) 123614

| ID | WBS | Activity | Duration | Start | Finish | Predecessors | Complete | Total float | Free float | Calendar | Cost | Actual cost | Bill Code | PRC-MTL | 釬珛測鎢杸遙 | 02 Phase | 03 Section | 05 Sub-section | 04 Discipline | 06 Zone | 01 Project | 07 Buildings & Ext. Works | 09 Subcontractors | 10 BOQ Cost | 13 BOQ-4 | 14 BOQ-5 |
| --- | --- | --- | --- | --- | --- | --- | --- | --- | --- | --- | --- | --- | --- | --- | --- | --- | --- | --- | --- | --- | --- | --- | --- | --- | --- | --- |
|  | 7 | **Lighting** |  | 2021-12-21 | 2023-01-14 |  |  |  |  |  |  |  |  |  |  |  |  |  |  |  |  |  |  |  |  |  |
| PRE-1060 |  | Submit material Technical Submittal Lighting | 12d | 2021-12-21 A | 2022-01-05 A | G1100 FS+40d, PRE-1080 SS | 100% |  |  |  | 1,119.53 | 1,119.53 | G9 | MAT | PC1450 | PRC | PROC | GEN | ELEC | Gen | QEZ3 | GEN | MEP SUB | Bill-04 | B.4.01 |  |
| PRE-1280 |  | Review and Comments from Engineer Lighting | 5d | 2022-01-06 A | 2022-01-12 A | PRE-1060 | 100% |  |  |  | 1,119.53 | 1,119.53 | G9 | MAT | PC1460 | PRC | PROC | GEN | ELEC | Gen | QEZ3 | GEN | MEP SUB | Bill-04 | B.4.01 |  |
| PRE-1460 |  | Incorporate Comments and Resubmit Lighting | 26d | 2022-01-13 A | 2022-02-20 A | PRE-1280 | 100% |  |  |  | 1,119.53 | 1,119.53 | G9 | MAT | PC1450 | PRC | PROC | GEN | MECH | Gen | QEZ3 | GEN | MEP SUB | Bill-04 | B.4.01 |  |
| PRE-1610 |  | Review and Approval from Engineer Lighting | 39d | 2022-02-21 A | 2022-04-14 A | PRE-1460 | 100% |  |  |  | 1,119.53 | 1,119.53 | G9 | MAT | PC1460 | PRC | PROC | GEN | MECH | Gen | QEZ3 | GEN | MEP SUB | Bill-04 | B.4.01 |  |
| PRE-1770 |  | Enquiry / Bid Evaluation /Placing Purchase Order Lighting | 10d | 2022-04-19 | 2022-04-28 | PRE-1610 |  | 2d | 0d | 7 DAYS W/O HOLIDAY | 1,119.53 |  | G9 | MAT | PC1470 | PRC | PROC | GEN | ELEC | Gen | QEZ3 | GEN | MEP SUB | Bill-04 | B.4.01 |  |
| PRE-1950 |  | Manufacture / Fabrication by Supplier /FAT inspection Lighting | 231d | 2022-04-29 | 2022-12-15 | PRE-1770 |  | 2d | 0d | 7 DAYS W/O HOLIDAY | 1,119.53 |  | G9 | MAT | PC1480 | PRC | PROC | GEN | ELEC | Gen | QEZ3 | GEN | MEP SUB | Bill-04 | B.4.01 |  |
| PRE-2100 |  | Shipment / Delivery to Site Lighting | 30d | 2022-12-16 | 2023-01-14 | PRE-1950 |  | 2d | 0d | 7 DAYS W/O HOLIDAY | 4,478.14 |  | G9 | MAT | PC1490 | PRC | PROC | GEN | ELEC | Gen | QEZ3 | GEN | MEP SUB | Bill-04 | B.4.01 |  |
|  | 5 | **INSTRUMENT CONTROL & MONITORING MATERIALS** |  | 2021-10-24 | 2023-01-30 |  |  |  |  |  |  |  |  |  |  |  |  |  |  |  |  |  |  |  |  |  |
|  | 2 | **Signal & Control Cable** |  | 2021-10-24 | 2023-01-30 |  |  |  |  |  |  |  |  |  |  |  |  |  |  |  |  |  |  |  |  |  |
| PRI-1050 |  | Submit material Technical Submittal Signal and Control Cable | 25d | 2021-10-24 A | 2021-11-25 A | G1100 | 100% |  |  |  | 15,873.74 | 15,873.74 | G9 | MAT | PC1450 | PRC | PROC | GEN | INST | Gen | QEZ3 | GEN | MEP SUB | Bill-05 |  | B.5.01 |
| PRI-1140 |  | Review and Comments from Engineer Signal and Control Cable | 31d | 2021-11-28 A | 2022-01-09 A | PRI-1050 | 100% |  |  |  | 15,873.74 | 15,873.74 | G9 | MAT | PC1460 | PRC | PROC | GEN | INST | Gen | QEZ3 | GEN | MEP SUB | Bill-05 |  | B.5.01 |
| PRI-1230 |  | Incorporate Comments and Resubmit Signal and Control Cable | 52d | 2021-12-05 A | 2022-02-15 A | PRI-1140 | 100% |  |  |  | 15,873.74 | 15,873.74 | G9 | MAT | PC1450 | PRC | PROC | GEN | MECH | Gen | QEZ3 | GEN | MEP SUB | Bill-05 |  | B.5.01 |
| PRI-1320 |  | Review and Approval from Engineer Signal and Control Cable | 10d | 2022-02-15 A | 2022-02-28 A | PRI-1230 | 100% |  |  |  | 15,873.74 | 15,873.74 | G9 | MAT | PC1460 | PRC | PROC | GEN | MECH | Gen | QEZ3 | GEN | MEP SUB | Bill-05 |  | B.5.01 |
| PRI-1410 |  | Enquiry / Bid Evaluation /Placing Purchase Order Signal and Control Cable | 8d | 2022-02-28 A | 2022-03-07 A | PRI-1320 | 100% |  |  | 7 DAYS W/O HOLIDAY | 15,873.74 | 15,873.74 | G9 | MAT | PC1470 | PRC | PROC | GEN | INST | Gen | QEZ3 | GEN | MEP SUB | Bill-05 |  | B.5.01 |
| PRI-1500 |  | Manufacture / Fabrication by Supplier /FAT inspection Signal and Control Cable | 42d | 2022-03-07 A | 2022-04-17 A | PRI-1410 | 100% |  |  | 7 DAYS W/O HOLIDAY | 9,392.49 | 9,392.49 | G9 | MAT | PC1480 | PRC | PROC | GEN | INST | Gen | QEZ3 | GEN | MEP SUB | Bill-05 |  | B.5.01 |
| PRI-1500R |  | Manufacture / Fabrication by Supplier /FAT inspection Signal and Control Cable | 257d | 2022-04-19 | 2022-12-31 | PRI-1410, PRI-1500 |  | 1d | 0d | 7 DAYS W/O HOLIDAY | 6,481.25 |  | G9 | MAT | PC1480 | PRC | PROC | GEN | INST | Gen | QEZ3 | GEN | MEP SUB | Bill-05 |  | B.5.01 |
| PRI-1630 |  | Shipment / Delivery to Site Signal and Control Cable | 30d | 2023-01-01 | 2023-01-30 | PRI-1500, PRI-1500R |  | 1d | 0d | 7 DAYS W/O HOLIDAY | 63,494.96 |  | G9 | MAT | PC1490 | PRC | PROC | GEN | INST | Gen | QEZ3 | GEN | MEP SUB | Bill-05 |  | B.5.01 |
|  | 3 | **Pressure Gauge & Pressure Transmitter** |  | 2021-11-21 | 2022-08-26 |  |  |  |  |  |  |  |  |  |  |  |  |  |  |  |  |  |  |  |  |  |
| PRI-1700 |  | Submit material Technical Submittal Pressure Gauge & Pressure Transmitter | 54d | 2021-11-21 A | 2022-02-02 A | PRI-1050 | 100% |  |  |  | 2,849.13 | 2,849.13 | G9 | MAT | PC1450 | PRC | PROC | GEN | INST | Gen | QEZ3 | GEN | MEP SUB | Bill-05 |  | B.5.01 |
| PRI-1710 |  | Review and Comments from Engineer Pressure Gauge & Pressure Transmitter | 32d | 2021-12-26 A | 2022-02-07 A | PRI-1700 | 100% |  |  |  | 2,849.13 | 2,849.13 | G9 | MAT | PC1460 | PRC | PROC | GEN | INST | Gen | QEZ3 | GEN | MEP SUB | Bill-05 |  | B.5.01 |
| PRI-1720 |  | Incorporate Comments and Resubmit Pressure Gauge & Pressure Transmitter | 6d | 2022-04-03 A | 2022-04-10 A | PRI-1710 | 100% |  |  |  | 2,849.13 | 2,849.13 | G9 | MAT | PC1450 | PRC | PROC | GEN | MECH | Gen | QEZ3 | GEN | MEP SUB | Bill-05 |  | B.5.01 |
| PRI-1730 |  | Review and Approval from Engineer Pressure Gauge & Pressure Transmitter | 2d | 2022-04-03 A | 2022-04-04 A | PRI-1720 | 100% |  |  |  | 2,849.13 | 2,849.13 | G9 | MAT | PC1460 | PRC | PROC | GEN | MECH | Gen | QEZ3 | GEN | MEP SUB | Bill-05 |  | B.5.01 |
| PRI-1740 |  | Enquiry / Bid Evaluation /Placing Purchase Order Pressure Gauge & Pressure Transmitter | 10d | 2022-04-19 | 2022-04-28 | PRI-1730 |  | 159d | 0d | 7 DAYS W/O HOLIDAY | 2,849.13 |  | G9 | MAT | PC1470 | PRC | PROC | GEN | INST | Gen | QEZ3 | GEN | MEP SUB | Bill-05 |  | B.5.01 |
| PRI-1750 |  | Manufacture / Fabrication by Supplier /FAT inspection Pressure Gauge & Pressure Transmitter | 90d | 2022-04-29 | 2022-07-27 | PRI-1740 |  | 159d | 0d | 7 DAYS W/O HOLIDAY | 2,849.13 |  | G9 | MAT | PC1480 | PRC | PROC | GEN | INST | Gen | QEZ3 | GEN | MEP SUB | Bill-05 |  | B.5.01 |
| PRI-1760 |  | Shipment / Delivery to Site Pressure Gauge & Pressure Transmitter | 30d | 2022-07-28 | 2022-08-26 | PRI-1750 |  | 159d | 157d | 7 DAYS W/O HOLIDAY | 11,396.53 |  | G9 | MAT | PC1490 | PRC | PROC | GEN | INST | Gen | QEZ3 | GEN | MEP SUB | Bill-05 |  | B.5.01 |

Notes:
- PRE-1060: Expenses: (New Expense) 1119.53
- PRE-1280: Expenses: (New Expense) 1119.53
- PRE-1460: Expenses: (New Expense) 1119.53
- PRE-1610: Expenses: (New Expense) 1119.53
- PRE-1770: Expenses: (New Expense) 1119.53
- PRE-1950: Expenses: (New Expense) 1119.53
- PRE-2100: Expenses: (New Expense) 4478.14
- PRI-1050: Expenses: (New Expense) 15873.7
- PRI-1140: Expenses: (New Expense) 15873.7
- PRI-1230: Expenses: (New Expense) 15873.7
- PRI-1320: Expenses: (New Expense) 15873.7
- PRI-1410: Expenses: (New Expense) 15873.7
- PRI-1500: Expenses: (New Expense) 9392.49
- PRI-1500R: Expenses: (New Expense) 6481.25
- PRI-1630: Expenses: (New Expense) 63495
- PRI-1700: Expenses: (New Expense) 2849.13
- PRI-1710: Expenses: (New Expense) 2849.13
- PRI-1720: Expenses: (New Expense) 2849.13
- PRI-1730: Expenses: (New Expense) 2849.13
- PRI-1740: Expenses: (New Expense) 2849.13
- PRI-1750: Expenses: (New Expense) 2849.13
- PRI-1760: Expenses: (New Expense) 11396.5

| ID | WBS | Activity | Duration | Start | Finish | Predecessors | Complete | Total float | Free float | Calendar | Resources | Cost | Actual cost | Bill Code | PRC-MTL | 釬珛測鎢杸遙 | 02 Phase | 03 Section | 05 Sub-section | 04 Discipline | 06 Zone | 01 Project | 07 Buildings & Ext. Works | 09 Subcontractors | 10 BOQ Cost | 14 BOQ-5 |
| --- | --- | --- | --- | --- | --- | --- | --- | --- | --- | --- | --- | --- | --- | --- | --- | --- | --- | --- | --- | --- | --- | --- | --- | --- | --- | --- |
|  | 1 | **Flow Meters** |  | 2021-11-21 | 2022-09-15 |  |  |  |  |  |  |  |  |  |  |  |  |  |  |  |  |  |  |  |  |  |
| PRI-1030 |  | Submit material Technical Submittal Flow Meters | 23d | 2021-11-21 A | 2021-12-21 A | G1100, PRI-1050 | 100% |  |  |  |  | 2,849.13 | 2,849.13 | G9 | MAT | PC1450 | PRC | PROC | GEN | INST | Gen | QEZ3 | GEN | MEP SUB | Bill-05 | B.5.01 |
| PRI-1120 |  | Review and Comments from Engineer Flow Meters | 7d | 2021-12-22 A | 2021-12-30 A | PRI-1030 | 100% |  |  |  |  | 2,849.13 | 2,849.13 | G9 | MAT | PC1460 | PRC | PROC | GEN | INST | Gen | QEZ3 | GEN | MEP SUB | Bill-05 | B.5.01 |
| PRI-1210 |  | Incorporate Comments and Resubmit Flow Meters | 6d | 2022-04-19 | 2022-04-26 | PRI-1120 |  | 96d | 0d |  |  | 2,849.13 |  | G9 | MAT | PC1450 | PRC | PROC | GEN | MECH | Gen | QEZ3 | GEN | MEP SUB | Bill-05 | B.5.01 |
| PRI-1300 |  | Review and Approval from Engineer Flow Meters | 5d | 2022-04-27 | 2022-05-08 | PRI-1210 |  | 96d | 0d |  |  | 2,849.13 |  | G9 | MAT | PC1460 | PRC | PROC | GEN | MECH | Gen | QEZ3 | GEN | MEP SUB | Bill-05 | B.5.01 |
| PRI-1390 |  | Enquiry / Bid Evaluation /Placing Purchase Order Flow Meters | 10d | 2022-05-09 | 2022-05-18 | PRI-1300 |  | 139d | 0d | 7 DAYS W/O HOLIDAY |  | 2,849.13 |  | G9 | MAT | PC1470 | PRC | PROC | GEN | INST | Gen | QEZ3 | GEN | MEP SUB | Bill-05 | B.5.01 |
| PRI-1480 |  | Manufacture / Fabrication by Supplier /FAT inspection Flow Meters | 90d | 2022-05-19 | 2022-08-16 | PRI-1390 |  | 139d | 0d | 7 DAYS W/O HOLIDAY |  | 2,849.13 |  | G9 | MAT | PC1480 | PRC | PROC | GEN | INST | Gen | QEZ3 | GEN | MEP SUB | Bill-05 | B.5.01 |
| PRI-1570 |  | Shipment / Delivery to Site Flow Meters | 30d | 2022-08-17 | 2022-09-15 | PRI-1480 |  | 139d | 137d | 7 DAYS W/O HOLIDAY |  | 11,396.53 |  | G9 | MAT | PC1490 | PRC | PROC | GEN | INST | Gen | QEZ3 | GEN | MEP SUB | Bill-05 | B.5.01 |
|  | 4 | **Pressure Switch, Level Switch & Level Transmitter** |  | 2021-11-21 | 2022-10-02 |  |  |  |  |  |  |  |  |  |  |  |  |  |  |  |  |  |  |  |  |  |
| PRI-1080 |  | Submit material Technical Submittal Pressure Switch, Level Tranmitter | 23d | 2021-11-21 A | 2021-12-21 A | G1100 FS+45d, EN-1560, PRI-1030 SS | 100% |  |  |  |  | 1,362.7 | 1,362.7 | G9 | MAT | PC1450 | PRC | PROC | GEN | INST | Gen | QEZ3 | GEN | MEP SUB | Bill-05 | B.5.01 |
| PRI-1170 |  | Review and Comments from Engineer Pressure Switch, Level Tranmitter | 7d | 2021-12-22 A | 2021-12-30 A | PRI-1080 | 100% |  |  |  |  | 1,362.7 | 1,362.7 | G9 | MAT | PC1460 | PRC | PROC | GEN | INST | Gen | QEZ3 | GEN | MEP SUB | Bill-05 | B.5.01 |
| PRI-1260 |  | Incorporate Comments and Resubmit Pressure Switch, Level Tranmitter | 75d | 2022-01-02 A | 2022-04-17 A | PRI-1170 | 100% |  |  |  |  | 681.35 | 681.35 | G9 | MAT | PC1450 | PRC | PROC | GEN | MECH | Gen | QEZ3 | GEN | MEP SUB | Bill-05 | B.5.01 |
| PRI-1260R |  | Incorporate Comments and Resubmit Pressure Switch, Level Tranmitter | 1d | 2022-04-19 | 2022-04-19 | PRI-1170, PRI-1260 |  | 84d | 0d |  |  | 681.35 |  | G9 | MAT | PC1450 | PRC | PROC | GEN | MECH | Gen | QEZ3 | GEN | MEP SUB | Bill-05 | B.5.01 |
| PRI-1350 |  | Review and Approval from Engineer Pressure Switch, Level Tranmitter | 5d | 2022-04-19 | 2022-04-25 | PRI-1260 SS, PRI-1260R SS |  | 84d | 0d |  |  | 1,362.7 |  | G9 | MAT | PC1460 | PRC | PROC | GEN | MECH | Gen | QEZ3 | GEN | MEP SUB | Bill-05 | B.5.01 |
| PRI-1440 |  | Enquiry / Bid Evaluation /Placing Purchase Order Pressure Switch, Level Tranmitter | 10d | 2022-04-26 | 2022-05-05 | PRI-1350 |  | 126d | 0d | 7 DAYS W/O HOLIDAY |  | 1,362.7 |  | G9 | MAT | PC1470 | PRC | PROC | GEN | INST | Gen | QEZ3 | GEN | MEP SUB | Bill-05 | B.5.01 |
| PRI-1530 |  | Manufacture / Fabrication by Supplier /FAT inspection Pressure Switch, Level Tranmitter | 120d | 2022-05-06 | 2022-09-02 | PRI-1440 |  | 126d | 0d | 7 DAYS W/O HOLIDAY |  | 1,362.7 |  | G9 | MAT | PC1480 | PRC | PROC | GEN | INST | Gen | QEZ3 | GEN | MEP SUB | Bill-05 | B.5.01 |
| PRI-1590 |  | Shipment / Delivery to Site Pressure Switch, Level Tranmitter | 30d | 2022-09-03 | 2022-10-02 | PRI-1530 |  | 126d | 124d | 7 DAYS W/O HOLIDAY |  | 5,450.79 |  | G9 | MAT | PC1490 | PRC | PROC | GEN | INST | Gen | QEZ3 | GEN | MEP SUB | Bill-05 | B.5.01 |
|  | 5 | **Instrumentation Tubes & Fittings** |  | 2021-10-27 | 2022-07-27 |  |  |  |  |  |  |  |  |  |  |  |  |  |  |  |  |  |  |  |  |  |
| PRI-1010 |  | Submit material Technical Submittal Instrumentation-Tube and Fittings | 40d | 2021-10-27 A | 2021-12-21 A | G1100 FS+25d | 100% |  |  |  |  | 18,528.9 | 18,528.9 | G9 | MAT | PC1450 | PRC | PROC | GEN | INST | Gen | QEZ3 | GEN | MEP SUB | Bill-05 | B.5.01 |
| PRI-1100 |  | Review and Comments from Engineer Tube and Fittings | 7d | 2021-12-22 A | 2021-12-30 A | PRI-1010 | 100% |  |  |  |  | 18,528.9 | 18,528.9 | G9 | MAT | PC1460 | PRC | PROC | GEN | INST | Gen | QEZ3 | GEN | MEP SUB | Bill-05 | B.5.01 |
| PRI-1190 |  | Incorporate Comments and Resubmit Tube and Fittings | 27d | 2022-01-02 A | 2022-02-07 A | PRI-1100 | 100% |  |  |  |  | 18,528.9 | 18,528.9 | G9 | MAT | PC1450 | PRC | PROC | GEN | MECH | Gen | QEZ3 | GEN | MEP SUB | Bill-05 | B.5.01 |
| PRI-1280 |  | Review and Approval from Engineer Tube and Fittings | 36d | 2022-02-09 A | 2022-03-30 A | PRI-1190 | 100% |  |  |  |  | 18,528.9 | 18,528.9 | G9 | MAT | PC1460 | PRC | PROC | GEN | MECH | Gen | QEZ3 | GEN | MEP SUB | Bill-05 | B.5.01 |
| PRI-1370 |  | Enquiry / Bid Evaluation /Placing Purchase Order Tube and Fittings | 10d | 2022-04-19 | 2022-04-28 | PRI-1280 |  | 189d | 0d | 7 DAYS W/O HOLIDAY | GENERAL LABOR [1000 h] | 18,528.9 |  | G9 | MAT | PC1470 | PRC | PROC | GEN | INST | Gen | QEZ3 | GEN | MEP SUB | Bill-05 | B.5.01 |
| PRI-1460 |  | Manufacture / Fabrication by Supplier /FAT inspection Tube and Fittings | 60d | 2022-04-29 | 2022-06-27 | PRI-1370 |  | 189d | 0d | 7 DAYS W/O HOLIDAY |  | 18,528.9 |  | G9 | MAT | PC1480 | PRC | PROC | GEN | INST | Gen | QEZ3 | GEN | MEP SUB | Bill-05 | B.5.01 |
| PRI-1540 |  | Shipment / Delivery to Site Tube and Fittings | 30d | 2022-06-28 | 2022-07-27 | PRI-1460 |  | 189d | 187d | 7 DAYS W/O HOLIDAY |  | 53,356 |  | G9 | MAT | PC1490 | PRC | PROC | GEN | INST | Gen | QEZ3 | GEN | MEP SUB | Bill-05 | B.5.01 |

Notes:
- PRI-1030: Expenses: (New Expense) 2849.13
- PRI-1120: Expenses: (New Expense) 2849.13
- PRI-1210: Expenses: (New Expense) 2849.13
- PRI-1300: Expenses: (New Expense) 2849.13
- PRI-1390: Expenses: (New Expense) 2849.13
- PRI-1480: Expenses: (New Expense) 2849.13
- PRI-1570: Expenses: (New Expense) 11396.5
- PRI-1080: Expenses: (New Expense) 1362.7
- PRI-1170: Expenses: (New Expense) 1362.7
- PRI-1260: Expenses: (New Expense) 681.35
- PRI-1260R: Expenses: (New Expense) 681.35
- PRI-1350: Expenses: (New Expense) 1362.7
- PRI-1440: Expenses: (New Expense) 1362.7
- PRI-1530: Expenses: (New Expense) 1362.7
- PRI-1590: Expenses: (New Expense) 5450.79
- PRI-1010: Expenses: (New Expense) 18528.9
- PRI-1100: Expenses: (New Expense) 18528.9
- PRI-1190: Expenses: (New Expense) 18528.9
- PRI-1280: Expenses: (New Expense) 18528.9
- PRI-1370: Expenses: (New Expense) 18528.9
- PRI-1460: Expenses: (New Expense) 18528.9
- PRI-1540: Expenses: (New Expense) 53356

| ID | WBS | Activity | Duration | Start | Finish | Predecessors | Complete | Total float | Free float | Calendar | Cost | Actual cost | Bill Code | PRC-MTL | 釬珛測鎢杸遙 | 02 Phase | 03 Section | 05 Sub-section | 04 Discipline | 06 Zone | 01 Project | 07 Buildings & Ext. Works | 09 Subcontractors | 10 BOQ Cost | 14 BOQ-5 | 12 BOQ-3 |
| --- | --- | --- | --- | --- | --- | --- | --- | --- | --- | --- | --- | --- | --- | --- | --- | --- | --- | --- | --- | --- | --- | --- | --- | --- | --- | --- |
|  | 6 | **Analyzers** |  | 2021-12-12 | 2023-01-03 |  |  |  |  |  |  |  |  |  |  |  |  |  |  |  |  |  |  |  |  |  |
| PRI-1060 |  | Submit material Technical Submittal Analyzer | 10d | 2021-12-12 A | 2021-12-23 A | G1100 FS+25d, PRI-1080 | 100% |  |  |  | 13,777.59 | 13,777.59 | G9 | MAT | PC1450 | PRC | PROC | GEN | INST | Gen | QEZ3 | GEN | MEP SUB | Bill-05 | B.5.01 |  |
| PRI-1150 |  | Review and Comments from Engineer Analyzer | 63d | 2021-12-26 A | 2022-03-23 A | PRI-1060 | 100% |  |  |  | 13,777.59 | 13,777.59 | G9 | MAT | PC1460 | PRC | PROC | GEN | INST | Gen | QEZ3 | GEN | MEP SUB | Bill-05 | B.5.01 |  |
| PRI-1240 |  | Incorporate Comments and Resubmit Analyzer | 6d | 2022-03-24 A | 2022-03-31 A | PRI-1150 | 100% |  |  |  | 13,777.59 | 13,777.59 | G9 | MAT | PC1450 | PRC | PROC | GEN | MECH | Gen | QEZ3 | GEN | MEP SUB | Bill-05 | B.5.01 |  |
| PRI-1330 |  | Review and Approval from Engineer Analyzer | 1d | 2022-03-31 A | 2022-03-31 A | PRI-1240 | 100% |  |  |  | 13,777.59 | 13,777.59 | G9 | MAT | PC1460 | PRC | PROC | GEN | MECH | Gen | QEZ3 | GEN | MEP SUB | Bill-05 | B.5.01 |  |
| PRI-1420 |  | Enquiry / Bid Evaluation /Placing Purchase Order Analyzer | 10d | 2022-04-19 | 2022-04-28 | PRI-1330 |  | 29d | 0d | 7 DAYS W/O HOLIDAY | 13,777.59 |  | G9 | MAT | PC1470 | PRC | PROC | GEN | INST | Gen | QEZ3 | GEN | MEP SUB | Bill-05 | B.5.01 |  |
| PRI-1510 |  | Manufacture / Fabrication by Supplier /FAT inspection Analyzer | 220d | 2022-04-29 | 2022-12-04 | PRI-1420 |  | 29d | 0d | 7 DAYS W/O HOLIDAY | 13,777.59 |  | G9 | MAT | PC1480 | PRC | PROC | GEN | INST | Gen | QEZ3 | GEN | MEP SUB | Bill-05 | B.5.01 |  |
| PRI-1580 |  | Shipment / Delivery to Site Analyzer | 30d | 2022-12-05 | 2023-01-03 | PRI-1510 |  | 29d | 26d | 7 DAYS W/O HOLIDAY | 55,110.36 |  | G9 | MAT | PC1490 | PRC | PROC | GEN | INST | Gen | QEZ3 | GEN | MEP SUB | Bill-05 | B.5.01 |  |
|  | 10 | **PLC/ SCADA System** |  | 2021-12-01 | 2023-01-21 |  |  |  |  |  |  |  |  |  |  |  |  |  |  |  |  |  |  |  |  |  |
| PRI-1070 |  | Submit material Technical Submittal PLC/SCADA | 5d | 2021-12-01 A | 2021-12-07 A | G1100 FS+25d, EN-1600, EN-2000 | 100% |  |  |  | 41,127.23 | 41,127.23 | G9 | MAT | PC1450 | PRC | PROC | GEN | INST | Gen | QEZ3 | GEN | MEP SUB | Bill-05 | B.5.01 |  |
| PRI-1160 |  | Review and Comments from Engineer PLC/SCADA | 14d | 2021-12-08 A | 2021-12-27 A | PRI-1070 | 100% |  |  |  | 41,127.23 | 41,127.23 | G9 | MAT | PC1460 | PRC | PROC | GEN | INST | Gen | QEZ3 | GEN | MEP SUB | Bill-05 | B.5.01 |  |
| PRI-1250 |  | Incorporate Comments and Resubmit PLC/SCADA | 9d | 2021-12-19 A | 2021-12-29 A | PRI-1160 | 100% |  |  |  | 41,127.23 | 41,127.23 | G9 | MAT | PC1450 | PRC | PROC | GEN | MECH | Gen | QEZ3 | GEN | MEP SUB | Bill-05 | B.5.01 |  |
| PRI-1340 |  | Review and Approval from Engineer PLC/SCADA | 5d | 2022-01-06 A | 2022-01-12 A | PRI-1250 | 100% |  |  |  | 41,127.23 | 41,127.23 | G9 | MAT | PC1460 | PRC | PROC | GEN | MECH | Gen | QEZ3 | GEN | MEP SUB | Bill-05 | B.5.01 |  |
| PRI-1344 |  | Review and Approval from PWA O&M Dept PLC/SCADA | 5d | 2022-01-06 A | 2022-01-12 A | PRI-1342 | 100% |  |  |  | 41,127.23 | 41,127.23 | G9 | MAT | PC1460 | PRC | PROC | GEN | MECH | Gen | QEZ3 | GEN | MEP SUB | Bill-05 | B.5.01 |  |
| PRI-1342 |  | Submit to PWA O&M Dept PLC/SCADA | 6d | 2022-03-08 A | 2022-03-15 A | PRI-1340 | 100% |  |  |  | 41,127.23 | 41,127.23 | G9 | MAT | PC1450 | PRC | PROC | GEN | MECH | Gen | QEZ3 | GEN | MEP SUB | Bill-05 | B.5.01 |  |
| PRI-1430 |  | Enquiry / Bid Evaluation /Placing Purchase Order PLC/SCADA | 10d | 2022-04-19 | 2022-04-28 | PRI-1340, PRI-1344 |  | 29d | 28d | 7 DAYS W/O HOLIDAY | 41,127.23 |  | G9 | MAT | PC1470 | PRC | PROC | GEN | INST | Gen | QEZ3 | GEN | MEP SUB | Bill-05 | B.5.01 |  |
| PRI-1520 |  | Manufacture / Fabrication by Supplier /FAT inspection PLC/SCADA | 210d | 2022-05-27 | 2022-12-22 | PRI-1430, EN-2040, EN-2080 |  | 1d | 0d | 7 DAYS W/O HOLIDAY | 41,127.23 |  | G9 | MAT | PC1480 | PRC | PROC | GEN | INST | Gen | QEZ3 | GEN | MEP SUB | Bill-05 | B.5.01 |  |
| PRI-1640 |  | Shipment / Delivery to Site PLC/SCADA | 30d | 2022-12-23 | 2023-01-21 | PRI-1520 |  | 1d | 0d | 7 DAYS W/O HOLIDAY | 82,254.46 |  | G9 | MAT | PC1490 | PRC | PROC | GEN | INST | Gen | QEZ3 | GEN | MEP SUB | Bill-05 | B.5.01 |  |
|  | 10 | **LONG LEAD ITEMS** |  | 2021-08-02 | 2023-01-25 |  |  |  |  |  |  |  |  |  |  |  |  |  |  |  |  |  |  |  |  |  |
|  | 2 | **Submersible Pumps** |  | 2021-08-08 | 2023-01-25 |  |  |  |  |  |  |  |  |  |  |  |  |  |  |  |  |  |  |  |  |  |
| PRM-1460 |  | Submit material Technical SubmittalSubmersible Pumps | 33d | 2021-08-08 A | 2021-09-21 A | G1100, EN-1380 | 100% |  |  |  | 64,918.46 | 64,918.46 | G9 | MAT | PC1450 | PRC | PROC | GEN | MECH | Gen | QEZ3 | GEN | MEP SUB | Bill-03 |  | B.3.01 |
| PRM-1540 |  | Review and Comments from Engineer Submersible Pumps | 21d | 2021-09-21 A | 2021-10-19 A | PRM-1460 | 100% |  |  |  | 64,918.46 | 64,918.46 | G9 | MAT | PC1460 | PRC | PROC | GEN | MECH | Gen | QEZ3 | GEN | MEP SUB | Bill-03 |  | B.3.01 |
| PRM-1610 |  | Incorporate Comments and Resubmit Submersible Pumps | 16d | 2021-10-20 A | 2021-11-10 A | PRM-1540 | 100% |  |  |  | 64,918.46 | 64,918.46 | G9 | MAT | PC1450 | PRC | PROC | GEN | MECH | Gen | QEZ3 | GEN | MEP SUB | Bill-03 |  | B.3.01 |
| PRM-1660 |  | Review and Approval from Engineer Submersible Pumps | 6d | 2021-11-03 A | 2021-11-10 A | PRM-1610 | 100% |  |  |  | 64,918.46 | 64,918.46 | G9 | MAT | PC1460 | PRC | PROC | GEN | MECH | Gen | QEZ3 | GEN | MEP SUB | Bill-03 |  | B.3.01 |
| PRM-1710 |  | Enquiry / Bid Evaluation /Placing Purchase Order Submersible Pumps | 97d | 2021-11-03 A | 2022-02-07 A | PRM-1660 | 100% |  |  | 7 DAYS W/O HOLIDAY | 64,918.46 | 64,918.46 | G9 | MAT | PC1470 | PRC | PROC | GEN | MECH | Gen | QEZ3 | GEN | MEP SUB | Bill-03 |  | B.3.01 |
| PRM-1760 |  | Manufacture / Fabrication by Supplier /FAT inspection Submersible Pumps | 160d | 2021-11-10 A | 2022-04-18 A | PRM-1710 | 100% |  |  | 7 DAYS W/O HOLIDAY | 54,369.21 | 54,369.21 | G9 | MAT | PC1480 | PRC | PROC | GEN | MECH | Gen | QEZ3 | GEN | MEP SUB | Bill-03 |  | B.3.01 |
| PRM-1760R |  | Manufacture / Fabrication by Supplier /FAT inspection Submersible Pumps | 251d | 2022-04-19 | 2022-12-25 | PRM-1710, PRM-1760 |  | 0d |  | 7 DAYS W/O HOLIDAY | 10,549.25 |  | G9 | MAT | PC1480 | PRC | PROC | GEN | MECH | Gen | QEZ3 | GEN | MEP SUB | Bill-03 |  | B.3.01 |
| PRM-1800 |  | Shipment / Delivery to Site Submersible Pumps | 31d | 2022-12-26 | 2023-01-25 | PRM-1760, PRM-1760R |  | 0d |  | 7 DAYS W/O HOLIDAY | 259,673.83 |  | G9 | MAT | PC1490 | PRC | PROC | GEN | MECH | Gen | QEZ3 | GEN | MEP SUB | Bill-03 |  | B.3.01 |

Notes:
- PRI-1060: Expenses: (New Expense) 13777.6
- PRI-1150: Expenses: (New Expense) 13777.6
- PRI-1240: Expenses: (New Expense) 13777.6
- PRI-1330: Expenses: (New Expense) 13777.6
- PRI-1420: Expenses: (New Expense) 13777.6
- PRI-1510: Expenses: (New Expense) 13777.6
- PRI-1580: Expenses: (New Expense) 55110.4
- PRI-1070: Expenses: (New Expense) 41127.2
- PRI-1160: Expenses: (New Expense) 41127.2
- PRI-1250: Expenses: (New Expense) 41127.2
- PRI-1340: Expenses: (New Expense) 41127.2
- PRI-1344: Expenses: (New Expense) 41127.2
- PRI-1342: Expenses: (New Expense) 41127.2
- PRI-1430: Expenses: (New Expense) 41127.2
- PRI-1520: Expenses: (New Expense) 41127.2
- PRI-1640: Expenses: (New Expense) 82254.5
- PRM-1460: Expenses: (New Expense) 64918.5
- PRM-1540: Expenses: (New Expense) 64918.5
- PRM-1610: Expenses: (New Expense) 64918.5
- PRM-1660: Expenses: (New Expense) 64918.5
- PRM-1710: Expenses: (New Expense) 64918.5
- PRM-1760: Expenses: (New Expense) 54369.2
- PRM-1760R: Expenses: (New Expense) 10549.2
- PRM-1800: Expenses: (New Expense) 259674

| ID | WBS | Activity | Duration | Start | Finish | Predecessors | Complete | Total float | Free float | Calendar | Cost | Actual cost | Bill Code | PRC-MTL | 釬珛測鎢杸遙 | 02 Phase | 03 Section | 05 Sub-section | 04 Discipline | 06 Zone | 01 Project | 07 Buildings & Ext. Works | 09 Subcontractors | 10 BOQ Cost | 12 BOQ-3 |
| --- | --- | --- | --- | --- | --- | --- | --- | --- | --- | --- | --- | --- | --- | --- | --- | --- | --- | --- | --- | --- | --- | --- | --- | --- | --- |
|  | 1 | **Valves** |  | 2021-08-23 | 2023-01-01 |  |  |  |  |  |  |  |  |  |  |  |  |  |  |  |  |  |  |  |  |
| PRM-1450 |  | Submit material Technical SubmittalValves | 6d | 2021-08-23 A | 2021-08-30 A | PR-1010, G1100 FS+2d, EN-1460 | 100% |  |  |  | 8,283.94 | 8,283.94 | G9 | MAT | PC1450 | PRC | PROC | GEN | MECH | Gen | QEZ3 | GEN | MEP SUB | Bill-03 | B.3.01 |
| PRM-1530 |  | Review and Comments from Engineer -Valves | 9d | 2021-08-31 A | 2021-09-12 A | PRM-1450 | 100% |  |  |  | 8,283.94 | 8,283.94 | G9 | MAT | PC1460 | PRC | PROC | GEN | MECH | Gen | QEZ3 | GEN | MEP SUB | Bill-03 | B.3.01 |
| PRM-1590 |  | Incorporate Comments and Resubmit Valves | 9d | 2021-09-13 A | 2021-09-23 A | PRM-1530 | 100% |  |  |  | 8,283.94 | 8,283.94 | G9 | MAT | PC1450 | PRC | PROC | GEN | MECH | Gen | QEZ3 | GEN | MEP SUB | Bill-03 | B.3.01 |
| PRM-1640 |  | Review and Approval from Engineer Valves | 30d | 2021-09-26 A | 2021-11-04 A | PRM-1590 | 100% |  |  |  | 8,283.94 | 8,283.94 | G9 | MAT | PC1460 | PRC | PROC | GEN | MECH | Gen | QEZ3 | GEN | MEP SUB | Bill-03 | B.3.01 |
| PRM-1690 |  | Enquiry / Bid Evaluation /Placing Purchase Order Valves | 54d | 2021-11-04 A | 2021-12-27 A | PRM-1640 | 100% |  |  | 7 DAYS W/O HOLIDAY | 8,283.94 | 8,283.94 | G9 | MAT | PC1470 | PRC | PROC | GEN | MECH | Gen | QEZ3 | GEN | MEP SUB | Bill-03 | B.3.01 |
| PRM-1750 |  | Manufacture / Fabrication by Supplier /FAT inspection-Valves | 135d | 2021-12-05 A | 2022-04-18 A | PRM-1690 | 100% |  |  | 7 DAYS W/O HOLIDAY | 6,650.35 | 6,650.35 | G9 | MAT | PC1480 | PRC | PROC | GEN | MECH | Gen | QEZ3 | GEN | MEP SUB | Bill-03 | B.3.01 |
| PRM-1750R |  | Manufacture / Fabrication by Supplier /FAT inspection-Valves | 228d | 2022-04-19 | 2022-12-02 | PRM-1690, PRM-1750 |  | 19d | 0d | 7 DAYS W/O HOLIDAY | 1,633.59 |  | G9 | MAT | PC1480 | PRC | PROC | GEN | MECH | Gen | QEZ3 | GEN | MEP SUB | Bill-03 | B.3.01 |
| PRM-1810 |  | Shipment / Delivery to Site Valves | 30d | 2022-12-03 | 2023-01-01 | PRM-1750, PRM-1750R |  | 19d | 0d | 7 DAYS W/O HOLIDAY | 33,135.78 |  | G9 | MAT | PC1490 | PRC | PROC | GEN | MECH | Gen | QEZ3 | GEN | MEP SUB | Bill-03 | B.3.01 |
|  | 9 | **Lifting Equipment** |  | 2021-08-02 | 2023-01-15 |  |  |  |  |  |  |  |  |  |  |  |  |  |  |  |  |  |  |  |  |
| PRM-1000 |  | Submit material Technical Submittal Over Head Cranes | 42d | 2021-08-02 A | 2021-09-28 A | G1100 FS+3d | 100% |  |  |  | 8,693.24 | 8,693.24 | G9 | MAT | PC1450 | PRC | PROC | GEN | MECH | Gen | QEZ3 | GEN | MEP SUB | Bill-03 | B.3.03 |
| PRM-1070 |  | Review and Comments from Engineer Over Head Cranes | 8d | 2021-09-29 A | 2021-10-10 A | PRM-1000 | 100% |  |  |  | 8,693.24 | 8,693.24 | G9 | MAT | PC1460 | PRC | PROC | GEN | MECH | Gen | QEZ3 | GEN | MEP SUB | Bill-03 | B.3.03 |
| PRM-1140 |  | Incorporate Comments and Resubmit Over Head Cranes | 94d | 2021-10-11 A | 2022-02-20 A | PRM-1070 | 100% |  |  |  | 8,693.24 | 8,693.24 | G9 | MAT | PC1450 | PRC | PROC | GEN | MECH | Gen | QEZ3 | GEN | MEP SUB | Bill-03 | B.3.03 |
| PRM-1210 |  | Review and Approval from Engineer Over Head Cranes | 42d | 2022-02-20 A | 2022-04-18 A | PRM-1140 | 100% |  |  |  | 6,954.59 | 6,954.59 | G9 | MAT | PC1460 | PRC | PROC | GEN | MECH | Gen | QEZ3 | GEN | MEP SUB | Bill-03 | B.3.03 |
| PRM-1210R |  | Review and Approval from Engineer Over Head Cranes | 5d | 2022-04-19 | 2022-04-25 | PRM-1140, PRM-1210 |  | 8d | 0d |  | 1,738.65 |  | G9 | MAT | PC1460 | PRC | PROC | GEN | MECH | Gen | QEZ3 | GEN | MEP SUB | Bill-03 | B.3.03 |
| PRM-1280 |  | Enquiry / Bid Evaluation /Placing Purchase Order Over Head Cranes | 10d | 2022-04-26 | 2022-05-05 | PRM-1210, PRM-1210R |  | 15d | 0d | 7 DAYS W/O HOLIDAY | 8,693.24 |  | G9 | MAT | PC1470 | PRC | PROC | GEN | MECH | Gen | QEZ3 | GEN | MEP SUB | Bill-03 | B.3.03 |
| PRM-1350 |  | Manufacture / Fabrication by Supplier /FAT inspection Over Head Cranes | 215d | 2022-05-06 | 2022-12-06 | PRM-1280 |  | 15d | 0d | 7 DAYS W/O HOLIDAY | 8,693.24 |  | G9 | MAT | PC1480 | PRC | PROC | GEN | MECH | Gen | QEZ3 | GEN | MEP SUB | Bill-03 | B.3.03 |
| PRM-1570 |  | Shipment / Delivery to Site -Over Head Cranes | 40d | 2022-12-07 | 2023-01-15 | PRM-1350 |  | 15d | 14d | 7 DAYS W/O HOLIDAY | 34,772.95 |  | G9 | MAT | PC1490 | PRC | PROC | GEN | MECH | Gen | QEZ3 | GEN | MEP SUB | Bill-03 | B.3.03 |
|  | 3 | **Penstock** |  | 2021-08-09 | 2022-10-25 |  |  |  |  |  |  |  |  |  |  |  |  |  |  |  |  |  |  |  |  |
| PRM-1910 |  | Submit material Technical Submittal Penstock | 54d | 2021-08-09 A | 2021-10-21 A | G1100 FS+10d | 100% |  |  |  | 11,440.52 | 11,440.52 | G9 | MAT | PC1450 | PRC | PROC | GEN | MECH | Gen | QEZ3 | GEN | MEP SUB | Bill-03 | B.3.03 |
| PRM-1920 |  | Review and Comments from Engineer Penstock | 8d | 2021-10-24 A | 2021-11-02 A | PRM-1910 | 100% |  |  |  | 11,440.52 | 11,440.52 | G9 | MAT | PC1460 | PRC | PROC | GEN | MECH | Gen | QEZ3 | GEN | MEP SUB | Bill-03 | B.3.03 |
| PRM-1922 |  | Incorporate Comments and Resubmit Penstock | 67d | 2021-11-03 A | 2022-02-03 A | PRM-1920 | 100% |  |  |  | 11,440.52 | 11,440.52 | G9 | MAT | PC1450 | PRC | PROC | GEN | MECH | Gen | QEZ3 | GEN | MEP SUB | Bill-03 | B.3.03 |
| PRM-1924 |  | Review and Approval from Engineer Penstock | 5d | 2022-02-06 A | 2022-02-13 A | PRM-1922 | 100% |  |  |  | 11,440.52 | 11,440.52 | G9 | MAT | PC1460 | PRC | PROC | GEN | MECH | Gen | QEZ3 | GEN | MEP SUB | Bill-03 | B.3.03 |
| PRM-1930 |  | Enquiry / Bid Evaluation /Placing Purchase Order Penstock | 1d | 2022-02-13 A | 2022-02-13 A | PRM-1924 | 100% |  |  | 7 DAYS W/O HOLIDAY | 11,440.52 | 11,440.52 | G9 | MAT | PC1470 | PRC | PROC | GEN | MECH | Gen | QEZ3 | GEN | MEP SUB | Bill-03 | B.3.03 |
| PRM-1940 |  | Manufacture / Fabrication by Supplier /FAT inspection Penstock | 65d | 2022-02-13 A | 2022-04-18 A | PRM-1930 | 100% |  |  | 7 DAYS W/O HOLIDAY | 10,144.31 | 10,144.31 | G9 | MAT | PC1480 | PRC | PROC | GEN | MECH | Gen | QEZ3 | GEN | MEP SUB | Bill-03 | B.3.03 |
| PRM-1940R |  | Manufacture / Fabrication by Supplier /FAT inspection Penstock | 150d | 2022-04-19 | 2022-09-15 | PRM-1930, PRM-1940 |  | 87d | 0d | 7 DAYS W/O HOLIDAY | 1,296.21 |  | G9 | MAT | PC1480 | PRC | PROC | GEN | MECH | Gen | QEZ3 | GEN | MEP SUB | Bill-03 | B.3.03 |
| PRM-1950 |  | Shipment / Delivery to Site Penstock | 40d | 2022-09-16 | 2022-10-25 | PRM-1940, PRM-1940R |  | 87d | 85d | 7 DAYS W/O HOLIDAY | 45,762.07 |  | G9 | MAT | PC1490 | PRC | PROC | GEN | MECH | Gen | QEZ3 | GEN | MEP SUB | Bill-03 | B.3.03 |

Notes:
- PRM-1450: Expenses: (New Expense) 8283.94
- PRM-1530: Expenses: (New Expense) 8283.94
- PRM-1590: Expenses: (New Expense) 8283.94
- PRM-1640: Expenses: (New Expense) 8283.94
- PRM-1690: Expenses: (New Expense) 8283.94
- PRM-1750: Expenses: (New Expense) 6650.35
- PRM-1750R: Expenses: (New Expense) 1633.59
- PRM-1810: Expenses: (New Expense) 33135.8
- PRM-1000: Expenses: (New Expense) 8693.24
- PRM-1070: Expenses: (New Expense) 8693.24
- PRM-1140: Expenses: (New Expense) 8693.24
- PRM-1210: Expenses: (New Expense) 6954.59
- PRM-1210R: Expenses: (New Expense) 1738.65
- PRM-1280: Expenses: (New Expense) 8693.24
- PRM-1350: Expenses: (New Expense) 8693.24
- PRM-1570: Expenses: (New Expense) 34772.9
- PRM-1910: Expenses: (New Expense) 11440.5
- PRM-1920: Expenses: (New Expense) 11440.5
- PRM-1922: Expenses: (New Expense) 11440.5
- PRM-1924: Expenses: (New Expense) 11440.5
- PRM-1930: Expenses: (New Expense) 11440.5
- PRM-1940: Expenses: (New Expense) 10144.3
- PRM-1940R: Expenses: (New Expense) 1296.21
- PRM-1950: Expenses: (New Expense) 45762.1

| ID | WBS | Activity | Duration | Start | Finish | Predecessors | Complete | Total float | Free float | Calendar | Resources | Cost | Actual cost | Bill Code | PRC-MTL | 釬珛測鎢杸遙 | 02 Phase | 03 Section | 05 Sub-section | 04 Discipline | 06 Zone | 01 Project | 07 Buildings & Ext. Works | 09 Subcontractors | 10 BOQ Cost | 12 BOQ-3 | AREA | 11 BOQ-2 | DELAY EVENT 02 | DELAY EVENT 03 | DELAY EVENT 04 | DELAY EVENT 01 |
| --- | --- | --- | --- | --- | --- | --- | --- | --- | --- | --- | --- | --- | --- | --- | --- | --- | --- | --- | --- | --- | --- | --- | --- | --- | --- | --- | --- | --- | --- | --- | --- | --- |
|  | 5 | **Potable Water & Wash Water system** |  | 2021-08-15 | 2022-11-21 |  |  |  |  |  |  |  |  |  |  |  |  |  |  |  |  |  |  |  |  |  |  |  |  |  |  |  |
| PRM-2050 |  | Submit material Technical Submittal Potable Water System | 35d | 2021-08-15 A | 2021-09-30 A | G1100 FS+16d | 100% |  |  |  |  | 20,426.21 | 20,426.21 | G9 | MAT | PC1450 | PRC | PROC | GEN | MECH | Gen | QEZ3 | GEN | MEP SUB | Bill-03 | B.3.03 |  |  |  |  |  |  |
| PRM-2060 |  | Review and Comments from Engineer Potable Water System | 5d | 2021-10-03 A | 2021-10-07 A | PRM-2050 | 100% |  |  |  |  | 20,426.21 | 20,426.21 | G9 | MAT | PC1460 | PRC | PROC | GEN | MECH | Gen | QEZ3 | GEN | MEP SUB | Bill-03 | B.3.03 |  |  |  |  |  |  |
| PRM-2062 |  | Incorporate Comments and Resubmit Potable Water System | 86d | 2021-10-10 A | 2022-02-06 A | PRM-2060 | 100% |  |  |  |  | 20,426.21 | 20,426.21 | G9 | MAT | PC1450 | PRC | PROC | GEN | MECH | Gen | QEZ3 | GEN | MEP SUB | Bill-03 | B.3.03 |  |  |  |  |  |  |
| PRM-2064 |  | Review and Approval from Engineer Potable Water System | 50d | 2022-02-07 A | 2022-04-18 A | PRM-2062 | 100% |  |  |  |  | 10,213.11 | 10,213.11 | G9 | MAT | PC1460 | PRC | PROC | GEN | MECH | Gen | QEZ3 | GEN | MEP SUB | Bill-03 | B.3.03 |  |  |  |  |  |  |
| PRM-2064R |  | Review and Approval from Engineer Potable Water System | 5d | 2022-04-19 | 2022-04-25 | PRM-2062, PRM-2064 |  | 45d | 0d |  |  | 10,213.1 |  | G9 | MAT | PC1460 | PRC | PROC | GEN | MECH | Gen | QEZ3 | GEN | MEP SUB | Bill-03 | B.3.03 |  |  |  |  |  |  |
| PRM-2070 |  | Enquiry / Bid Evaluation /Placing Purchase Order Potable Water System | 10d | 2022-04-26 | 2022-05-05 | PRM-2064, PRM-2064R |  | 67d | 0d | 7 DAYS W/O HOLIDAY |  | 20,426.21 |  | G9 | MAT | PC1470 | PRC | PROC | GEN | MECH | Gen | QEZ3 | GEN | MEP SUB | Bill-03 | B.3.03 |  |  |  |  |  |  |
| PRM-2080 |  | Manufacture / Fabrication by Supplier /FAT inspection Potable Water System | 160d | 2022-05-06 | 2022-10-12 | PRM-2070 |  | 67d | 0d | 7 DAYS W/O HOLIDAY |  | 20,426.21 |  | G9 | MAT | PC1480 | PRC | PROC | GEN | MECH | Gen | QEZ3 | GEN | MEP SUB | Bill-03 | B.3.03 |  |  |  |  |  |  |
| PRM-2090 |  | Shipment / Delivery to Site Potable Water System | 40d | 2022-10-13 | 2022-11-21 | PRM-2080 |  | 67d | 65d | 7 DAYS W/O HOLIDAY |  | 81,704.85 |  | G9 | MAT | PC1490 | PRC | PROC | GEN | MECH | Gen | QEZ3 | GEN | MEP SUB | Bill-03 | B.3.03 |  |  |  |  |  |  |
|  | CON | **CONSTRUCTION** |  | 2021-03-04 | 2023-04-13 |  |  |  |  |  |  |  |  |  |  |  |  |  |  |  |  |  |  |  |  |  |  |  |  |  |  |  |
|  | 7 | **CIVIL WORKS** |  | 2021-03-04 | 2023-04-13 |  |  |  |  |  |  |  |  |  |  |  |  |  |  |  |  |  |  |  |  |  |  |  |  |  |  |  |
| C1600 |  | Site Supervision | 259d | 2022-04-19 | 2023-04-13 | C1000 SS |  | 1d |  | 6 DAYS W HOLIDAY | SITE ENGINEER CIVIL [1554 h]; SITE ENGINEER MECHANICAL [1554 h]; SITE ENGINEER ELECTRICAL [1554 h]; SITE SUPERVISOR CIVIL [1554 h]; SITE SUPERVISOR MECHANICAL [1554 h]; SITE SUPERVISOR ELECTRICAL [1554 h] |  |  |  |  |  | CON |  |  |  |  |  |  |  | Bill-01 |  |  |  |  |  |  |  |
|  | 5 | **SURVEY** |  | 2021-07-31 | 2023-01-01 |  |  |  |  |  |  |  |  |  |  |  |  |  |  |  |  |  |  |  |  |  |  |  |  |  |  |  |
| C1000 |  | Site Access | 1d | 2021-07-31 A | 2021-07-31 A | PR-1020, PR-1010, G1800 | 100% |  |  | 6 DAYS W HOLIDAY | GENERAL LABOR [32 h] |  |  |  |  |  | CON |  |  |  |  |  |  |  | Bill-01 |  |  |  |  |  |  |  |
| C1610 |  | Conduct Topographical Survey | 29d | 2021-08-12 A | 2021-09-14 A | C1000 FS+10d | 100% |  |  | 6 DAYS W HOLIDAY | GENERAL LABOR [928 h] |  |  |  |  |  | CON |  |  |  |  |  |  |  | Bill-01 |  |  |  |  |  |  |  |
| C1620 |  | Conduct Geotechnical Survey | 9d | 2021-08-22 A | 2021-08-31 A | C1610 FS+15d, PR-1140, PR-1170, PR-1180 | 100% |  |  | 6 DAYS W HOLIDAY | GENERAL LABOR [288 h] |  |  |  |  |  | CON |  |  |  |  |  |  |  | Bill-01 |  |  |  |  |  |  |  |
| C1630 |  | CCTV Survey of Existing Pipe | 6d | 2022-12-26 | 2023-01-01 | C1620, PRM-2010, PRM-2010R |  | 89d |  | 6 DAYS W HOLIDAY | GENERAL LABOR [192 h] |  |  |  |  |  | CON |  |  |  |  |  |  |  | Bill-01 |  |  |  |  |  |  |  |
|  | 1 | **PUMP STATION WETWELL** |  | 2021-11-04 | 2023-02-02 |  |  |  |  |  |  |  |  |  |  |  |  |  |  |  |  |  |  |  |  |  |  |  |  |  |  |  |
| C1010 |  | Removal of Sand on Existing Shaft SH 3A | 139d | 2021-11-04 A | 2022-04-17 A | C1000, M-1005, M-1010, M-1015 | 100% |  |  | 6 DAYS W HOLIDAY | GENERAL LABOR [1112 h]; JCB [834 h]; DUMP TRUCK [834 h]; LOADER [834 h]; EXCAVATED MATERIAL [95 cu m] | 28,843.08 | 28,843.08 |  |  |  | CON |  |  |  |  |  |  |  | Bill-02 |  | S10 | B.2.05 | DE02 | DE03 | DE04 |  |
| C1020 |  | Modification of Bottom part of Existing Shaft for New PS Foundation area | 4d | 2022-04-19 | 2022-04-23 | C1010 SS |  | 0.33d | 0d | 6 DAYS W HOLIDAY | GENERAL LABOR [32 h]; EXCAVATOR [24 h]; CRANE [24 h] | 28,843.08 |  |  |  |  | CON |  |  |  |  |  |  |  | Bill-02 |  | S10 | B.2.05 | DE02 | DE03 | DE04 |  |
| C1030 |  | Concrete Screed if required | 1d | 2022-04-25 | 2022-04-25 | C1020 FS+1d |  | 0.33d | 0d | 6 DAYS W HOLIDAY |  | 44,005.2 |  |  |  |  | CON |  |  |  |  |  |  |  | Bill-02 |  | S10 | B.2.05 | DE02 | DE03 | DE04 |  |
| C1040 |  | Markings for Foundation and Setting Out | 1d | 2022-04-26 | 2022-04-26 | C1030, C1620 |  | 0.33d | 0d | 6 DAYS W HOLIDAY | GENERAL LABOR [48 h] | 509 |  |  |  |  | CON |  |  |  |  |  |  |  | Bill-02 |  | S10 | B.2.11 | DE02 | DE03 | DE04 |  |
| C1050 |  | 1st Cast : Steel Re bar work for Foundation | 2.67d | 2022-04-27 | 2022-04-30 | C1040, EN-2200, EN-2240, EN-2280, EN-2480, MS-1270, G1290, MS-1270R |  | 0.33d | 0d | 6 DAYS W HOLIDAY | GENERAL LABOR [128 h]; REINFORCED STEEL [5 tons] | 18,035.05 |  |  |  |  | CON |  |  |  |  |  |  |  | Bill-02 |  | S10 | B.2.05 | DE02 | DE03 | DE04 | DE01 |
| C1060 |  | 1st Cast : Form Work for Foundation | 3d | 2022-04-28 | 2022-05-05 | C1050 FF+2d |  | 0.33d | 0d | 6 DAYS W HOLIDAY | CARPENTER [330 h]; GENERAL LABOR [32 h] | 17,430 |  |  |  |  | CON |  |  |  |  |  |  |  | Bill-02 |  | S10 | B.2.05 | DE02 | DE03 | DE04 | DE01 |
| C1070 |  | 1st Cast : Concrete Pouring for Foundation | 3d | 2022-05-05 | 2022-05-09 | C1060 |  | 0.33d | 0d | 6 DAYS W HOLIDAY | GENERAL LABOR [32 h]; CIVIL MASON [330 h]; CONCRETE [60 cu m] | 63,587.14 |  |  |  |  | CON |  |  |  |  |  |  |  | Bill-02 |  | S10 | B.2.05 | DE02 | DE03 | DE04 | DE01 |
| C1080 |  | 1st Cast : Concrete Curing for Foundation | 3d | 2022-05-09 | 2022-05-12 | C1070 |  | 0.33d | 0d | 6 DAYS W HOLIDAY | GENERAL LABOR [48 h] | 1,803.5 |  |  |  |  | CON |  |  |  |  |  |  |  | Bill-02 |  | S10 | B.2.05 | DE02 | DE03 | DE04 | DE01 |
| C1090 |  | 1st Cast : Formwork Removal Foundation | 2d | 2022-05-12 | 2022-05-15 | C1080 |  | 0.33d | 0d | 6 DAYS W HOLIDAY | CARPENTER [330 h]; GENERAL LABOR [1000 h] | 2,164.2 |  |  |  |  | CON |  |  |  |  |  |  |  | Bill-02 |  | S10 | B.2.05 | DE02 | DE03 | DE04 | DE01 |
| C1100 |  | 2nd Cast : Steel Re bar work for Wall | 8d | 2022-05-15 | 2022-05-24 | C1090, EN-2440, EN-2400, EN-2360, EN-2680 |  | 0.33d | 0d | 6 DAYS W HOLIDAY | STEEL WORKER [812 h]; REINFORCED STEEL [2 tons] | 63,196 |  |  |  |  | CON |  |  |  |  |  |  |  | Bill-02 |  | S10 | B.2.05 | DE02 | DE03 | DE04 | DE01 |
| C1110 |  | 2nd Cast : Form Work for Wall | 9d | 2022-05-15 | 2022-05-25 | C1100 SS |  | 0.33d | 0d | 6 DAYS W HOLIDAY | CARPENTER [256 h] | 1,983.85 |  |  |  |  | CON |  |  |  |  |  |  |  | Bill-02 |  | S10 | B.2.05 | DE02 | DE03 | DE04 | DE01 |
| C1120 |  | 2nd Cast : Concrete for Wall | 2d | 2022-05-25 | 2022-05-28 | C1110 |  | 0.33d | 0d | 6 DAYS W HOLIDAY | GENERAL LABOR [450 h]; CIVIL MASON [224 h]; CONCRETE [28 cu m] | 211,199.7 |  |  |  |  | CON |  |  |  |  |  |  |  | Bill-02 |  | S10 | B.2.05 | DE02 | DE03 | DE04 | DE01 |
| C1130 |  | 3rd Cast : Steel Re bar work for Wall | 4d | 2022-05-28 | 2022-06-01 | C1120, EN-2800, EN-2600, EN-2640, EN-2560 |  | 0.33d | 0d | 6 DAYS W HOLIDAY | STEEL WORKER [128 h]; REINFORCED STEEL [2 tons] | 45,087.68 |  |  |  |  | CON |  |  |  |  |  |  |  | Bill-02 |  | S10 | B.2.05 | DE02 | DE03 | DE04 | DE01 |
| C1140 |  | 3rd Cast : Form Work for Wall | 4d | 2022-05-28 | 2022-06-01 | C1130 SS |  | 0.33d | 0d | 6 DAYS W HOLIDAY | CARPENTER [256 h] | 4,689.11 |  |  |  |  | CON |  |  |  |  |  |  |  | Bill-02 |  | S10 | B.2.05 | DE02 | DE03 | DE04 | DE01 |
| C1150 |  | 3rd Cast : Concrete Pouring for Wall | 4d | 2022-06-01 | 2022-06-06 | C1140 |  | 0.33d | 0d | 6 DAYS W HOLIDAY | GENERAL LABOR [2000 h]; CIVIL MASON [144 h]; CONCRETE [29 cu m] | 61,587.14 |  |  |  |  | CON |  |  |  |  |  |  |  | Bill-02 |  | S10 | B.2.05 | DE02 | DE03 | DE04 | DE01 |
| C1160 |  | 3rd Cast : Curing for Wall | 5d | 2022-06-06 | 2022-06-12 | C1150 |  | 0.33d | 0d | 6 DAYS W HOLIDAY | GENERAL LABOR [1000 h] | 2,000 |  |  |  |  | CON |  |  |  |  |  |  |  | Bill-02 |  | S10 | B.2.05 | DE02 | DE03 | DE04 | DE01 |
| C1162 |  | Leak Test | 28d | 2022-06-12 | 2022-07-18 | C1160 |  | 0.33d | 0d | 6 DAYS W HOLIDAY | GENERAL LABOR [896 h]; CIVIL MASON [896 h] | 1,262.2 |  |  |  |  | CON |  |  |  |  |  |  |  | Bill-02 |  | S10 | B.2.05 | DE02 | DE03 | DE04 | DE01 |
| C1230 |  | Pre Cast: Roof Slab Fabrication Works | 8d | 2022-07-18 | 2022-07-27 | C1162 SS, C1160, C1162, EN-2520, EN-2840, EN-2880, EN-2960, EN-2920 |  | 20.33d | 0d | 6 DAYS W HOLIDAY | GENERAL LABOR [256 h]; CIVIL MASON [256 h] | 13,526.3 |  |  |  |  | CON |  |  |  |  |  |  |  | Bill-02 |  | S10 | B.2.05 |  |  |  | DE01 |
| C1235 |  | Pre Cast: Roof Slab Installation Works | 4d | 2022-07-27 | 2022-08-01 | C1230 SS, C1230 |  | 20.33d | 0d | 6 DAYS W HOLIDAY | GENERAL LABOR [24 h]; CIVIL MASON [128 h]; CRANE [18 h] | 49,127.52 |  |  |  |  | CON |  |  |  |  |  |  |  | Bill-02 |  | S10 | B.2.05 |  |  |  | DE01 |
| C1590 |  | Backfilling Works | 30d | 2022-12-29 | 2023-02-02 | C1235 FS+85d, EN-3610 |  | 20.33d |  | 6 DAYS W HOLIDAY | JCB [180 h]; LOADER [180 h]; COMPACTOR [180 h]; GENERAL LABOR [240 h] | 87,919.5 |  |  |  |  | CON |  |  |  |  |  |  |  | Bill-02 |  | S10 | B.2.05 |  |  |  |  |

Notes:
- PRM-2050: Expenses: (New Expense) 20426.2
- PRM-2060: Expenses: (New Expense) 20426.2
- PRM-2062: Expenses: (New Expense) 20426.2
- PRM-2064: Expenses: (New Expense) 10213.1
- PRM-2064R: Expenses: (New Expense) 10213.1
- PRM-2070: Expenses: (New Expense) 20426.2
- PRM-2080: Expenses: (New Expense) 20426.2
- PRM-2090: Expenses: (New Expense) 81704.9
- C1010: Expenses: (New Expense) 28843.1
- C1020: Expenses: (New Expense) 28843.1
- C1030: Expenses: (New Expense) 44005.2
- C1040: Expenses: (New Expense) 509
- C1050: Expenses: (New Expense) 18035
- C1060: Expenses: (New Expense) 17430
- C1070: Expenses: (New Expense) 63587.1
- C1080: Expenses: (New Expense) 1803.5
- C1090: Expenses: (New Expense) 2164.2
- C1100: Expenses: (New Expense) 63196
- C1110: Expenses: (New Expense) 1983.85
- C1120: Expenses: (New Expense) 211200
- C1130: Expenses: (New Expense) 45087.7
- C1140: Expenses: (New Expense) 4689.11
- C1150: Expenses: (New Expense) 61587.1
- C1160: Expenses: (New Expense) 2000
- C1162: Expenses: (New Expense) 1262.2
- C1230: Expenses: (New Expense) 13526.3
- C1235: Expenses: (New Expense) 49127.5
- C1590: Expenses: (New Expense) 87919.5

| ID | WBS | Activity | Duration | Start | Finish | Predecessors | Complete | Total float | Free float | Calendar | Resources | Cost | Actual cost | Weightage | EXECUTIVE SUMMAR | PUMP STATION | 02 Phase | 10 BOQ Cost | 11 BOQ-2 | DELAY EVENT 02 | DELAY EVENT 03 | DELAY EVENT 04 | New Activity Code | AREA | DELAY EVENT 01 |
| --- | --- | --- | --- | --- | --- | --- | --- | --- | --- | --- | --- | --- | --- | --- | --- | --- | --- | --- | --- | --- | --- | --- | --- | --- | --- |
|  | 4 | **VALVE CHAMBER** |  | 2022-07-18 | 2022-11-01 |  |  |  |  |  |  |  |  |  |  |  |  |  |  |  |  |  |  |  |  |
| C1420 |  | Levelling , Compaction | 3d | 2022-07-18 | 2022-07-21 | C1162 |  | 0.33d | 0d | 6 DAYS W HOLIDAY | COMPACTOR [18 h]; GENERAL LABOR [96 h] | 23,470.56 |  | 145 | 40 | 35 | CON | Bill-02 | B.2.08 | DE02 | DE03 | DE04 |  |  |  |
| C1430 |  | Concrete Protection ,Blinding & Primer Paint | 1d | 2022-07-21 | 2022-07-23 | C1420 |  | 0.33d | 0d | 6 DAYS W HOLIDAY | JCB [6 h]; CIVIL MASON [112 h] | 5,410.5 |  | 277 | 40 | 35 | CON | Bill-02 | B.2.08 | DE02 | DE03 | DE04 |  |  |  |
| C1440 |  | Steel Reinf for Base & Kicker | 4d | 2022-07-23 | 2022-07-27 | C1430 |  | 0.33d | 0d | 6 DAYS W HOLIDAY | STEEL WORKER [64 h]; REINFORCED STEEL [3 tons] | 10,821.03 |  | 264 | 40 | 35 | CON | Bill-02 | B.2.08 | DE02 | DE03 | DE04 |  |  |  |
| C1450 |  | Form Work Base | 4d | 2022-07-27 | 2022-08-01 | C1440 |  | 0.33d | 0d | 6 DAYS W HOLIDAY | CARPENTER [500 h] | 34,942 |  | 119 | 40 | 35 | CON | Bill-02 | B.2.08 | DE02 | DE03 | DE04 |  |  |  |
| C1460 |  | Waterstop Fixation | 1d | 2022-08-01 | 2022-08-02 | C1450 |  | 0.33d | 0d | 6 DAYS W HOLIDAY | CARPENTER [8 h] | 11,542.4 |  | 132 | 40 | 35 | CON | Bill-02 | B.2.08 | DE02 | DE03 | DE04 |  |  |  |
| C1470 |  | Pour Concrete Floor Slab | 1d | 2022-08-02 | 2022-08-03 | C1460 |  | 0.33d | 0d | 6 DAYS W HOLIDAY | CIVIL MASON [112 h] | 10,821 |  | 53 | 40 | 35 | CON | Bill-02 | B.2.08 | DE02 | DE03 | DE04 |  |  |  |
| C1480 |  | Steel Reinf for Walls | 3d | 2022-08-03 | 2022-08-07 | C1470 |  | 0.33d | 0d | 6 DAYS W HOLIDAY | STEEL WORKER [96 h]; REINFORCED STEEL [2 tons] | 11,519.77 |  | 529 | 40 | 35 | CON | Bill-02 | B.2.08 | DE02 | DE03 | DE04 |  |  |  |
| C1490 |  | Form Work for Walls | 3d | 2022-08-07 | 2022-08-10 | C1480 |  | 0.33d | 0d | 6 DAYS W HOLIDAY | CARPENTER [48 h] | 1,127 |  | 198 | 40 | 35 | CON | Bill-02 | B.2.08 | DE02 | DE03 | DE04 |  |  |  |
| C1500 |  | Pour Concrete Walls | 1d | 2022-08-10 | 2022-08-11 | C1490 |  | 0.33d | 0d | 6 DAYS W HOLIDAY | CIVIL MASON [96 h] | 23,806.2 |  | 53 | 40 | 35 | CON | Bill-02 | B.2.08 | DE02 | DE03 | DE04 |  |  |  |
| C1510 |  | Removal of Formwork | 1d | 2022-08-11 | 2022-08-13 | C1500 |  | 0.33d | 0d | 6 DAYS W HOLIDAY | CARPENTER [16 h] | 6,290.39 |  | 119 | 40 | 35 | CON | Bill-02 | B.2.08 | DE02 | DE03 | DE04 |  |  |  |
| C1520 |  | Steel Reinf for Roof Slab | 2d | 2022-08-13 | 2022-08-15 | C1510 |  | 0.33d | 0d | 6 DAYS W HOLIDAY | STEEL WORKER [32 h]; REINFORCED STEEL [2 tons] | 59,036.08 |  | 529 | 40 | 35 | CON | Bill-02 | B.2.08 | DE02 | DE03 | DE04 |  |  |  |
| C1530 |  | Formworks for Roof Slab | 1d | 2022-08-15 | 2022-08-16 | C1520 |  | 0.33d | 0d | 6 DAYS W HOLIDAY | CARPENTER [8 h] | 5,590.87 |  | 198 | 40 | 35 | CON | Bill-02 | B.2.08 | DE02 | DE03 | DE04 |  |  |  |
| C1540 |  | Pour Concrete for Roof Slab | 1d | 2022-08-16 | 2022-08-17 | C1530 |  | 0.33d | 0d | 6 DAYS W HOLIDAY | CIVIL MASON [96 h] | 3,111.03 |  | 53 | 40 | 35 | CON | Bill-02 | B.2.08 | DE02 | DE03 | DE04 |  |  |  |
| C1550 |  | Removal of Roof Support | 3d | 2022-08-17 | 2022-08-21 | C1540 |  | 0.33d | 0d | 6 DAYS W HOLIDAY | CARPENTER [48 h] | 3,246.24 |  | 198 | 40 | 35 | CON | Bill-02 | B.2.08 | DE02 | DE03 | DE04 |  |  |  |
| C1560 |  | Coating Works Internally : Cemmentious Epoxy | 2d | 2022-08-21 | 2022-08-23 | C1550 |  | 0.33d | 0d | 6 DAYS W HOLIDAY | PAINTER [32 h] | 8,205.4 |  | 159 | 40 | 35 | CON | Bill-02 | B.2.08 | DE02 | DE03 | DE04 |  |  |  |
| C1570 |  | Concrete Protection Works Externally : Bituminous Paint | 3d | 2022-08-25 | 2022-08-29 | C1560 SS+4d |  | 0.33d | 0d | 6 DAYS W HOLIDAY | PAINTER [48 h] | 3,734.34 |  | 159 | 40 | 35 | CON | Bill-02 | B.2.08 | DE02 | DE03 | DE04 |  |  |  |
| C1580 |  | Backfilling | 55d | 2022-08-29 | 2022-11-01 | C1570 |  | 41.33d | 39.33d | 6 DAYS W HOLIDAY | JCB [30 h]; COMPACTOR [30 h]; GENERAL LABOR [1600 h] | 4,090.2 |  | 73 | 40 | 35 | CON | Bill-02 | B.2.08 | DE02 | DE03 | DE04 |  |  |  |
|  | 8 | **ELECTRICAL ROOM** |  | 2021-03-04 | 2022-06-07 |  |  |  |  |  |  |  |  |  |  |  |  |  |  |  |  |  |  |  |  |
|  | 1 | **SUB STRUCTURE** |  | 2021-03-04 | 2022-04-23 |  |  |  |  |  |  |  |  |  |  |  |  |  |  |  |  |  |  |  |  |
| CBS2570 |  | Earthworks & Excavation | 14d | 2021-03-04 A | 2021-03-20 A | EN-1720 | 100% |  |  | 6 DAYS W HOLIDAY | EXCAVATOR [42 h]; EXCAVATED MATERIAL [56 cu m] | 17,349.28 | 17,349.28 |  |  |  | CON | Bill-02 | B.2.06 |  |  |  | CC5560 | CL | DE01 |
| CBS2580 |  | Pouring Concrete : Blinding | 1d | 2021-12-22 A | 2021-12-22 A | CBS2570 | 100% |  |  | 6 DAYS W HOLIDAY | CIVIL MASON [96 h] | 1,442.8 | 1,442.8 |  |  |  | CON | Bill-02 | B.2.06 |  |  |  | CC5570 | CL | DE01 |
| CBS2600 |  | Water Proofing | 1d | 2021-12-23 A | 2021-12-23 A | CBS2580 | 100% |  |  | 6 DAYS W HOLIDAY |  | 12,263.8 | 12,263.8 |  |  |  | CON | Bill-02 | B.2.06 |  |  |  | CC5590 | CL | DE01 |
| CBS2590 |  | Curing | 1d | 2021-12-25 A | 2021-12-25 A | CBS2600 SS | 100% |  |  | 6 DAYS W HOLIDAY |  | 6,492.6 | 6,492.6 |  |  |  | CON | Bill-02 | B.2.06 |  |  |  | CC5580 | CL |  |
| CBS2610 |  | Pouring Concrete : Screed | 1d | 2021-12-25 A | 2021-12-25 A | CBS2600 | 100% |  |  | 6 DAYS W HOLIDAY | CIVIL MASON [112 h] | 38,324.16 | 38,324.16 |  |  |  | CON | Bill-02 | B.2.06 |  |  |  | CC5600 |  | DE01 |
| CBS2620 |  | Reinforemcent Steel [ Foundation ,Neck Column and Beams] | 12d | 2021-12-26 A | 2022-01-08 A | CBS2610, CBS2730 | 100% |  |  | 6 DAYS W HOLIDAY | STEEL WORKER [256 h]; REINFORCED STEEL [11 tons] | 7,304.13 | 7,304.13 |  |  |  | CON | Bill-02 | B.2.06 |  |  |  | CC5610 |  | DE01 |
| CBS2640 |  | Pouring Reinforce Concrete : [ Foundation ,Neck Column and Beams] | 1d | 2022-01-25 A | 2022-01-25 A | CBS2620 | 100% |  |  | 6 DAYS W HOLIDAY | STEEL WORKER [32 h] | 14,878.8 | 14,878.8 |  |  |  | CON | Bill-02 | B.2.06 |  |  |  | CC5630 |  | DE01 |
| CBS2740 |  | Formwork Cable Trench | 3d | 2022-02-17 A | 2022-02-20 A | CBS2730 | 100% |  |  | 6 DAYS W HOLIDAY | CARPENTER [64 h]; GENERAL LABOR [64 h] | 852.12 | 852.12 |  |  |  | CON | Bill-02 | B.2.06 |  |  |  | CC5730 |  | DE01 |
| CBS2680 |  | Cable Trench Area Backfilling | 4d | 2022-02-19 A | 2022-02-22 A | CBS2750, CBS2590, CBS2740 | 100% |  |  | 6 DAYS W HOLIDAY | COMPACTOR [32 h]; GENERAL LABOR [32 h] | 8,475.04 | 8,475.04 |  |  |  | CON | Bill-02 | B.2.06 |  |  |  | CC5670 |  | DE01 |
| CBS2690 |  | Pouring Concrete : Blinding | 4d | 2022-02-19 A | 2022-02-22 A | CBS2680 | 100% |  |  | 6 DAYS W HOLIDAY | CIVIL MASON [88 h]; GENERAL LABOR [8 h]; CONCRETE [16 cu m] | 39,677.11 | 39,677.11 |  |  |  | CON | Bill-02 | B.2.06 |  |  |  | CC5680 |  | DE01 |
| CBS2730 |  | Reinforemcent Steel Cable Trench | 2d | 2022-02-20 A | 2022-02-21 A | CBS2570 | 100% |  |  | 6 DAYS W HOLIDAY | GENERAL LABOR [8 h]; REINFORCED STEEL [2 tons] | 17,854.1 | 17,854.1 |  |  |  | CON | Bill-02 | B.2.06 |  |  |  | CC5720 |  | DE01 |
| CBS2750 |  | Pouring Reinforce Concrete : Cable Trench | 2d | 2022-02-20 A | 2022-02-21 A | CBS2730 SS | 100% |  |  | 6 DAYS W HOLIDAY | CIVIL MASON [112 h]; GENERAL LABOR [32 h]; CONCRETE [10 cu m] | 793.54 | 793.54 |  |  |  | CON | Bill-02 | B.2.06 |  |  |  | CC5740 |  | DE01 |
| CBS2700 |  | Curing | 1d | 2022-02-22 A | 2022-02-22 A | CBS2690 | 100% |  |  | 6 DAYS W HOLIDAY | GENERAL LABOR [47 h] | 2,164.2 | 2,164.2 |  |  |  | CON | Bill-02 | B.2.06 |  |  |  | CC5690 |  | DE01 |
| CBS2710 |  | Water Proofing | 1d | 2022-02-23 A | 2022-02-23 A | CBS2700 | 100% |  |  | 6 DAYS W HOLIDAY | PAINTER [8 h]; GENERAL LABOR [8 h] | 17,584.1 | 17,584.1 |  |  |  | CON | Bill-02 | B.2.06 |  |  |  | CC5700 |  | DE01 |
| CBS2630 |  | Formwork [ Foundation ,Neck Column and Beams] | 1d | 2022-04-18 A | 2022-04-18 A | CBS2620 | 100% |  |  | 6 DAYS W HOLIDAY | CARPENTER [128 h] | 13,706.56 | 13,706.56 |  |  |  | CON | Bill-02 | B.2.06 |  |  |  | CC5620 |  | DE01 |
| CBS2770 |  | Steel Reinforement Ground Slab | 1d | 2022-04-18 A | 2022-04-18 A | CBS2690 | 100% |  |  | 6 DAYS W HOLIDAY | GENERAL LABOR [32 h]; REINFORCED STEEL [2 tons] | 719.57 | 719.57 |  |  |  | CON | Bill-02 | B.2.06 |  |  |  | CC5760 |  | DE01 |
| CBS2650 |  | Steel Reinforement Ground Beam | 1d | 2022-04-19 | 2022-04-19 | CBS2640, CBS2630 |  | 146d | 0d | 6 DAYS W HOLIDAY | STEEL WORKER [32 h]; REINFORCED STEEL [2 tons] | 1,667.96 |  |  |  |  | CON | Bill-02 | B.2.06 |  |  |  | CC5640 |  | DE01 |
| CBS2760 |  | BackFilling Works up to Grade Level | 4d | 2022-04-19 | 2022-04-23 | CBS2750 |  | 146d | 1d | 6 DAYS W HOLIDAY | COMPACTOR [64 h]; GENERAL LABOR [32 h]; JCB [24 h] | 2,434.2 |  |  |  |  | CON | Bill-02 | B.2.06 |  |  |  | CC5750 |  | DE01 |
| CBS2770R |  | Steel Reinforement Ground Slab | 2d | 2022-04-19 | 2022-04-20 | CBS2770 |  | 158d | 0d | 6 DAYS W HOLIDAY | GENERAL LABOR [32 h]; REINFORCED STEEL [2 tons] | 479.71 |  |  |  |  | CON | Bill-02 | B.2.06 |  |  |  | CC5760 |  | DE01 |
| CBS2660 |  | Formwork Ground Beam | 1d | 2022-04-20 | 2022-04-20 | CBS2650 |  | 146d | 0d | 6 DAYS W HOLIDAY | CARPENTER [24 h] | 689.69 |  |  |  |  | CON | Bill-02 | B.2.06 |  |  |  | CC5650 |  | DE01 |
| CBS2670 |  | Pouring Reinforce Concrete : Ground Beam | 1d | 2022-04-21 | 2022-04-21 | CBS2660 |  | 146d | 0d | 6 DAYS W HOLIDAY | CIVIL MASON [112 h]; GENERAL LABOR [32 h]; CONCRETE [74 cu m] | 3,516.24 |  |  |  |  | CON | Bill-02 | B.2.06 |  |  |  | CC5660 |  | DE01 |
| CBS2780 |  | Pouring Reinforce Concrete : Ground Slab | 1d | 2022-04-21 | 2022-04-21 | CBS2770, CBS2770R |  | 158d | 19d | 6 DAYS W HOLIDAY | CIVIL MASON [112 h]; GENERAL LABOR [32 h]; CONCRETE [10 cu m] | 8,404.31 |  |  |  |  | CON | Bill-02 | B.2.06 |  |  |  | CC5770 |  | DE01 |
| CBS2720 |  | Pouring Concrete : Screed | 1d | 2022-04-23 | 2022-04-23 | CBS2710, CBS2670 |  | 146d | 1d | 6 DAYS W HOLIDAY | CIVIL MASON [88 h]; GENERAL LABOR [8 h]; CONCRETE [17 cu m] | 3,787.2 |  |  |  |  | CON | Bill-02 | B.2.06 |  |  |  | CC5710 |  | DE01 |

Notes:
- C1420: Expenses: (New Expense) 23470.6
- C1430: Expenses: (New Expense) 5410.5
- C1440: Expenses: (New Expense) 10821
- C1450: Expenses: (New Expense) 34942
- C1460: Expenses: (New Expense) 11542.4
- C1470: Expenses: (New Expense) 10821
- C1480: Expenses: (New Expense) 11519.8
- C1490: Expenses: (New Expense) 1127
- C1500: Expenses: (New Expense) 23806.2
- C1510: Expenses: (New Expense) 6290.39
- C1520: Expenses: (New Expense) 59036.1
- C1530: Expenses: (New Expense) 5590.87
- C1540: Expenses: (New Expense) 3111.03
- C1550: Expenses: (New Expense) 3246.24
- C1560: Expenses: (New Expense) 8205.4
- C1570: Expenses: (New Expense) 3734.34
- C1580: Expenses: (New Expense) 4090.2
- CBS2570: Expenses: (New Expense) 17349.3
- CBS2580: Expenses: (New Expense) 1442.8
- CBS2600: Expenses: (New Expense) 12263.8
- CBS2590: Expenses: (New Expense) 6492.6
- CBS2610: Expenses: (New Expense) 38324.2
- CBS2620: Expenses: (New Expense) 7304.13
- CBS2640: Expenses: (New Expense) 14878.8
- CBS2740: Expenses: (New Expense) 852.12
- CBS2680: Expenses: (New Expense) 8475.04
- CBS2690: Expenses: (New Expense) 39677.1
- CBS2730: Expenses: (New Expense) 17854.1
- CBS2750: Expenses: (New Expense) 793.54
- CBS2700: Expenses: (New Expense) 2164.2
- CBS2710: Expenses: (New Expense) 17584.1
- CBS2630: Expenses: (New Expense) 13706.6
- CBS2770: Expenses: (New Expense) 719.57
- CBS2650: Expenses: (New Expense) 1667.96
- CBS2760: Expenses: (New Expense) 2434.2
- CBS2770R: Expenses: (New Expense) 479.71
- CBS2660: Expenses: (New Expense) 689.69
- CBS2670: Expenses: (New Expense) 3516.24
- CBS2780: Expenses: (New Expense) 8404.31
- CBS2720: Expenses: (New Expense) 3787.2

| ID | WBS | Activity | Duration | Start | Finish | Predecessors | Complete | Total float | Free float | Calendar | Resources | Cost | Actual cost | New Activity Code | AREA | 02 Phase | 10 BOQ Cost | 11 BOQ-2 | Area/Department |
| --- | --- | --- | --- | --- | --- | --- | --- | --- | --- | --- | --- | --- | --- | --- | --- | --- | --- | --- | --- |
|  | 2 | **SUPER STRUCTURE** |  | 2022-04-05 | 2022-06-07 |  |  |  |  |  |  |  |  |  |  |  |  |  |  |
| CBS2790 |  | Steel Reinforement Column | 12d | 2022-04-05 A | 2022-04-18 A | CBS2600 FS+3d | 100% |  |  | 6 DAYS W HOLIDAY | GENERAL LABOR [16 h]; REINFORCED STEEL [7 tons] | 2,231.46 | 2,231.46 | CC5790 | CL | CON | Bill-02 | B.2.06 |  |
| CBS2800 |  | Formwork Column | 10d | 2022-04-07 A | 2022-04-18 A | CBS2590 FF, CBS2790 SS, CBS2600 FF | 100% |  |  | 6 DAYS W HOLIDAY | CARPENTER [48 h]; GENERAL LABOR [32 h] | 797.83 | 797.83 | CC5800 | CL | CON | Bill-02 | B.2.06 | ALM |
| CBS2810 |  | Pouring Reinforce Concrete : Column | 6d | 2022-04-12 A | 2022-04-18 A | CBS2800 SS | 100% |  |  | 6 DAYS W HOLIDAY | CIVIL MASON [88 h]; GENERAL LABOR [8 h]; CONCRETE [12 cu m] | 3,042.9 | 3,042.9 | CC5810 | CL | CON | Bill-02 | B.2.06 | ALM |
| CBS2790R |  | Steel Reinforement Column | 10d | 2022-04-19 | 2022-04-30 | CBS2600 FS+3d, CBS2790 |  | 139d | 0d | 6 DAYS W HOLIDAY | GENERAL LABOR [16 h]; REINFORCED STEEL [7 tons] | 743.82 |  | CC5790 | CL | CON | Bill-02 | B.2.06 |  |
| CBS2800R |  | Formwork Column | 4d | 2022-04-19 | 2022-04-23 | CBS2590 FF, CBS2790 SS, CBS2600 FF, CBS2800, CBS2790R SS |  | 139d | 0d | 6 DAYS W HOLIDAY | CARPENTER [48 h]; GENERAL LABOR [32 h] | 265.94 |  | CC5800 | CL | CON | Bill-02 | B.2.06 | ALM |
| CBS2810R |  | Pouring Reinforce Concrete : Column | 1d | 2022-04-24 | 2022-04-24 | CBS2800 SS, CBS2810, CBS2800R |  | 139d | 0d | 6 DAYS W HOLIDAY | CIVIL MASON [88 h]; GENERAL LABOR [8 h]; CONCRETE [12 cu m] | 1,014.3 |  | CC5810 | CL | CON | Bill-02 | B.2.06 | ALM |
| CBS2820 |  | Steel Reinforement Roof Beam and Slab | 8d | 2022-04-25 | 2022-05-07 | CBS2810, CBS2720, CBS2810R, CBS2760 |  | 145d | 0d | 6 DAYS W HOLIDAY | GENERAL LABOR [96 h]; REINFORCED STEEL [2 tons] | 9,612.04 |  | CC5820 | CL | CON | Bill-02 | B.2.06 | ALM |
| CBS2830 |  | Formwork Roof Beam and Slab | 7d | 2022-04-25 | 2022-05-05 | CBS2810, CBS2810R |  | 139d | 0d | 6 DAYS W HOLIDAY | CARPENTER [56 h]; GENERAL LABOR [56 h] | 180.35 |  | CC5830 | CL | CON | Bill-02 | B.2.06 | ALM |
| CBS2850 |  | Steel Reinforement Parapet | 8d | 2022-04-25 | 2022-05-07 | CBS2840 FF |  | 139d | 0d | 6 DAYS W HOLIDAY | GENERAL LABOR [96 h]; REINFORCED STEEL [2 tons] | 7,091.81 |  | CC5850 | CL | CON | Bill-02 | B.2.06 | ALM |
| CBS2840 |  | Pouring Reinforce Concrete : Roof Beam and Slab | 1d | 2022-05-07 | 2022-05-07 | CBS2830 |  | 139d | 0d | 6 DAYS W HOLIDAY | CIVIL MASON [88 h]; GENERAL LABOR [8 h]; CONCRETE [24 cu m] | 1,167.72 |  | CC5840 | CL | CON | Bill-02 | B.2.06 | ALM |
| CBS2860 |  | Formwork Parappet | 8d | 2022-05-08 | 2022-05-16 | CBS2850 |  | 139d | 0d | 6 DAYS W HOLIDAY | CARPENTER [256 h]; GENERAL LABOR [256 h] | 969.22 |  | CC5860 |  | CON | Bill-02 | B.2.06 |  |
| CBS2870 |  | Pouring Reinforce Concrete : Parappet | 1d | 2022-05-17 | 2022-05-17 | CBS2860 |  | 139d | 0d | 6 DAYS W HOLIDAY | CIVIL MASON [88 h]; GENERAL LABOR [8 h]; CONCRETE [12 cu m] | 3,381.55 |  | CC5870 |  | CON | Bill-02 | B.2.06 |  |
| CBS2880 |  | Block Works | 10d | 2022-05-18 | 2022-05-29 | CBS2870, CBS2780 |  | 139d | 0d | 6 DAYS W HOLIDAY | CIVIL MASON [420 h]; GENERAL LABOR [420 h]; CARPENTER [420 h]; BLOCKS [140 m²] | 5,635.95 |  | CC5880 |  | CON | Bill-02 | B.2.06 |  |
| CBS2890 |  | Roof Waterproofing Works | 4d | 2022-05-30 | 2022-06-02 | CBS2880 |  | 139d | 0d | 6 DAYS W HOLIDAY | PAINTER [64 h]; GENERAL LABOR [32 h] | 5,635.95 |  | CC5890 |  | CON | Bill-02 | B.2.06 |  |
| CBS2900 |  | Roofing Accessories Installation | 4d | 2022-06-04 | 2022-06-07 | CBS2890 |  | 139d | 0d | 6 DAYS W HOLIDAY | GENERAL LABOR [32 h] | 2,500 |  | CC5900 |  | CON | Bill-02 | B.2.06 |  |
|  | 7 | **FINISHING WORKS** |  | 2022-04-25 | 2022-05-26 |  |  |  |  |  |  |  |  |  |  |  |  |  |  |
| CBS2910 |  | External Plastering | 6d | 2022-04-25 | 2022-05-04 | CBS2810, CBS2810R |  | 160d | 15d | 6 DAYS W HOLIDAY | CIVIL MASON [192 h]; GENERAL LABOR [192 h] | 7,890.34 |  | CC5920 | CL | CON | Bill-02 | B.2.06 | ALM |
| CBS2920 |  | Internal Plastering | 6d | 2022-05-08 | 2022-05-14 | CBS2820 |  | 145d | 0d | 6 DAYS W HOLIDAY | CIVIL MASON [192 h]; GENERAL LABOR [192 h] | 7,284 |  | CC5930 | CL | CON | Bill-02 | B.2.06 | ALM |
| CBS2930 |  | Ceiling Painting | 3d | 2022-05-15 | 2022-05-17 | CBS2920, CBS2840 |  | 145d | 0d | 6 DAYS W HOLIDAY | PAINTER [96 h]; GENERAL LABOR [96 h] | 5,251.82 |  | CC5940 | CL | CON | Bill-02 | B.2.06 | ALM |
| CBS2940 |  | Internal Wall Painting | 4d | 2022-05-18 | 2022-05-22 | CBS2930 |  | 145d | 0d | 6 DAYS W HOLIDAY | PAINTER [224 h]; GENERAL LABOR [224 h] | 5,251.82 |  | CC5950 | CL | CON | Bill-02 | B.2.06 | ALM |
| CBS2950 |  | External Wall Painting | 4d | 2022-05-23 | 2022-05-26 | CBS2910, CBS2940 |  | 145d | 0d | 6 DAYS W HOLIDAY | PAINTER [224 h]; GENERAL LABOR [224 h] | 676.2 |  | CC5960 | CL | CON | Bill-02 | B.2.06 | ALM |
| CBS2960 |  | Application of Epoxy Painting | 2d | 2022-05-25 | 2022-05-26 | CBS2850, CBS2950 FF |  | 145d | 6d | 6 DAYS W HOLIDAY | PAINTER [96 h]; GENERAL LABOR [96 h] | 540.96 |  | CC5970 | CL | CON | Bill-02 | B.2.06 | ALM |
|  | 3 | **METAL & JOINERY WORKS** |  | 2022-06-04 | 2022-06-07 |  |  |  |  |  |  |  |  |  |  |  |  |  |  |
| CBS2970 |  | Window Installation | 4d | 2022-06-04 | 2022-06-07 | CBS2850, CBS2900 FF |  | 139d | 0d | 6 DAYS W HOLIDAY | GENERAL LABOR [32 h] | 14,202.61 |  | CC5990 | CL | CON | Bill-02 | B.2.06 | ALM |
| CBS2980 |  | Steel Door Installation | 4d | 2022-06-04 | 2022-06-07 | CBS2970 FF, CBS2960 |  | 139d | 87d | 6 DAYS W HOLIDAY | GENERAL LABOR [40 h] | 14,202.61 |  | CC6000 | CL | CON | Bill-02 | B.2.06 | ALM |

Notes:
- CBS2790: Expenses: (New Expense) 2231.46
- CBS2800: Expenses: (New Expense) 797.83
- CBS2810: Expenses: (New Expense) 3042.9
- CBS2790R: Expenses: (New Expense) 743.82
- CBS2800R: Expenses: (New Expense) 265.94
- CBS2810R: Expenses: (New Expense) 1014.3
- CBS2820: Expenses: (New Expense) 9612.04
- CBS2830: Expenses: (New Expense) 180.35
- CBS2850: Expenses: (New Expense) 7091.81
- CBS2840: Expenses: (New Expense) 1167.72
- CBS2860: Expenses: (New Expense) 969.22
- CBS2870: Expenses: (New Expense) 3381.55
- CBS2880: Expenses: (New Expense) 5635.95
- CBS2890: Expenses: (New Expense) 5635.95
- CBS2900: Expenses: (New Expense) 2500
- CBS2910: Expenses: (New Expense) 7890.34
- CBS2920: Expenses: (New Expense) 7284
- CBS2930: Expenses: (New Expense) 5251.82
- CBS2940: Expenses: (New Expense) 5251.82
- CBS2950: Expenses: (New Expense) 676.2
- CBS2960: Expenses: (New Expense) 540.96
- CBS2970: Expenses: (New Expense) 14202.6
- CBS2980: Expenses: (New Expense) 14202.6

| ID | WBS | Activity | Duration | Start | Finish | Predecessors | Total float | Free float | Calendar | Resources | Cost | 02 Phase | 10 BOQ Cost | 11 BOQ-2 | DELAY EVENT 01 |
| --- | --- | --- | --- | --- | --- | --- | --- | --- | --- | --- | --- | --- | --- | --- | --- |
|  | 6 | **STORM WATER NETWORKS** |  | 2022-11-03 | 2023-01-23 |  |  |  |  |  |  |  |  |  |  |
| CV3430 |  | Storm Water Pipe : Excavation Works | 4d | 2022-11-03 | 2022-12-28 | CV3060 | 25d | 0d | 6 DAYS W HOLIDAY | EXCAVATOR [24 h]; GENERAL LABOR [400 h]; JCB [24 h]; EXCAVATED MATERIAL [32 cu m] | 14,502.54 | CON | Bill-02 | B.2.07 |  |
| CV3440 |  | Storm Water Pipe : Bedding Works | 2d | 2022-12-29 | 2022-12-31 | CV3430 | 25d | 0d | 6 DAYS W HOLIDAY | EXCAVATOR [12 h]; GENERAL LABOR [16 h]; JCB [12 h] | 14,502.54 | CON | Bill-02 | B.2.07 |  |
| CV3450 |  | Storm Water Pipe : Underground Pipe Installation | 10d | 2023-01-01 | 2023-01-11 | CV3440 | 25d | 0d | 6 DAYS W HOLIDAY | GENERAL LABOR [80 h]; MECHANICAL TECHNICIAN [80 h] | 14,502.54 | CON | Bill-02 | B.2.07 |  |
| CV3460 |  | Storm Water Pipe : Pipe Hydro Testing | 4d | 2023-01-12 | 2023-01-16 | CV3450 | 25d | 0d | 6 DAYS W HOLIDAY | COMPACTOR [24 h]; GENERAL LABOR [64 h]; JCB [24 h] | 14,502.54 | CON | Bill-02 | B.2.07 |  |
| CV3470 |  | Storm Water Pipe : Surround Material Backfilling | 6d | 2023-01-17 | 2023-01-23 | CV3460 | 25d | 22d | 6 DAYS W HOLIDAY | COMPACTOR [36 h]; GENERAL LABOR [96 h]; JCB [36 h] | 14,502.54 | CON | Bill-02 | B.2.07 |  |
|  | 3 | **FORCE MAIN** |  | 2022-08-29 | 2023-01-18 |  |  |  |  |  |  |  |  |  |  |
| CV3052 |  | Force Main : Application of TDP | 10d | 2022-08-29 | 2022-09-10 | C1570 | 0.33d |  | 6 DAYS W HOLIDAY | EXCAVATOR [60 h]; GENERAL LABOR [160 h]; JCB [60 h] | 4,732.24 | CON | Bill-02 | B.2.09 |  |
| CV3054 |  | Force Main : Approval of TDP | 30d | 2022-09-11 | 2022-10-20 | CV3052 | 0d |  |  | EXCAVATOR [180 h]; GENERAL LABOR [240 h]; JCB [180 h] | 6,763.05 | CON | Bill-02 | B.2.09 |  |
| CV3056 |  | Force Main : Implementation of TDP | 10d | 2022-10-22 | 2022-11-01 | CV3054 | 1d | 0d | 6 DAYS W HOLIDAY | GENERAL LABOR [80 h]; MECHANICAL TECHNICIAN [80 h] | 7,214 | CON | Bill-02 | B.2.09 |  |
| CV3060 |  | Force Main : Excavation Works | 1d | 2022-11-02 | 2022-11-02 | CV3056, C1570 | 1d | 0d | 6 DAYS W HOLIDAY | EXCAVATOR [6 h]; GENERAL LABOR [16 h]; JCB [6 h]; EXCAVATED MATERIAL [8 cu m] | 10,821 | CON | Bill-02 | B.2.09 |  |
| CV3070 |  | Force Main : Bedding Works | 2d | 2022-11-03 | 2022-12-26 | CV3060 | 1d | 0d | 6 DAYS W HOLIDAY | EXCAVATOR [12 h]; GENERAL LABOR [16 h]; JCB [12 h] | 4,057.2 | CON | Bill-02 | B.2.09 |  |
| CV3080 |  | Force Main : Underground Pipe Installation | 10d | 2022-12-27 | 2023-01-07 | CV3070 | 3d | 0d | 6 DAYS W HOLIDAY | GENERAL LABOR [400 h]; MECHANICAL TECHNICIAN [80 h] | 27,494.12 | CON | Bill-02 | B.2.09 |  |
| CV3090 |  | Force Main : Pipe Hydro Testing | 4d | 2023-01-08 | 2023-01-11 | CV3080 | 23d | 0d | 6 DAYS W HOLIDAY | COMPACTOR [24 h]; GENERAL LABOR [64 h]; JCB [24 h] | 4,508.76 | CON | Bill-02 | B.2.09 |  |
| CV3130 |  | Force Main : Surround Material Backfilling | 6d | 2023-01-12 | 2023-01-18 | CV3090 | 23d | 20d | 6 DAYS W HOLIDAY | COMPACTOR [36 h]; GENERAL LABOR [96 h]; JCB [36 h] | 3,734.64 | CON | Bill-02 | B.2.09 |  |
|  | 22 | **FOUNDATION FOR ODOUR CONTROL UNIT** |  | 2022-12-27 | 2023-01-14 |  |  |  |  |  |  |  |  |  |  |
| CV2480 |  | OCU : Excavation / Surface preparation | 3d | 2022-12-27 | 2022-12-29 | CBS2780, CV3070 | 1d | 0d | 6 DAYS W HOLIDAY | LOADER [18 h]; EXCAVATOR [18 h]; GENERAL LABOR [640 h]; JCB [18 h]; DUMP TRUCK [18 h]; EXCAVATED MATERIAL [24 cu m] | 1,466.1 | CON | Bill-02 | B.2.11 | DE01 |
| CV2490 |  | OCU : Polythene sheet / Blinding | 1d | 2022-12-31 | 2022-12-31 | CV2480 | 1d | 0d | 6 DAYS W HOLIDAY | CIVIL MASON [88 h]; GENERAL LABOR [640 h] | 1,466.1 | CON | Bill-02 | B.2.11 |  |
| CV2500 |  | OCU : Protection Screed / Water Proofing | 2d | 2023-01-01 | 2023-01-02 | CV2490 | 1d | 0d | 6 DAYS W HOLIDAY | PAINTER [16 h]; CIVIL MASON [96 h]; GENERAL LABOR [640 h] | 1,466.1 | CON | Bill-02 | B.2.11 |  |
| CV2510 |  | OCU : Reinforcement, Shuttering & Concrete casting for Foundation | 8d | 2023-01-03 | 2023-01-11 | CV2500 | 1d | 0d | 6 DAYS W HOLIDAY | CARPENTER [64 h]; CIVIL MASON [144 h]; GENERAL LABOR [64 h]; CONCRETE [64 cu m] | 1,466.1 | CON | Bill-02 | B.2.11 |  |
| CV2520 |  | OCU : Waterproofing / Backfilling for External Sides of Foundation | 1d | 2023-01-12 | 2023-01-12 | CV2510 | 1d | 0d | 6 DAYS W HOLIDAY | PAINTER [8 h]; GENERAL LABOR [8 h] | 1,466.1 | CON | Bill-02 | B.2.11 |  |
| CV2530 |  | OCU : Epoxy Coating for foundation surface | 1d | 2023-01-14 | 2023-01-14 | CV2520 | 1d | 0d | 6 DAYS W HOLIDAY | PAINTER [16 h]; GENERAL LABOR [16 h] | 1,466.1 | CON | Bill-02 | B.2.11 |  |
|  | 16 | **POTABLE WATER TANK FOUNDATION** |  | 2022-04-19 | 2022-05-17 |  |  |  |  |  |  |  |  |  |  |
| CV2120 |  | Potable Tank : Excavation / Surface preparation | 4d | 2022-04-19 | 2022-04-23 | EN-2720 | 134d | 0d | 6 DAYS W HOLIDAY | LOADER [24 h]; EXCAVATOR [24 h]; GENERAL LABOR [128 h]; JCB [24 h]; DUMP TRUCK [24 h]; EXCAVATED MATERIAL [32 cu m] | 4,883.88 | CON | Bill-02 | B.2.11 | DE01 |
| CV2130 |  | Potable Tank : Polythene sheet / Blinding | 1d | 2022-04-24 | 2022-04-24 | CV2120 | 171d | 0d | 6 DAYS W HOLIDAY | CIVIL MASON [88 h]; GENERAL LABOR [8 h] | 1,292.21 | CON | Bill-02 | B.2.11 | DE01 |
| CV2140 |  | Potable Tank : Protection Screed / Water Proofing | 2d | 2022-04-25 | 2022-04-26 | CV2130 | 171d | 0d | 6 DAYS W HOLIDAY | PAINTER [16 h]; CIVIL MASON [96 h]; GENERAL LABOR [16 h] | 1,895.3 | CON | Bill-02 | B.2.11 | DE01 |
| CV2150 |  | Potable Tank : Reinforcement, Shuttering & Concrete casting for Foundation | 8d | 2022-04-27 | 2022-05-09 | CV2140 | 171d | 0d | 6 DAYS W HOLIDAY | CARPENTER [64 h]; CIVIL MASON [144 h]; GENERAL LABOR [64 h]; CONCRETE [64 cu m] | 6,763.15 | CON | Bill-02 | B.2.11 | DE01 |
| CV2160 |  | Potable Tank : Waterproofing / Backfilling for External Sides of Foundation | 4d | 2022-05-10 | 2022-05-14 | CV2150 | 171d | 0d | 6 DAYS W HOLIDAY | PAINTER [32 h]; GENERAL LABOR [32 h]; COMPACTOR [24 h] | 6,763.15 | CON | Bill-02 | B.2.11 | DE01 |
| CV2170 |  | Potable Tank : Epoxy Coating for foundation surface | 3d | 2022-05-15 | 2022-05-17 | CV2160 | 171d | 170d | 6 DAYS W HOLIDAY | PAINTER [48 h]; GENERAL LABOR [48 h] | 5,215.68 | CON | Bill-02 | B.2.11 | DE01 |

Notes:
- CV3430: Expenses: (New Expense) 14502.5
- CV3440: Expenses: (New Expense) 14502.5
- CV3450: Expenses: (New Expense) 14502.5
- CV3460: Expenses: (New Expense) 14502.5
- CV3470: Expenses: (New Expense) 14502.5
- CV3052: Expenses: (New Expense) 4732.24
- CV3054: Expenses: (New Expense) 6763.05
- CV3056: Expenses: (New Expense) 7214
- CV3060: Expenses: (New Expense) 10821
- CV3070: Expenses: (New Expense) 4057.2
- CV3080: Expenses: (New Expense) 27494.1
- CV3090: Expenses: (New Expense) 4508.76
- CV3130: Expenses: (New Expense) 3734.64
- CV2480: Expenses: (New Expense) 1466.1
- CV2490: Expenses: (New Expense) 1466.1
- CV2500: Expenses: (New Expense) 1466.1
- CV2510: Expenses: (New Expense) 1466.1
- CV2520: Expenses: (New Expense) 1466.1
- CV2530: Expenses: (New Expense) 1466.1
- CV2120: Expenses: (New Expense) 4883.88
- CV2130: Expenses: (New Expense) 1292.21
- CV2140: Expenses: (New Expense) 1895.3
- CV2150: Expenses: (New Expense) 6763.15
- CV2160: Expenses: (New Expense) 6763.15
- CV2170: Expenses: (New Expense) 5215.68

| ID | WBS | Activity | Duration | Start | Finish | Predecessors | Total float | Free float | Calendar | Resources | Cost | 02 Phase | 10 BOQ Cost | 11 BOQ-2 | DELAY EVENT 02 | DELAY EVENT 03 | DELAY EVENT 04 |
| --- | --- | --- | --- | --- | --- | --- | --- | --- | --- | --- | --- | --- | --- | --- | --- | --- | --- |
|  | 13 | **POTABLE WATER PUMP FOUNDATION** |  | 2022-08-29 | 2022-09-17 |  |  |  |  |  |  |  |  |  |  |  |  |
| CV1860 |  | Potable Water Pump : Excavation / Surface preparation | 4d | 2022-08-29 | 2022-09-03 | CV2120 FF, EN-2760, C1570 | 26.33d | 0d | 6 DAYS W HOLIDAY | LOADER [24 h]; EXCAVATOR [24 h]; GENERAL LABOR [128 h]; JCB [24 h]; DUMP TRUCK [24 h]; EXCAVATED MATERIAL [32 cu m] | 455.38 | CON | Bill-02 | B.2.11 | DE02 | DE03 | DE04 |
| CV1870 |  | Potable Water Pump : Polythene sheet / Blinding | 1d | 2022-09-03 | 2022-09-04 | CV1860 | 69.33d | 0d | 6 DAYS W HOLIDAY | CIVIL MASON [88 h]; GENERAL LABOR [8 h] | 455.38 | CON | Bill-02 | B.2.11 | DE02 | DE03 | DE04 |
| CV1880 |  | Potable Water Pump : Protection Screed / Water Proofing | 1d | 2022-09-04 | 2022-09-05 | CV1870 | 69.33d | 0d | 6 DAYS W HOLIDAY | PAINTER [8 h]; CIVIL MASON [88 h]; GENERAL LABOR [8 h] | 455.38 | CON | Bill-02 | B.2.11 | DE02 | DE03 | DE04 |
| CV1890 |  | Potable Water Pump : Reinforcement, Shuttering & Concrete casting for Foundation | 8d | 2022-09-05 | 2022-09-14 | CV1880 | 69.33d | 0d | 6 DAYS W HOLIDAY | CARPENTER [64 h]; CIVIL MASON [144 h]; GENERAL LABOR [64 h]; CONCRETE [64 cu m] | 455.38 | CON | Bill-02 | B.2.11 | DE02 | DE03 | DE04 |
| CV1900 |  | Potable Water Pump : Waterproofing / Backfilling for External Sides of Foundation | 1d | 2022-09-14 | 2022-09-15 | CV1890 | 69.33d | 0d | 6 DAYS W HOLIDAY | PAINTER [8 h]; GENERAL LABOR [8 h]; COMPACTOR [6 h] | 455.38 | CON | Bill-02 | B.2.11 | DE02 | DE03 | DE04 |
| CV1910 |  | Potable Water Pump : Epoxy Coating for foundation surface | 1d | 2022-09-15 | 2022-09-17 | CV1900 | 69.33d | 68.33d | 6 DAYS W HOLIDAY | PAINTER [16 h]; GENERAL LABOR [16 h] | 455.38 | CON | Bill-02 | B.2.11 | DE02 | DE03 | DE04 |
|  | 21 | **FUEL PUMP FOUNDATION** |  | 2022-09-03 | 2022-09-17 |  |  |  |  |  |  |  |  |  |  |  |  |
| CV2360 |  | Fuel Transfer Pump : Excavation / Surface preparation | 3d | 2022-09-03 | 2022-09-06 | CV1860, C1570, C1570 FF | 26.33d | 0d | 6 DAYS W HOLIDAY | LOADER [18 h]; EXCAVATOR [18 h]; GENERAL LABOR [48 h]; EXCAVATED MATERIAL [24 cu m] | 229.95 | CON | Bill-02 | B.2.11 |  |  |  |
| CV2370 |  | Fuel Transfer Pump : Polythene sheet / Blinding | 1d | 2022-09-06 | 2022-09-07 | CV2360 | 32.33d | 0d | 6 DAYS W HOLIDAY | CIVIL MASON [88 h]; GENERAL LABOR [8 h] | 229.95 | CON | Bill-02 | B.2.11 |  |  |  |
| CV2380 |  | Fuel Transfer Pump : Protection Screed / Water Proofing | 1d | 2022-09-07 | 2022-09-08 | CV2370 | 32.33d | 0d | 6 DAYS W HOLIDAY | PAINTER [8 h]; CIVIL MASON [88 h]; GENERAL LABOR [8 h] | 229.95 | CON | Bill-02 | B.2.11 |  |  |  |
| CV2390 |  | Fuel Transfer Pump : Reinforcement, Shuttering & Concrete casting for Foundation | 4d | 2022-09-08 | 2022-09-13 | CV2380 | 32.33d | 0d | 6 DAYS W HOLIDAY | CIVIL MASON [112 h]; CARPENTER [32 h]; GENERAL LABOR [32 h]; CONCRETE [32 cu m] | 229.95 | CON | Bill-02 | B.2.11 |  |  |  |
| CV2400 |  | Fuel Transfer Pump : Waterproofing / Backfilling for External Sides of Foundation | 2d | 2022-09-13 | 2022-09-15 | CV2390 | 32.33d | 0d | 6 DAYS W HOLIDAY | PAINTER [16 h]; GENERAL LABOR [16 h]; COMPACTOR [12 h] | 229.95 | CON | Bill-02 | B.2.11 |  |  |  |
| CV2410 |  | Fuel Transfer Pump : Epoxy Coating for foundation surface | 1d | 2022-09-15 | 2022-09-17 | CV2400 | 32.33d | 7.33d | 6 DAYS W HOLIDAY | PAINTER [16 h]; GENERAL LABOR [16 h] | 229.95 | CON | Bill-02 | B.2.11 |  |  |  |
|  | 20 | **FUEL OIL STORAGE TANK BUND** |  | 2022-09-06 | 2022-09-24 |  |  |  |  |  |  |  |  |  |  |  |  |
| CV2300 |  | Fuel Storage Tank : Excavation / Surface preparation | 4d | 2022-09-06 | 2022-09-11 | CV2360, C1570 | 26.33d | 0d | 6 DAYS W HOLIDAY | LOADER [24 h]; EXCAVATOR [24 h]; GENERAL LABOR [128 h]; JCB [24 h]; DUMP TRUCK [24 h]; EXCAVATED MATERIAL [32 cu m] | 728.62 | CON | Bill-02 | B.2.11 |  |  |  |
| CV2310 |  | Fuel Storage Tank : Polythene sheet / Blinding | 1d | 2022-09-11 | 2022-09-12 | CV2300 | 26.33d | 0d | 6 DAYS W HOLIDAY | CIVIL MASON [88 h]; GENERAL LABOR [8 h] | 728.62 | CON | Bill-02 | B.2.11 |  |  |  |
| CV2320 |  | Fuel Storage Tank : Protection Screed / Water Proofing | 1d | 2022-09-12 | 2022-09-13 | CV2310 | 26.33d | 0d | 6 DAYS W HOLIDAY | PAINTER [8 h]; CIVIL MASON [88 h]; GENERAL LABOR [8 h] | 728.62 | CON | Bill-02 | B.2.11 |  |  |  |
| CV2330 |  | Fuel Storage Tank : Reinforcement, Shuttering & Concrete casting for Foundation | 4d | 2022-09-13 | 2022-09-18 | CV2320 | 26.33d | 0d | 6 DAYS W HOLIDAY | CIVIL MASON [112 h]; CARPENTER [32 h]; GENERAL LABOR [32 h]; CONCRETE [32 cu m] | 728.62 | CON | Bill-02 | B.2.11 |  |  |  |
| CV2340 |  | Fuel Storage Tank : Waterproofing / Backfilling for External Sides of Foundation | 3d | 2022-09-18 | 2022-09-21 | CV2330 | 26.33d | 0d | 6 DAYS W HOLIDAY | PAINTER [24 h]; GENERAL LABOR [24 h]; COMPACTOR [18 h] | 728.62 | CON | Bill-02 | B.2.11 |  |  |  |
| CV2350 |  | Fuel Storage Tank : Epoxy Coating for foundation surface | 2d | 2022-09-21 | 2022-09-24 | CV2340 | 26.33d | 1.33d | 6 DAYS W HOLIDAY | PAINTER [32 h]; GENERAL LABOR [32 h] | 728.62 | CON | Bill-02 | B.2.11 |  |  |  |
|  | 24 | **FOUNDATION FOR GENERATOR UNIT** |  | 2022-09-06 | 2022-09-29 |  |  |  |  |  |  |  |  |  |  |  |  |
| CV2660 |  | Generator Foundation : Excavation and Sub-grade compaction | 4d | 2022-09-06 | 2022-09-11 | CV2300 SS | 27.33d | 0d | 6 DAYS W HOLIDAY | LOADER [24 h]; EXCAVATOR [24 h]; GENERAL LABOR [128 h]; JCB [24 h]; DUMP TRUCK [24 h]; EXCAVATED MATERIAL [32 cu m] | 251.85 | CON | Bill-02 | B.2.11 |  |  |  |
| CV2670 |  | Generator Foundation : Blinding and Water Proofing | 1d | 2022-09-11 | 2022-09-12 | CV2660 | 27.33d | 0d | 6 DAYS W HOLIDAY | CIVIL MASON [88 h]; GENERAL LABOR [8 h] | 251.85 | CON | Bill-02 | B.2.11 |  |  |  |
| CV2680 |  | Generator Foundation : Rebars installation for Foundation Footings | 4d | 2022-09-12 | 2022-09-17 | CV2670 | 27.33d | 0d | 6 DAYS W HOLIDAY | GENERAL LABOR [64 h] | 251.85 | CON | Bill-02 | B.2.11 |  |  |  |
| CV2690 |  | Generator Foundation : Forworks installation for Foundation Footings | 2d | 2022-09-17 | 2022-09-19 | CV2680 | 27.33d | 0d | 6 DAYS W HOLIDAY | CARPENTER [32 h]; GENERAL LABOR [16 h] | 251.85 | CON | Bill-02 | B.2.11 |  |  |  |
| CV2700 |  | Generator Foundation : Concrete Pouring for Foundation Footings | 1d | 2022-09-19 | 2022-09-20 | CV2690 | 27.33d | 0d | 6 DAYS W HOLIDAY | CIVIL MASON [88 h]; GENERAL LABOR [8 h]; CONCRETE [22 cu m] | 251.85 | CON | Bill-02 | B.2.11 |  |  |  |
| CV2710 |  | Generator Foundation : Curing and Formworks Removal for Foundation Footings | 4d | 2022-09-20 | 2022-09-25 | CV2700 | 27.33d | 0d | 6 DAYS W HOLIDAY | CARPENTER [32 h]; GENERAL LABOR [32 h] | 251.85 | CON | Bill-02 | B.2.11 |  |  |  |
| CV2760 |  | Generator Foundation : Epoxy Coating | 4d | 2022-09-25 | 2022-09-29 | CV2710 | 27.33d | 2.33d | 6 DAYS W HOLIDAY | PAINTER [64 h]; GENERAL LABOR [64 h] | 251.85 | CON | Bill-02 | B.2.11 |  |  |  |

Notes:
- CV1860: Expenses: (New Expense) 455.38
- CV1870: Expenses: (New Expense) 455.38
- CV1880: Expenses: (New Expense) 455.38
- CV1890: Expenses: (New Expense) 455.38
- CV1900: Expenses: (New Expense) 455.38
- CV1910: Expenses: (New Expense) 455.38
- CV2360: Expenses: (New Expense) 229.95
- CV2370: Expenses: (New Expense) 229.95
- CV2380: Expenses: (New Expense) 229.95
- CV2390: Expenses: (New Expense) 229.95
- CV2400: Expenses: (New Expense) 229.95
- CV2410: Expenses: (New Expense) 229.95
- CV2300: Expenses: (New Expense) 728.62
- CV2310: Expenses: (New Expense) 728.62
- CV2320: Expenses: (New Expense) 728.62
- CV2330: Expenses: (New Expense) 728.62
- CV2340: Expenses: (New Expense) 728.62
- CV2350: Expenses: (New Expense) 728.62
- CV2660: Expenses: (New Expense) 251.85
- CV2670: Expenses: (New Expense) 251.85
- CV2680: Expenses: (New Expense) 251.85
- CV2690: Expenses: (New Expense) 251.85
- CV2700: Expenses: (New Expense) 251.85
- CV2710: Expenses: (New Expense) 251.85
- CV2760: Expenses: (New Expense) 251.85

| ID | WBS | Activity | Duration | Start | Finish | Predecessors | Total float | Free float | Calendar | Resources | Cost | 02 Phase | 10 BOQ Cost | 11 BOQ-2 | New Activity Code |
| --- | --- | --- | --- | --- | --- | --- | --- | --- | --- | --- | --- | --- | --- | --- | --- |
|  | 2 | **FOUNDATION FOR GUARD ROOM** |  | 2022-09-11 | 2022-10-05 |  |  |  |  |  |  |  |  |  |  |
| CV3320 |  | Guard Room Foundation : Excavation and Sub-grade compaction | 4d | 2022-09-11 | 2022-09-15 | G1290, PR-1140, CV2660, PR-1010 | 42.33d | 0d | 6 DAYS W HOLIDAY | GENERAL LABOR [128 h]; EXCAVATOR [24 h]; DUMP TRUCK [24 h]; JCB [24 h]; EXCAVATED MATERIAL [32 cu m] | 1,076.44 | CON | Bill-02 | B.2.11 |  |
| CV3330 |  | Guard Room Foundation : Blinding and Water Proofing | 1d | 2022-09-15 | 2022-09-17 | CV3320 | 42.33d | 0d | 6 DAYS W HOLIDAY | PAINTER [16 h]; GENERAL LABOR [8 h] | 1,076.44 | CON | Bill-02 | B.2.11 |  |
| CV3390 |  | Guard Room Foundation : Rebars installation for Pedestal | 4d | 2022-09-17 | 2022-09-21 | CV3330 | 42.33d | 0d | 6 DAYS W HOLIDAY | GENERAL LABOR [64 h] | 1,076.44 | CON | Bill-02 | B.2.11 |  |
| CV3400 |  | Guard Room Foundation : Forworks installation for Pedestal | 3d | 2022-09-21 | 2022-09-25 | CV3390 | 42.33d | 0d | 6 DAYS W HOLIDAY | CARPENTER [48 h]; GENERAL LABOR [24 h] | 1,076.44 | CON | Bill-02 | B.2.11 |  |
| CV3410 |  | Guard Room Foundation : Concrete Pouring for Pedestal | 1d | 2022-09-25 | 2022-09-26 | CV3400 | 42.33d | 0d | 6 DAYS W HOLIDAY | CIVIL MASON [88 h]; GENERAL LABOR [8 h]; CONCRETE [18 cu m] | 1,076.44 | CON | Bill-02 | B.2.11 |  |
| CV3420 |  | Guard Room Foundation : Curing and Formworks Removal for Pedestal | 4d | 2022-09-26 | 2022-10-01 | CV3410 | 42.33d | 0d | 6 DAYS W HOLIDAY | GENERAL LABOR [32 h]; CARPENTER [32 h] | 1,076.44 | CON | Bill-02 | B.2.11 |  |
| CV3380 |  | Guard Room Foundation : Epoxy Coating | 4d | 2022-10-01 | 2022-10-05 | CV3420 | 42.33d | 0d | 6 DAYS W HOLIDAY | PAINTER [64 h]; GENERAL LABOR [64 h] | 1,076.44 | CON | Bill-02 | B.2.11 |  |
|  | 7 | **EXTERNAL CABLING** |  | 2023-01-08 | 2023-02-18 |  |  |  |  |  |  |  |  |  |  |
| CV3100 |  | External Works : Excavation Works for Cable Trench | 8d | 2023-01-08 | 2023-01-16 | CV3060, CV3080 | 3d | 0d | 6 DAYS W HOLIDAY | EXCAVATOR [48 h]; GENERAL LABOR [128 h]; JCB [48 h]; EXCAVATED MATERIAL [64 cu m] | 6,932.52 | CON | Bill-02 | B.2.11 |  |
| CV3110 |  | External Works : Bedding Works | 8d | 2023-01-12 | 2023-01-21 | CV3100 SS+4d | 3d | 0d | 6 DAYS W HOLIDAY | COMPACTOR [48 h]; GENERAL LABOR [64 h] | 6,932.52 | CON | Bill-02 | B.2.02 |  |
| CV3120 |  | External Works : Cable Laying | 16d | 2023-01-17 | 2023-02-04 | CV3100 SS, CV3110 SS+4d | 15d | 12d | 6 DAYS W HOLIDAY | GENERAL LABOR [256 h]; ELECTRICAL TECHNICIAN [256 h] | 125,811.15 | CON | Bill-02 | B.2.02 |  |
| CV3140 |  | External Works : Laying Cable Tiles | 22d | 2023-01-22 | 2023-02-15 | CV3130 FF+4d, CV3110 | 3d | 0d | 6 DAYS W HOLIDAY | GENERAL LABOR [176 h]; ELECTRICAL TECHNICIAN [176 h] | 3,466.26 | CON | Bill-02 | B.2.11 |  |
| CV3150 |  | External Works : Backfilling | 14d | 2023-02-02 | 2023-02-18 | CV3160 SS | 48d |  | 6 DAYS W HOLIDAY | COMPACTOR [84 h]; GENERAL LABOR [224 h]; JCB [84 h] | 4,852.77 | CON | Bill-02 | B.2.02 |  |
| CV3160 |  | External Works : Warning Plastic Tape | 14d | 2023-02-02 | 2023-02-18 | CV3140 FF+2d | 3d | 0d | 6 DAYS W HOLIDAY | GENERAL LABOR [112 h]; ELECTRICAL TECHNICIAN [112 h] | 2,773.01 | CON | Bill-02 | B.2.02 |  |
|  | 9 | **HARDSCAPING AND LANDSCAPING** |  | 2023-02-19 | 2023-04-11 |  |  |  |  |  |  |  |  |  |  |
| CBS3060 |  | Construction of soft and hard Landscaping | 45d | 2023-02-19 | 2023-04-11 | CV3130, CV3160, CV3520, CV3470, CV3120, EN-3040 | 3d |  | 6 DAYS W HOLIDAY | CIVIL MASON [480 h]; GENERAL LABOR [480 h] | 225,117.29 | CON | Bill-02 | B.2.02 | CC6540 |
|  | 30 | **ACCESS ROAD** |  | 2023-01-22 | 2023-03-13 |  |  |  |  |  |  |  |  |  |  |
| CV3190 |  | Access Road : Sub-grade Course | 8d | 2023-01-22 | 2023-01-30 | CV3110, EN-3040 | 28d | 0d | 6 DAYS W HOLIDAY | GENERAL LABOR [192 h] | 65,520 | CON | Bill-02 | B.2.05 |  |
| CV3200 |  | Access Road : Sub-Base Course | 8d | 2023-01-31 | 2023-02-08 | CV3190 | 28d | 0d | 6 DAYS W HOLIDAY | GENERAL LABOR [192 h] | 65,520 | CON | Bill-02 | B.2.05 |  |
| CV3210 |  | Access Road : Base Concrete to install Flush Curbstone | 12d | 2023-02-09 | 2023-02-22 | CV3200 | 28d | 0d | 6 DAYS W HOLIDAY | CIVIL MASON [96 h]; GENERAL LABOR [96 h]; CONCRETE [96 cu m] | 65,520 | CON | Bill-02 | B.2.05 |  |
| CV3220 |  | Access Road : Installation of Flush Curbstone | 6d | 2023-02-23 | 2023-03-01 | CV3210 | 28d | 0d | 6 DAYS W HOLIDAY | CIVIL MASON [96 h]; CARPENTER [96 h]; GENERAL LABOR [96 h] | 65,519.75 | CON | Bill-02 | B.2.05 |  |
| CV3230 |  | Access Road : Applying MC Tack Coat | 2d | 2023-03-02 | 2023-03-04 | CV3220 | 28d | 0d | 6 DAYS W HOLIDAY | CIVIL MASON [96 h]; CARPENTER [16 h]; GENERAL LABOR [16 h] | 65,519.75 | CON | Bill-02 | B.2.05 |  |
| CV3240 |  | Access Road : Asphalting Works (Base Course) | 2d | 2023-03-05 | 2023-03-06 | CV3230 | 28d | 0d | 6 DAYS W HOLIDAY | CIVIL MASON [96 h]; CARPENTER [16 h]; GENERAL LABOR [16 h]; ASPHALT [158.33] | 81,221 | CON | Bill-02 | B.2.05 |  |
| CV3250 |  | Access Road : Asphalting Works (Intermediate Course) | 2d | 2023-03-07 | 2023-03-08 | CV3240 | 28d | 0d | 6 DAYS W HOLIDAY | CIVIL MASON [96 h]; CARPENTER [16 h]; GENERAL LABOR [16 h]; ASPHALT [158] | 65,519.75 | CON | Bill-02 | B.2.01 |  |
| CV3260 |  | Access Road : Asphalting Works (Wearing Course) | 2d | 2023-03-09 | 2023-03-11 | CV3250 | 28d | 0d | 6 DAYS W HOLIDAY | CIVIL MASON [96 h]; CARPENTER [16 h]; GENERAL LABOR [16 h]; ASPHALT [158] | 65,519.75 | CON | Bill-02 | B.2.01 |  |
| CV3270 |  | Access Road : Road Markings & Signage | 2d | 2023-03-12 | 2023-03-13 | CV3260 | 28d |  | 6 DAYS W HOLIDAY | CIVIL MASON [96 h]; CARPENTER [16 h]; GENERAL LABOR [16 h] | 65,519.75 | CON | Bill-02 | B.2.01 |  |

Notes:
- CV3320: Expenses: (New Expense) 1076.44
- CV3330: Expenses: (New Expense) 1076.44
- CV3390: Expenses: (New Expense) 1076.44
- CV3400: Expenses: (New Expense) 1076.44
- CV3410: Expenses: (New Expense) 1076.44
- CV3420: Expenses: (New Expense) 1076.44
- CV3380: Expenses: (New Expense) 1076.44
- CV3100: Expenses: (New Expense) 6932.52
- CV3110: Expenses: (New Expense) 6932.52
- CV3120: Expenses: (New Expense) 125811
- CV3140: Expenses: (New Expense) 3466.26
- CV3150: Expenses: (New Expense) 4852.77
- CV3160: Expenses: (New Expense) 2773.01
- CBS3060: Expenses: (New Expense) 225117
- CV3190: Expenses: (New Expense) 65520
- CV3200: Expenses: (New Expense) 65520
- CV3210: Expenses: (New Expense) 65520
- CV3220: Expenses: (New Expense) 65519.8
- CV3230: Expenses: (New Expense) 65519.8
- CV3240: Expenses: (New Expense) 81221
- CV3250: Expenses: (New Expense) 65519.8
- CV3260: Expenses: (New Expense) 65519.8
- CV3270: Expenses: (New Expense) 65519.8

| ID | WBS | Activity | Duration | Start | Finish | Predecessors | Complete | Total float | Free float | Calendar | Resources | Cost | Actual cost | 02 Phase | 10 BOQ Cost | 11 BOQ-2 | Unit | Quantity | Prod.Rate | Water works | Bill Code | user_text1 | 釬珛測鎢杸遙 | 03 Section | 05 Sub-section | 04 Discipline | 06 Zone | 01 Project | 07 Buildings & Ext. Works | 09 Subcontractors | 12 BOQ-3 |
| --- | --- | --- | --- | --- | --- | --- | --- | --- | --- | --- | --- | --- | --- | --- | --- | --- | --- | --- | --- | --- | --- | --- | --- | --- | --- | --- | --- | --- | --- | --- | --- |
|  | 31 | **BOUNDARY WALLS** |  | 2021-12-25 | 2022-06-23 |  |  |  |  |  |  |  |  |  |  |  |  |  |  |  |  |  |  |  |  |  |  |  |  |  |  |
| CV3280 |  | Fencing : Excavation/Blinding/Waterproofing for Boundary Wall Foundation | 98d | 2021-12-25 A | 2022-04-18 A | CBS2790 SS | 100% |  |  | 6 DAYS W HOLIDAY | EXCAVATOR [588 h]; JCB [588 h]; CIVIL MASON [784 h]; GENERAL LABOR [784 h]; PAINTER [784 h]; EXCAVATED MATERIAL [784 cu m] | 48,724.5 | 48,724.5 | CON | Bill-02 | B.2.02 |  |  |  |  |  |  |  |  |  |  |  |  |  |  |  |
| CV3290 |  | Fencing : Installation of Boundary Wall Panels (Pre-casted) (Part-1) | 54d | 2022-02-15 A | 2022-04-18 A | CV3280 SS+5d | 100% |  |  | 6 DAYS W HOLIDAY | CIVIL MASON [432 h]; CARPENTER [432 h]; GENERAL LABOR [432 h] | 37,480.39 | 37,480.39 | CON | Bill-02 | B.2.02 |  |  |  |  |  |  |  |  |  |  |  |  |  |  |  |
| CV3300 |  | Fencing : Protection / Backfilling (Part-1) | 0.88d | 2022-04-18 A | 2022-04-18 A | CV3290 SS+6d | 100% |  |  | 6 DAYS W HOLIDAY | COMPACTOR [5.25 h]; GENERAL LABOR [14 h]; JCB [5.25 h] | 29,984.31 | 29,984.31 | CON | Bill-02 | B.2.02 |  |  |  |  |  |  |  |  |  |  |  |  |  |  |  |
| CV3280R |  | Fencing : Excavation/Blinding/Waterproofing for Boundary Wall Foundation | 14d | 2022-04-19 | 2022-05-08 | CBS2790 SS, CV3280, CBS2790R SS |  | 246d | 12d | 6 DAYS W HOLIDAY | EXCAVATOR [84 h]; JCB [84 h]; CIVIL MASON [112 h]; GENERAL LABOR [112 h]; PAINTER [112 h]; EXCAVATED MATERIAL [112 cu m] | 26,236.27 |  | CON | Bill-02 | B.2.02 |  |  |  |  |  |  |  |  |  |  |  |  |  |  |  |
| CV3290R |  | Fencing : Installation of Boundary Wall Panels (Pre-casted) (Part-2) | 54d | 2022-04-19 | 2022-06-23 | CV3280 SS+5d, CV3290 |  | 206d | 0d | 6 DAYS W HOLIDAY | CIVIL MASON [432 h]; CARPENTER [432 h]; GENERAL LABOR [432 h] | 37,480.39 |  | CON | Bill-02 | B.2.02 |  |  |  |  |  |  |  |  |  |  |  |  |  |  |  |
| CV3300R |  | Fencing : Protection / Backfilling (Part-2) | 12d | 2022-04-26 | 2022-05-12 | CV3290 SS+6d, CV3300, CV3290R SS+6d |  | 240d | 0d | 6 DAYS W HOLIDAY | COMPACTOR [72 h]; GENERAL LABOR [192 h]; JCB [72 h] | 44,976.46 |  | CON | Bill-02 | B.2.02 |  |  |  |  |  |  |  |  |  |  |  |  |  |  |  |
| CV3310 |  | Fencing : Installation of Gates | 6d | 2022-05-09 | 2022-05-15 | CV3300 FF+2d, CV3280 SS+2d, CV3280R SS+2d, CV3300R FF+2d |  | 240d |  | 6 DAYS W HOLIDAY | CIVIL MASON [128 h]; CARPENTER [48 h]; GENERAL LABOR [48 h] | 74,960.77 |  | CON | Bill-02 | B.2.02 |  |  |  |  |  |  |  |  |  |  |  |  |  |  |  |
|  | 5 | **FOUL SEWER NETWORK** |  | 2021-09-11 | 2022-04-30 |  |  |  |  |  |  |  |  |  |  |  |  |  |  |  |  |  |  |  |  |  |  |  |  |  |  |
| CV3472 |  | Foul Water Pipe : Application of TDP | 10d | 2021-09-11 A | 2021-09-21 A | G1010, EN-3010 | 100% |  |  | 6 DAYS W HOLIDAY | EXCAVATOR [60 h]; GENERAL LABOR [160 h]; JCB [60 h] | 26,196.58 | 26,196.58 | CON | Bill-02 | B.2.04 |  |  |  |  |  |  |  |  |  |  |  |  |  |  |  |
| CV3474 |  | Foul Water Pipe : Approval of TDP | 2d | 2021-09-22 A | 2021-09-23 A | CV3472 | 100% |  |  |  | EXCAVATOR [12 h]; GENERAL LABOR [16 h]; JCB [12 h] | 26,196.58 | 26,196.58 | CON | Bill-02 | B.2.04 |  |  |  |  |  |  |  |  |  |  |  |  |  |  |  |
| CV3476 |  | Foul Water Pipe : Implementation of TDP | 116d | 2021-09-25 A | 2022-02-07 A | CV3474 | 100% |  |  | 6 DAYS W HOLIDAY | GENERAL LABOR [928 h]; MECHANICAL TECHNICIAN [928 h] | 26,196.58 | 26,196.58 | CON | Bill-02 | B.2.04 |  |  |  |  |  |  |  |  |  |  |  |  |  |  |  |
| CV3480 |  | Foul Water Pipe : Excavation Works | 1d | 2022-04-18 A | 2022-04-18 A | CV3476 | 100% |  |  | 6 DAYS W HOLIDAY | EXCAVATOR [6 h]; GENERAL LABOR [750 h]; JCB [6 h]; EXCAVATED MATERIAL [8 cu m] | 26,196.58 | 26,196.58 | CON | Bill-02 | B.2.04 |  |  |  |  |  |  |  |  |  |  |  |  |  |  |  |
| CV3490 |  | Foul Water Pipe : Pipe Trech and Manhole Construction | 1d | 2022-04-18 A | 2022-04-18 A | CV3480 | 100% |  |  | 6 DAYS W HOLIDAY | EXCAVATOR [6 h]; GENERAL LABOR [214.29 h]; JCB [6 h] | 26,196.58 | 26,196.58 | CON | Bill-02 | B.2.04 |  |  |  |  |  |  |  |  |  |  |  |  |  |  |  |
| CV3500 |  | Foul Water Pipe : Underground Pipe Installation | 1d | 2022-04-18 A | 2022-04-18 A | CV3490 | 100% |  |  | 6 DAYS W HOLIDAY | GENERAL LABOR [8 h]; MECHANICAL TECHNICIAN [8 h] | 26,196.58 | 26,196.58 | CON | Bill-02 | B.2.04 |  |  |  |  |  |  |  |  |  |  |  |  |  |  |  |
| CV3510 |  | Foul Water Pipe : Pipe Hydro Testing | 4d | 2022-04-19 | 2022-04-23 | CV3500 |  | 205d | 0d | 6 DAYS W HOLIDAY | COMPACTOR [24 h]; GENERAL LABOR [64 h]; JCB [24 h] | 26,196.58 |  | CON | Bill-02 | B.2.04 |  |  |  |  |  |  |  |  |  |  |  |  |  |  |  |
| CV3520 |  | Foul Water Pipe : Surround Material Backfilling | 6d | 2022-04-24 | 2022-04-30 | CV3510 |  | 205d | 202d | 6 DAYS W HOLIDAY | COMPACTOR [36 h]; GENERAL LABOR [96 h]; JCB [36 h] | 26,196.58 |  | CON | Bill-02 | B.2.04 |  |  |  |  |  |  |  |  |  |  |  |  |  |  |  |
|  | 8 | **INSTALLATION WORKS** |  | 2022-08-01 | 2023-02-27 |  |  |  |  |  |  |  |  |  |  |  |  |  |  |  |  |  |  |  |  |  |  |  |  |  |  |
|  | 7 | **Pump Station** |  | 2023-01-19 | 2023-02-27 |  |  |  |  |  |  |  |  |  |  |  |  |  |  |  |  |  |  |  |  |  |  |  |  |  |  |
|  | 2 | **Mechanical Works** |  | 2023-01-19 | 2023-02-14 |  |  |  |  |  |  |  |  |  |  |  |  |  |  |  |  |  |  |  |  |  |  |  |  |  |  |
| CON-2520 |  | Installation of Penstock | 18d | 2023-01-19 | 2023-02-08 | CON-2340 FF+3d, PRM-1924, PRM-1950, EN-3290, EN-3810, EN-3290R |  | 1d | 0d | 6 DAYS W HOLIDAY | GENERAL LABOR [288 h]; MECHANICAL TECHNICIAN [288 h]; CRANE [108 h] | 76,270.11 |  | CON | Bill-03 |  | m | 2279 | 250 | WAT | G29A | WT | C55830 | GEN | PWRPS | MECH | Z1 | QEZ3 | PW-BLDG | MEP SUB | B.3.01 |
| CON-2530 |  | Installation of Macerator | 9d | 2023-01-19 | 2023-01-29 | CON-2520 SS, PRM-1580, PRM-2420, EN-3730, EN-3770, EN-3770R |  | 1d | 0d | 6 DAYS W HOLIDAY | GENERAL LABOR [144 h]; MECHANICAL TECHNICIAN [144 h]; CRANE [54 h] | 488,420 |  | CON | Bill-03 |  | m | 2279 | 250 | WAT | G29A | WT | C55830 | GEN | PWRPS | MECH | Z1 | QEZ3 | PW-BLDG | MEP SUB | B.3.02 |
| CON-2940 |  | Installation of Manual Screen | 18d | 2023-01-19 | 2023-02-08 | CON-2520 SS, PRM-1580, PRM-2420 |  | 3d | 2d | 6 DAYS W HOLIDAY | GENERAL LABOR [288 h]; MECHANICAL TECHNICIAN [288 h]; CRANE [108 h] | 6,757.39 |  | CON | Bill-03 |  | m | 2279 | 250 | WAT | G29A | WT | C55830 | GEN | PWRPS | MECH | Z1 | QEZ3 | PW-BLDG | MEP SUB | B.3.02 |
| CON-2340 |  | Installation of (Discharge) DI Pipes & Valves | 11d | 2023-01-24 | 2023-02-05 | CON-2330 FF+5d, PRM-1810, PRM-2370, EN-1480 |  | 1d | 0d | 6 DAYS W HOLIDAY | GENERAL LABOR [176 h]; MECHANICAL TECHNICIAN [176 h] | 8,480.52 |  | CON | Bill-03 |  | m | 2279 | 250 | WAT | G29A | WT | C55830 | GEN | PWRPS | MECH | Z1 | QEZ3 | PW-BLDG | MEP SUB | B.3.02 |
| CON-2330 |  | Installation of Submersible Pumps | 4d | 2023-01-26 | 2023-01-30 | PRM-1800, PRM-1810, PRM-1820, MS-1120, C1162, MS-1130, C1235, EN-3000, EN-2160, MS-1310, MS-1350, EN-3530, EN-3490, EN-3330, EN-3170, EN-3130, EN-3210, EN-3370, EN-3410, EN-3450, EN-3650, EN-3690, EN-2120, C1235 FF, MS-1120R, MS-1130R, MS-1310R, PRM-1820R |  | 0d |  | 6 DAYS W HOLIDAY | GENERAL LABOR [64 h]; MECHANICAL TECHNICIAN [32 h]; CRANE [24 h] | 411,994.23 |  | CON | Bill-03 |  | m | 2279 | 250 | WAT | G29A | WT | C55830 | GEN | PWRPS | MECH | Z1 | QEZ3 | PW-BLDG | MEP SUB | B.3.01 |
| CON-2535 |  | Installation of Overhead Crane | 14d | 2023-01-30 | 2023-02-14 | PRM-1570, CON-2340 FF, CON-2530, CON-2940 FF |  | 1d |  | 6 DAYS W HOLIDAY | GENERAL LABOR [224 h]; MECHANICAL TECHNICIAN [224 h]; CRANE [84 h] | 76,227.06 |  | CON | Bill-03 |  | m | 2279 | 250 | WAT | G29A | WT | C55830 | GEN | PWRPS | MECH | Z1 | QEZ3 | PW-BLDG | MEP SUB | B.3.01 |

Notes:
- CV3280: Expenses: (New Expense) 48724.5
- CV3290: Expenses: (New Expense) 37480.4
- CV3300: Expenses: (New Expense) 29984.3
- CV3280R: Expenses: (New Expense) 26236.3
- CV3290R: Expenses: (New Expense) 37480.4
- CV3300R: Expenses: (New Expense) 44976.5
- CV3310: Expenses: (New Expense) 74960.8
- CV3472: Expenses: (New Expense) 26196.6
- CV3474: Expenses: (New Expense) 26196.6
- CV3476: Expenses: (New Expense) 26196.6
- CV3480: Expenses: (New Expense) 26196.6
- CV3490: Expenses: (New Expense) 26196.6
- CV3500: Expenses: (New Expense) 26196.6
- CV3510: Expenses: (New Expense) 26196.6
- CV3520: Expenses: (New Expense) 26196.6
- CON-2520: Expenses: (New Expense) 76270.1
- CON-2530: Expenses: (New Expense) 488420
- CON-2940: Expenses: (New Expense) 6757.39
- CON-2340: Expenses: (New Expense) 8480.52
- CON-2330: Expenses: (New Expense) 411994
- CON-2535: Expenses: (New Expense) 76227.1

| ID | WBS | Activity | Duration | Start | Finish | Predecessors | Total float | Free float | Calendar | Resources | Cost | Unit | Quantity | Prod.Rate | Water works | Bill Code | user_text1 | 釬珛測鎢杸遙 | 02 Phase | 03 Section | 05 Sub-section | 04 Discipline | 06 Zone | 01 Project | 07 Buildings & Ext. Works | 09 Subcontractors | 10 BOQ Cost | 14 BOQ-5 | 13 BOQ-4 | 12 BOQ-3 |
| --- | --- | --- | --- | --- | --- | --- | --- | --- | --- | --- | --- | --- | --- | --- | --- | --- | --- | --- | --- | --- | --- | --- | --- | --- | --- | --- | --- | --- | --- | --- |
|  | 3 | **Electrical & Instrumentation Works** |  | 2023-01-31 | 2023-02-27 |  |  |  |  |  |  |  |  |  |  |  |  |  |  |  |  |  |  |  |  |  |  |  |  |  |
| CON-2360 |  | Installation of Pressure Switch / Pressure Gauge | 12d | 2023-01-31 | 2023-02-13 | PRI-1570, CON-2330, PRI-1580, PRI-1540, PRI-1570 FF, PRI-1540 FF, PRI-1760 | 2d | 0d | 6 DAYS W HOLIDAY | GENERAL LABOR [96 h]; ELECTRICAL TECHNICIAN [96 h] | 8,533.83 | m | 2279 | 250 | WAT | G29A | WT | C55830 | CON | GEN | PWRPS | INST | Z1 | QEZ3 | PW-BLDG | MEP SUB | Bill-05 | B.5.01 |  |  |
| CON-2540 |  | Installation of Cable Tray | 10d | 2023-01-31 | 2023-02-11 | PRE-2180, CON-2330, CON-2340 SS | 0d |  | 6 DAYS W HOLIDAY | GENERAL LABOR [160 h]; ELECTRICAL TECHNICIAN [80 h] | 967.35 | m | 2279 | 250 | WAT | G29A | WT | C55830 | CON | GEN | PWRPS | ELEC | Z1 | QEZ3 | PW-BLDG | MEP SUB | Bill-04 |  | B.4.01 |  |
| CON-2560 |  | Installaiton of JB | 8d | 2023-01-31 | 2023-02-08 | CON-2540 SS, CON-2530 SS, PRE-2110, CON-2940 SS | 0d |  | 6 DAYS W HOLIDAY | GENERAL LABOR [64 h]; ELECTRICAL TECHNICIAN [64 h] | 24,891 | m | 2279 | 250 | WAT | G29A | WT | C55830 | CON | GEN | PWRPS | ELEC | Z1 | QEZ3 | PW-BLDG | MEP SUB | Bill-04 |  | B.4.01 |  |
| CON-2580 |  | Installation of Electrical Fixtures and Wire | 13d | 2023-01-31 | 2023-02-14 | CON-2560 SS, PRE-2070, PRE-2080, CON-2540 SS | 0d |  | 6 DAYS W HOLIDAY | GENERAL LABOR [104 h]; ELECTRICAL TECHNICIAN [104 h] | 37,677.38 | m | 2279 | 250 | WAT | G29A | WT | C55830 | CON | GEN | PWRPS | ELEC | Z1 | QEZ3 | PW-BLDG | MEP SUB | Bill-04 |  | B.4.01 |  |
| CON-2390 |  | Installation of Level Transmitter | 12d | 2023-02-04 | 2023-02-16 | PRI-1590, CON-2360 FF+3d, PRI-1590 FF | 2d | 0d | 6 DAYS W HOLIDAY | GENERAL LABOR [96 h]; ELECTRICAL TECHNICIAN [96 h] | 37,852.73 | m | 2279 | 250 | WAT | G29A | WT | C55830 | CON | GEN | PWRPS | INST | Z1 | QEZ3 | PW-BLDG | MEP SUB | Bill-05 | B.5.01 |  |  |
| CON-2600 |  | Installation of Lighting Fixture | 10d | 2023-02-04 | 2023-02-14 | CON-2580 FF, PRE-2100, CON-2050 | 0d |  | 6 DAYS W HOLIDAY | GENERAL LABOR [80 h]; ELECTRICAL TECHNICIAN [80 h] | 3,731.78 | m | 2279 | 250 | WAT | G29A | WT | C55830 | CON | GEN | PWRPS | ELEC | Z1 | QEZ3 | PW-BLDG | MEP SUB | Bill-04 |  | B.4.01 |  |
| CON-2410 |  | Installation of Pressure Transmitter and Flow Meters | 12d | 2023-02-07 | 2023-02-20 | PRI-1590, PRI-1570, CON-2390 FF+3d, C1580, PRI-1760, PRI-1570 FF | 2d |  | 6 DAYS W HOLIDAY | GENERAL LABOR [96 h]; ELECTRICAL TECHNICIAN [96 h] | 8,533.83 | m | 2279 | 250 | WAT | G29A | WT | C55830 | CON | GEN | PWRPS | INST | Z1 | QEZ3 | PW-BLDG | MEP SUB | Bill-05 | B.5.01 |  |  |
| CON-2590 |  | Earthing Works | 15d | 2023-02-11 | 2023-02-27 | CON-2570 FF, PRE-2090, PRE-2090 FF | 2d |  | 6 DAYS W HOLIDAY | GENERAL LABOR [120 h]; ELECTRICAL TECHNICIAN [120 h] | 797.21 | m | 2279 | 250 | WAT | G29A | WT | C55830 | CON | GEN | PWRPS | ELEC | Z1 | QEZ3 | PW-BLDG | MEP SUB | Bill-04 |  | B.4.01 |  |
| CON-2570 |  | Laying of Power Cables | 14d | 2023-02-12 | 2023-02-27 | PRE-2180, PRE-2130, CON-2540, PRE-2060, CON-2530, CON-2520, CON-2535 FF+6d, CON-2340, CON-2940 | 1d | 0d | 6 DAYS W HOLIDAY | GENERAL LABOR [224 h]; ELECTRICAL TECHNICIAN [224 h] | 14,719.76 | m | 2279 | 250 | WAT | G29A | WT | C55830 | CON | GEN | PWRPS | ELEC | Z1 | QEZ3 | PW-BLDG | MEP SUB | Bill-04 |  | B.4.01 |  |
| CON-2620 |  | Glanding & Termination | 3d | 2023-02-13 | 2023-02-15 | CON-2590 SS, CON-2600 FF+1d, CON-2130, CON-2570 SS | 0d |  | 6 DAYS W HOLIDAY | GENERAL LABOR [24 h]; ELECTRICAL TECHNICIAN [24 h] | 15,117.85 | m | 2279 | 250 | WAT | G29A | WT | C55830 | CON | GEN | PWRPS | ELEC | Z1 | QEZ3 | PW-BLDG | MEP SUB | Bill-05 | B.5.01 |  |  |
|  | 6 | **Guard Room** |  | 2022-10-05 | 2023-01-08 |  |  |  |  |  |  |  |  |  |  |  |  |  |  |  |  |  |  |  |  |  |  |  |  |  |
|  | 1 | **Mechanical Works** |  | 2022-10-05 | 2023-01-08 |  |  |  |  |  |  |  |  |  |  |  |  |  |  |  |  |  |  |  |  |  |  |  |  |  |
| CON-2660 |  | Installation of Pre Fabricated Guard Room | 4d | 2022-10-05 | 2022-10-10 | PRM-1820, MS-1130, CV3380, MS-1350, MS-1130R, PRM-1820R | 42.33d | 0d | 6 DAYS W HOLIDAY | GENERAL LABOR [64 h]; MECHANICAL TECHNICIAN [64 h]; CRANE [24 h] | 31,943 | m | 2279 | 250 | WAT | G29A | WT | C55830 | CON | GEN | PWRPS | CIV | Z1 | QEZ3 | PW-TFS | MEP SUB | Bill-03 |  |  | B.3.01 |
| CON-1440 |  | Installlation of Piping Works and All Utility | 12d | 2022-10-26 | 2022-12-29 | PRM-1820, CON-2660, MS-1130, PRM-2230, MS-1350, EN-3850, MS-1130R, PRM-1820R | 35d | 2d | 6 DAYS W HOLIDAY | GENERAL LABOR [600 h]; MECHANICAL TECHNICIAN [192 h] | 31,943 | m | 2279 | 250 | WAT | G29A | WT | C55830 | CON | GEN | PWRPS | MECH | Z1 | QEZ3 | PW-TFA |  | Bill-03 |  |  | B.3.01 |
| CON-1820 |  | Installation of Power Supply and COmmunication | 6d | 2023-01-02 | 2023-01-08 | CON-1440, PRM-1810 | 33d |  | 6 DAYS W HOLIDAY | GENERAL LABOR [48 h]; MECHANICAL TECHNICIAN [48 h] | 31,943 | m | 2279 | 250 | WAT | G29A | WT | C55830 | CON | GEN | PWRPS | MECH | Z1 | QEZ3 | PW-TFA |  | Bill-03 |  |  | B.3.01 |
|  | 3 | **Electrical & Instrumentation Works** |  | 2022-10-10 | 2022-12-28 |  |  |  |  |  |  |  |  |  |  |  |  |  |  |  |  |  |  |  |  |  |  |  |  |  |
| CON-2780 |  | Installation of Cable Tray | 12d | 2022-10-10 | 2022-10-24 | CON-2660 | 42.33d | 0d | 6 DAYS W HOLIDAY | GENERAL LABOR [192 h]; ELECTRICAL TECHNICIAN [96 h] | 967.35 | m | 2279 | 250 | WAT | G29A | WT | C55830 | CON | GEN | PWRPS | ELEC | Z1 | QEZ3 | PW-BLDG | MEP SUB | Bill-04 |  | B.4.01 |  |
| CON-2730 |  | Laying of Power Cables | 6d | 2022-10-24 | 2022-10-31 | CON-2780 | 42.33d | 0d | 6 DAYS W HOLIDAY | GENERAL LABOR [600 h]; ELECTRICAL TECHNICIAN [96 h] | 14,719.76 | m | 2279 | 250 | WAT | G29A | WT | C55830 | CON | GEN | PWRPS | ELEC | Z1 | QEZ3 | PW-BLDG | MEP SUB | Bill-04 |  | B.4.01 |  |
| CON-2770 |  | Earthing Works | 4d | 2022-10-26 | 2022-10-31 | CON-2730 FF | 42.33d | 0d | 6 DAYS W HOLIDAY | GENERAL LABOR [32 h]; ELECTRICAL TECHNICIAN [32 h] | 797.21 | m | 2279 | 250 | WAT | G29A | WT | C55830 | CON | GEN | PWRPS | ELEC | Z1 | QEZ3 | PW-BLDG | MEP SUB | Bill-04 |  | B.4.01 |  |
| CON-2760 |  | Installation of Small Power & Lighting | 6d | 2022-10-31 | 2022-12-28 | CON-2770, CON-2780, CON-2780 SS | 42.33d |  | 6 DAYS W HOLIDAY | GENERAL LABOR [48 h]; ELECTRICAL TECHNICIAN [48 h] | 62,407.87 | m | 2279 | 250 | WAT | G29A | WT | C55830 | CON | GEN | PWRPS | ELEC | Z1 | QEZ3 | PW-BLDG | MEP SUB | Bill-04 |  | B.4.01 |  |
|  | 5 | **Odor Control Unit** |  | 2023-01-15 | 2023-02-14 |  |  |  |  |  |  |  |  |  |  |  |  |  |  |  |  |  |  |  |  |  |  |  |  |  |
|  | 1 | **Mechanical Works** |  | 2023-01-15 | 2023-02-01 |  |  |  |  |  |  |  |  |  |  |  |  |  |  |  |  |  |  |  |  |  |  |  |  |  |
| CON-2870 |  | Installation of OCU Unit | 3d | 2023-01-15 | 2023-01-17 | PRM-1994, CV2530, PRM-2020, EN-3250 | 1d | 0d | 6 DAYS W HOLIDAY | GENERAL LABOR [48 h]; MECHANICAL TECHNICIAN [48 h]; CRANE [18 h] | 363,846.66 | m | 2279 | 250 | WAT | G29A | WT | C55830 | CON | GEN | PWRPS | CIV | Z1 | QEZ3 | PW-TFS | MEP SUB | Bill-03 |  |  | B.3.01 |
| CON-2850 |  | Installlation of Piping Works | 4d | 2023-01-18 | 2023-01-22 | CON-2870, PRM-1810 | 2d | 0d | 6 DAYS W HOLIDAY | GENERAL LABOR [32 h]; MECHANICAL TECHNICIAN [32 h] | 27,713 | m | 2279 | 250 | WAT | G29A | WT | C55830 | CON | GEN | PWRPS | MECH | Z1 | QEZ3 | PW-TFA |  | Bill-03 |  |  | B.3.01 |
| CON-2860 |  | Installation of Extraction Fan | 2d | 2023-01-23 | 2023-01-24 | CON-2850 | 2d | 0d | 6 DAYS W HOLIDAY | GENERAL LABOR [16 h]; MECHANICAL TECHNICIAN [16 h] | 2,250 | m | 2279 | 250 | WAT | G29A | WT | C55830 | CON | GEN | PWRPS | MECH | Z1 | QEZ3 | PW-TFA |  | Bill-03 |  |  | B.3.01 |
| CON-2840 |  | Installation of Air Line Connection Pump Station | 7d | 2023-01-25 | 2023-02-01 | CON-2860 | 2d | 1d | 6 DAYS W HOLIDAY | GENERAL LABOR [56 h]; MECHANICAL TECHNICIAN [56 h] | 1,980 | m | 2279 | 250 | WAT | G29A | WT | C55830 | CON | GEN | PWRPS | MECH | Z1 | QEZ3 | PW-BLDG | MEP SUB | Bill-03 |  |  | B.3.01 |

Notes:
- CON-2360: Expenses: (New Expense) 8533.83
- CON-2540: Expenses: (New Expense) 967.35
- CON-2560: Expenses: (New Expense) 24891
- CON-2580: Expenses: (New Expense) 37677.4
- CON-2390: Expenses: (New Expense) 37852.7
- CON-2600: Expenses: (New Expense) 3731.78
- CON-2410: Expenses: (New Expense) 8533.83
- CON-2590: Expenses: (New Expense) 797.21
- CON-2570: Expenses: (New Expense) 14719.8
- CON-2620: Expenses: (New Expense) 15117.9
- CON-2660: Expenses: (New Expense) 31943
- CON-1440: Expenses: (New Expense) 31943
- CON-1820: Expenses: (New Expense) 31943
- CON-2780: Expenses: (New Expense) 967.35
- CON-2730: Expenses: (New Expense) 14719.8
- CON-2770: Expenses: (New Expense) 797.21
- CON-2760: Expenses: (New Expense) 62407.9
- CON-2870: Expenses: (New Expense) 363847
- CON-2850: Expenses: (New Expense) 27713
- CON-2860: Expenses: (New Expense) 2250
- CON-2840: Expenses: (New Expense) 1980

| ID | WBS | Activity | Duration | Start | Finish | Predecessors | Total float | Free float | Calendar | Resources | Cost | Unit | Quantity | Prod.Rate | Water works | Bill Code | user_text1 | 釬珛測鎢杸遙 | 02 Phase | 03 Section | 05 Sub-section | 04 Discipline | 06 Zone | 01 Project | 07 Buildings & Ext. Works | 09 Subcontractors | 10 BOQ Cost | 13 BOQ-4 | 14 BOQ-5 | 12 BOQ-3 |
| --- | --- | --- | --- | --- | --- | --- | --- | --- | --- | --- | --- | --- | --- | --- | --- | --- | --- | --- | --- | --- | --- | --- | --- | --- | --- | --- | --- | --- | --- | --- |
|  | 3 | **Electrical & Instrumentation Works** |  | 2023-01-18 | 2023-02-14 |  |  |  |  |  |  |  |  |  |  |  |  |  |  |  |  |  |  |  |  |  |  |  |  |  |
| CON-2910 |  | Installation of Cable Tray | 6d | 2023-01-18 | 2023-01-24 | CON-2870 | 1d | 0d | 6 DAYS W HOLIDAY | GENERAL LABOR [96 h]; ELECTRICAL TECHNICIAN [48 h] | 967.35 | m | 2279 | 250 | WAT | G29A | WT | C55830 | CON | GEN | PWRPS | ELEC | Z1 | QEZ3 | PW-BLDG | MEP SUB | Bill-04 | B.4.01 |  |  |
| CON-2900 |  | Earthing Works | 4d | 2023-01-24 | 2023-01-28 | CON-2880 FF | 10d | 0d | 6 DAYS W HOLIDAY | GENERAL LABOR [32 h]; ELECTRICAL TECHNICIAN [32 h] | 797.21 | m | 2279 | 250 | WAT | G29A | WT | C55830 | CON | GEN | PWRPS | ELEC | Z1 | QEZ3 | PW-BLDG | MEP SUB | Bill-04 | B.4.01 |  |  |
| CON-2880 |  | Laying of Power Cables | 3d | 2023-01-25 | 2023-01-28 | CON-2910 | 1d | 0d | 6 DAYS W HOLIDAY | GENERAL LABOR [24 h]; ELECTRICAL TECHNICIAN [24 h] | 14,719.76 | m | 2279 | 250 | WAT | G29A | WT | C55830 | CON | GEN | PWRPS | ELEC | Z1 | QEZ3 | PW-BLDG | MEP SUB | Bill-04 | B.4.01 |  |  |
| CON-2890 |  | Installation of Small Power & Lighting | 6d | 2023-01-29 | 2023-02-04 | CON-2900, CON-2910, CON-2910 SS | 10d | 9d | 6 DAYS W HOLIDAY | GENERAL LABOR [48 h]; ELECTRICAL TECHNICIAN [48 h] | 62,407.87 | m | 2279 | 250 | WAT | G29A | WT | C55830 | CON | GEN | PWRPS | ELEC | Z1 | QEZ3 | PW-BLDG | MEP SUB | Bill-04 | B.4.01 |  |  |
| CON-2920 |  | Installation of Pressure Switch / Pressure Gauge | 12d | 2023-01-29 | 2023-02-11 | CON-2880 | 1d | 0d | 6 DAYS W HOLIDAY | GENERAL LABOR [96 h]; ELECTRICAL TECHNICIAN [96 h] | 8,533.83 | m | 2279 | 250 | WAT | G29A | WT | C55830 | CON | GEN | PWRPS | INST | Z1 | QEZ3 | PW-BLDG | MEP SUB | Bill-05 |  | B.5.01 |  |
| CON-2930 |  | Installation of Pressure Transmitter | 10d | 2023-02-04 | 2023-02-14 | CON-2920 FF+3d, CON-2840, CON-2890 FF | 1d |  | 6 DAYS W HOLIDAY | GENERAL LABOR [80 h]; ELECTRICAL TECHNICIAN [80 h] | 8,533.83 | m | 2279 | 250 | WAT | G29A | WT | C55830 | CON | GEN | PWRPS | INST | Z1 | QEZ3 | PW-BLDG | MEP SUB | Bill-05 |  | B.5.01 |  |
|  | 8 | **MCC Room** |  | 2022-09-21 | 2023-02-14 |  |  |  |  |  |  |  |  |  |  |  |  |  |  |  |  |  |  |  |  |  |  |  |  |  |
| CON-1990 |  | Installation of Cable Ladder / Cable Tray | 10d | 2022-09-21 | 2022-10-02 | PRE-2180 FS+30d, PRE-2160 FS+30d, MS-1130, CBS2970, CBS2980, MS-1350, MS-1130R | 52d | 51d | 6 DAYS W HOLIDAY | GENERAL LABOR [80 h]; ELECTRICAL TECHNICIAN [80 h] | 967.35 | m | 2279 | 250 | WAT | G29A | WT | C55830 | CON | GEN | PWRPS | ELEC | Z1 | QEZ3 | PW-BLDG | MEP SUB | Bill-04 | B.4.01 |  |  |
| CON-2055 |  | Intermediate Cable Laying and Termination of MCC/DB/SMDB | 10d | 2023-01-19 | 2023-01-30 | CON-2050 FF+3d | 1d | 0d | 6 DAYS W HOLIDAY | GENERAL LABOR [160 h]; ELECTRICAL TECHNICIAN [160 h] | 3,679.94 | m | 2279 | 250 | WAT | G29A | WT | C55830 | CON | GEN | PWRPS | ELEC | Z1 | QEZ3 | PW-BLDG | MEP SUB | Bill-04 | B.4.01 |  |  |
| CON-2060 |  | Installation of PLC Panel | 4d | 2023-01-22 | 2023-01-25 | PRI-1640, MS-1130, CON-1990, MS-1350, MS-1130R | 1d | 0d | 6 DAYS W HOLIDAY | GENERAL LABOR [96 h]; ELECTRICAL TECHNICIAN [96 h] | 50,651.25 | m | 2279 | 250 | WAT | G29A | WT | C55830 | CON | GEN | PWRPS | INST | Z1 | QEZ3 | PW-BLDG | MEP SUB | Bill-05 |  | B.5.03 |  |
| CON-2050 |  | Installation of MCC/DB/SMDB/VFD | 4d | 2023-01-23 | 2023-01-26 | PRE-2160, CON-1990, PRE-2120 | 1d | 0d | 6 DAYS W HOLIDAY | GENERAL LABOR [96 h]; ELECTRICAL TECHNICIAN [96 h]; CRANE [24 h] | 261,672.4 | m | 2279 | 250 | WAT | G29A | WT | C55830 | CON | GEN | PWRPS | ELEC | Z1 | QEZ3 | PW-BLDG | MEP SUB | Bill-04 | B.4.02 |  |  |
| CON-2070 |  | Installation of UPS | 4d | 2023-01-26 | 2023-01-30 | CON-2060, PRE-2190 | 1d | 0d | 6 DAYS W HOLIDAY | GENERAL LABOR [96 h]; ELECTRICAL TECHNICIAN [96 h] | 26,126.59 | m | 2279 | 250 | WAT | G29A | WT | C55830 | CON | GEN | PWRPS | INST | Z1 | QEZ3 | PW-BLDG | MEP SUB | Bill-05 |  | B.5.03 |  |
| CON-2080 |  | Installation of FM 200 | 8d | 2023-01-28 | 2023-02-05 | CON-2050, PRI-1810, EN-1800 | 17d |  | 6 DAYS W HOLIDAY | GENERAL LABOR [64 h]; ELECTRICAL TECHNICIAN [64 h] | 7,558.92 | m | 2279 | 250 | WAT | G29A | WT | C55830 | CON | GEN | PWRPS | INST | Z1 | QEZ3 | PW-CHLO | MEP SUB | Bill-05 |  | B.5.03 |  |
| CON-2090 |  | Installation of Battery System | 6d | 2023-01-31 | 2023-02-06 | CON-2070 | 1d | 0d | 6 DAYS W HOLIDAY | GENERAL LABOR [48 h]; ELECTRICAL TECHNICIAN [48 h] | 26,126.59 | m | 2279 | 250 | WAT | G29A | WT | C55830 | CON | GEN | PWRPS | INST | Z1 | QEZ3 | PW-BLDG | MEP SUB | Bill-05 |  | B.5.03 |  |
| CON-2100 |  | Installation of Signal & Control Cables | 6d | 2023-01-31 | 2023-02-06 | PRI-1630, PRI-1630 FF, PRI-1640, MS-1130, CON-2090 FF, PRI-1630 SS, MS-1350, MS-1130R | 1d | 0d | 6 DAYS W HOLIDAY | GENERAL LABOR [144 h]; ELECTRICAL TECHNICIAN [144 h] | 15,117.85 | m | 2279 | 250 | WAT | G29A | WT | C55830 | CON | GEN | PWRPS | INST | Z1 | QEZ3 | PW-BLDG | MEP SUB | Bill-05 |  | B.5.03 |  |
| CON-2130 |  | MCC Panel Bus Bar Alignment and Tightening proper Torque | 3d | 2023-01-31 | 2023-02-02 | CON-2050, CON-2055 | 1d | 0d | 6 DAYS W HOLIDAY | GENERAL LABOR [72 h]; ELECTRICAL TECHNICIAN [72 h] | 3,679.94 | m | 2279 | 250 | WAT | G29A | WT | C55830 | CON | GEN | PWRPS | ELEC | Z1 | QEZ3 | PW-BLDG | MEP SUB | Bill-04 | B.4.01 |  |  |
| CON-2380 |  | Installation of PLC/SCADA Works | 6d | 2023-02-01 | 2023-02-07 | CON-2100 FF+1d, MS-1230, PRI-1640, PRI-1640 FF | 1d | 0d | 6 DAYS W HOLIDAY | GENERAL LABOR [48 h]; ELECTRICAL TECHNICIAN [48 h] | 57,626.34 | m | 2279 | 250 | WAT | G29A | WT | C55830 | CON | GEN | PWRPS | INST | Z1 | QEZ3 | PW-BLDG | MEP SUB | Bill-05 |  | B.5.03 |  |
| CON-2460 |  | Installation of Lighting Wire , Socket and Fire Alarm System | 6d | 2023-02-04 | 2023-02-09 | PRE-2070, PRE-2080, CON-2130, PRI-1690, PRI-1810 | 1d | 0d | 6 DAYS W HOLIDAY | GENERAL LABOR [48 h]; ELECTRICAL TECHNICIAN [48 h] | 102,694.96 | m | 2279 | 250 | WAT | G29A | WT | C55830 | CON | GEN | PWRPS | INST | Z1 | QEZ3 | PW-BLDG | MEP SUB | Bill-04 | B.4.01 |  |  |
| CON-2480 |  | Installation of Lighting Fixture | 6d | 2023-02-04 | 2023-02-09 | PRE-2100, CON-2460 FF | 1d | 0d | 6 DAYS W HOLIDAY | GENERAL LABOR [48 h]; ELECTRICAL TECHNICIAN [48 h] | 3,731.78 | m | 2279 | 250 | WAT | G29A | WT | C55830 | CON | GEN | PWRPS | INST | Z1 | QEZ3 | PW-BLDG | MEP SUB | Bill-04 | B.4.01 |  |  |
| CON-2150 |  | Glanding and Termination | 7d | 2023-02-07 | 2023-02-14 | CON-2090 | 7d |  | 6 DAYS W HOLIDAY | GENERAL LABOR [56 h]; ELECTRICAL TECHNICIAN [56 h] | 7,558.92 | m | 2279 | 250 | WAT | G29A | WT | C55830 | CON | GEN | PWRPS | INST | Z1 | QEZ3 | PW-BLDG | MEP SUB | Bill-05 |  | B.5.03 |  |
| CON-2430 |  | Installation of HMI and Work Station | 6d | 2023-02-08 | 2023-02-14 | CON-2380 | 1d | 0d | 6 DAYS W HOLIDAY | GENERAL LABOR [48 h]; ELECTRICAL TECHNICIAN [48 h] | 28,858.27 | m | 2279 | 250 | WAT | G29A | WT | C55830 | CON | GEN | PWRPS | INST | Z1 | QEZ3 | PW-BLDG | MEP SUB | Bill-05 |  | B.5.03 |  |
| CON-2470 |  | Installation of Software Application | 4d | 2023-02-11 | 2023-02-14 | CON-2430 FF | 1d |  | 6 DAYS W HOLIDAY | GENERAL LABOR [32 h]; ELECTRICAL TECHNICIAN [32 h] | 57,626.34 | m | 2279 | 250 | WAT | G29A | WT | C55830 | CON | GEN | PWRPS | INST | Z1 | QEZ3 | PW-BLDG | MEP SUB | Bill-05 |  | B.5.03 |  |
|  | 14 | **Packaged Generator** |  | 2022-09-26 | 2023-01-17 |  |  |  |  |  |  |  |  |  |  |  |  |  |  |  |  |  |  |  |  |  |  |  |  |  |
|  | 2 | **Mechanical Works** |  | 2022-09-26 | 2022-12-29 |  |  |  |  |  |  |  |  |  |  |  |  |  |  |  |  |  |  |  |  |  |  |  |  |  |
| CON-1140 |  | Installation of Fuel System | 6d | 2022-09-26 | 2022-10-02 | PRE-2200, MS-1130, PRM-2300, CV2410, CV2350, MS-1350, MS-1130R | 25d | 0d | 6 DAYS W HOLIDAY | GENERAL LABOR [144 h]; MECHANICAL TECHNICIAN [144 h]; CRANE [36 h] | 20,944.03 | m | 2279 | 250 | WAT | G29A | WT | C55830 | CON | GEN | PWRPS | MECH | Z1 | QEZ3 | PW-BLDG | MEP SUB | Bill-03 |  |  | B.3.01 |
| CON-1150 |  | Installation of Generator Unit including Exhaust Piping and Intake Louver | 8d | 2022-10-03 | 2022-10-11 | CON-1140, PRE-2200, CV2760 | 25d | 0d | 6 DAYS W HOLIDAY | GENERAL LABOR [192 h]; MECHANICAL TECHNICIAN [192 h]; CRANE [48 h] | 52,593.64 | m | 2279 | 250 | WAT | G29A | WT | C55830 | CON | GEN | PWRPS | CIV | Z1 | QEZ3 | PW-TFS | MEP SUB | Bill-04 | B.4.01 |  |  |
| CON-1190 |  | Installation of Piping Suction and Discharge | 16d | 2022-10-03 | 2022-10-20 | CON-1140 | 41d | 0d | 6 DAYS W HOLIDAY | GENERAL LABOR [256 h]; MECHANICAL TECHNICIAN [256 h] | 31,943 | m | 2279 | 250 | WAT | G29A | WT | C55830 | CON | GEN | PWRPS | MECH | Z1 | QEZ3 | PW-BLDG | MEP SUB | Bill-03 |  |  | B.3.01 |
| CON-1220 |  | Installation of Fire Alarm System | 10d | 2022-10-12 | 2022-10-23 | CON-1150 | 61d |  | 6 DAYS W HOLIDAY | GENERAL LABOR [160 h]; MECHANICAL TECHNICIAN [160 h] | 62,407.87 | m | 2279 | 250 | WAT | G29A | WT | C55830 | CON | GEN | PWRPS | CIV | Z1 | QEZ3 | PW-TFS | MEP SUB | Bill-04 | B.4.01 |  |  |
| CON-1350 |  | Installation of Valve , NRV | 4d | 2022-10-22 | 2022-10-25 | CON-1190 | 41d | 0d | 6 DAYS W HOLIDAY | GENERAL LABOR [96 h]; MECHANICAL TECHNICIAN [96 h] | 27,613.15 | m | 2279 | 250 | WAT | G29A | WT | C55830 | CON | GEN | PWRPS | MECH | Z1 | QEZ3 | PW-BLDG | MEP SUB | Bill-03 |  |  | B.3.01 |
| CON-1390 |  | Installation of Piping Supports | 12d | 2022-10-26 | 2022-12-29 | CON-1350 | 41d |  | 6 DAYS W HOLIDAY | GENERAL LABOR [200 h]; MECHANICAL TECHNICIAN [96 h] | 52,593.64 | m | 2279 | 250 | WAT | G29A | WT | C55830 | CON | GEN | PWRPS | MECH | Z1 | QEZ3 | PW-BLDG | MEP SUB | Bill-04 | B.4.01 |  |  |

Notes:
- CON-2910: Expenses: (New Expense) 967.35
- CON-2900: Expenses: (New Expense) 797.21
- CON-2880: Expenses: (New Expense) 14719.8
- CON-2890: Expenses: (New Expense) 62407.9
- CON-2920: Expenses: (New Expense) 8533.83
- CON-2930: Expenses: (New Expense) 8533.83
- CON-1990: Expenses: (New Expense) 967.35
- CON-2055: Expenses: (New Expense) 3679.94
- CON-2060: Expenses: (New Expense) 50651.2
- CON-2050: Expenses: (New Expense) 261672
- CON-2070: Expenses: (New Expense) 26126.6
- CON-2080: Expenses: (New Expense) 7558.92
- CON-2090: Expenses: (New Expense) 26126.6
- CON-2100: Expenses: (New Expense) 15117.9
- CON-2130: Expenses: (New Expense) 3679.94
- CON-2380: Expenses: (New Expense) 57626.3
- CON-2460: Expenses: (New Expense) 102695
- CON-2480: Expenses: (New Expense) 3731.78
- CON-2150: Expenses: (New Expense) 7558.92
- CON-2430: Expenses: (New Expense) 28858.3
- CON-2470: Expenses: (New Expense) 57626.3
- CON-1140: Expenses: (New Expense) 20944
- CON-1150: Expenses: (New Expense) 52593.6
- CON-1190: Expenses: (New Expense) 31943
- CON-1220: Expenses: (New Expense) 62407.9
- CON-1350: Expenses: (New Expense) 27613.2
- CON-1390: Expenses: (New Expense) 52593.6

| ID | WBS | Activity | Duration | Start | Finish | Predecessors | Total float | Free float | Calendar | Resources | Cost | Unit | Quantity | Prod.Rate | Water works | Bill Code | user_text1 | 釬珛測鎢杸遙 | 02 Phase | 03 Section | 05 Sub-section | 04 Discipline | 06 Zone | 01 Project | 07 Buildings & Ext. Works | 09 Subcontractors | 10 BOQ Cost | 14 BOQ-5 | 13 BOQ-4 | DELAY EVENT 01 | DELAY EVENT 02 | DELAY EVENT 03 | DELAY EVENT 04 | 12 BOQ-3 | 11 BOQ-2 |
| --- | --- | --- | --- | --- | --- | --- | --- | --- | --- | --- | --- | --- | --- | --- | --- | --- | --- | --- | --- | --- | --- | --- | --- | --- | --- | --- | --- | --- | --- | --- | --- | --- | --- | --- | --- |
|  | 3 | **Electrical & Instrumentation Works** |  | 2022-10-12 | 2023-01-17 |  |  |  |  |  |  |  |  |  |  |  |  |  |  |  |  |  |  |  |  |  |  |  |  |  |  |  |  |  |  |
| CON-1230 |  | Installation of ATS | 4d | 2022-10-12 | 2022-10-16 | CON-1150, PRE-2200 | 25d | 0d | 6 DAYS W HOLIDAY | GENERAL LABOR [64 h]; ELECTRICAL TECHNICIAN [64 h]; CRANE [24 h] | 7,558.92 | m | 2279 | 250 | WAT | G29A | WT | C55830 | CON | GEN | PWRPS | CIV | Z1 | QEZ3 | PW-TFS | MEP SUB | Bill-05 | B.5.03 |  |  |  |  |  |  |  |
| CON-1290 |  | Installation of Cable Tray | 14d | 2022-10-17 | 2022-11-01 | CON-1230 | 25d | 0d | 6 DAYS W HOLIDAY | GENERAL LABOR [480 h]; ELECTRICAL TECHNICIAN [336 h] | 967.35 | m | 2279 | 250 | WAT | G29A | WT | C55830 | CON | GEN | PWRPS | ELEC | Z1 | QEZ3 | PW-BLDG | MEP SUB | Bill-04 |  | B.4.01 |  |  |  |  |  |  |
| CON-1470 |  | Laying of Power Cables | 12d | 2022-11-02 | 2023-01-05 | CON-1290 | 25d | 0d | 6 DAYS W HOLIDAY | GENERAL LABOR [288 h]; ELECTRICAL TECHNICIAN [288 h] | 7,359.88 | m | 2279 | 250 | WAT | G29A | WT | C55830 | CON | GEN | PWRPS | ELEC | Z1 | QEZ3 | PW-BLDG | MEP SUB | Bill-04 |  | B.4.01 |  |  |  |  |  |  |
| CON-1640 |  | Earthing Works | 8d | 2022-12-28 | 2023-01-05 | CON-1470 FF | 25d | 0d | 6 DAYS W HOLIDAY | GENERAL LABOR [64 h]; ELECTRICAL TECHNICIAN [64 h] | 797.21 | m | 2279 | 250 | WAT | G29A | WT | C55830 | CON | GEN | PWRPS | CIV | Z1 | QEZ3 | PW-TFS | MEP SUB | Bill-04 |  | B.4.01 |  |  |  |  |  |  |
| CON-1730 |  | Glanding & Termination | 10d | 2023-01-07 | 2023-01-17 | CON-1640 | 25d | 0d | 6 DAYS W HOLIDAY | GENERAL LABOR [80 h]; ELECTRICAL TECHNICIAN [160 h] | 7,558.92 | m | 2279 | 250 | WAT | G29A | WT | C55830 | CON | GEN | PWRPS | CIV | Z1 | QEZ3 | PW-TFS | MEP SUB | Bill-05 | B.5.03 |  |  |  |  |  |  |  |
| CON-1840 |  | Installation of Signal & Control Cables | 10d | 2023-01-07 | 2023-01-17 | CON-1730 FF | 25d |  | 6 DAYS W HOLIDAY | GENERAL LABOR [80 h]; ELECTRICAL TECHNICIAN [160 h] | 15,117.85 | m | 2279 | 250 | WAT | G29A | WT | C55830 | CON | GEN | PWRPS | CIV | Z1 | QEZ3 | PW-TFS | MEP SUB | Bill-05 | B.5.03 |  |  |  |  |  |  |  |
|  | 2 | **Potable Water Pump Station** |  | 2023-01-18 | 2023-02-14 |  |  |  |  |  |  |  |  |  |  |  |  |  |  |  |  |  |  |  |  |  |  |  |  |  |  |  |  |  |  |
|  | 2 | **Mechanical Works (Internal)** |  | 2023-01-18 | 2023-02-14 |  |  |  |  |  |  |  |  |  |  |  |  |  |  |  |  |  |  |  |  |  |  |  |  |  |  |  |  |  |  |
| CON-1180 |  | Installation of Piping Suction and Discharge | 12d | 2023-01-18 | 2023-01-31 | CON-1130 FF+2d | 1d | 0d | 6 DAYS W HOLIDAY | GENERAL LABOR [96 h]; MECHANICAL TECHNICIAN [96 h] | 52,593.64 | m | 2279 | 250 | WAT | G29A | WT | C55830 | CON | GEN | PWRPS | MECH | Z1 | QEZ3 | PW-BLDG | MEP SUB | Bill-04 |  | B.4.01 | DE01 | DE02 | DE03 | DE04 |  |  |
| CON-1130 |  | Installation of Potable Water Pumps | 3d | 2023-01-26 | 2023-01-29 | PRM-1800, MS-1270, MS-1130, PRM-2090, CV1910, CV2170, MS-1350, EN-3090, EN-2160, EN-3570, MS-1270R, MS-1130R | 1d | 0d | 6 DAYS W HOLIDAY | GENERAL LABOR [24 h]; MECHANICAL TECHNICIAN [24 h] | 136,174.76 | m | 2279 | 250 | WAT | G29A | WT | C55830 | CON | GEN | PWRPS | MECH | Z1 | QEZ3 | PW-BLDG | MEP SUB | Bill-03 |  |  | DE01 | DE02 | DE03 | DE04 | B.3.01 |  |
| CON-1280 |  | Installation of Valve , NRV | 4d | 2023-01-30 | 2023-02-02 | CON-1180 FF+2d, PRM-1810 | 1d | 0d | 6 DAYS W HOLIDAY | GENERAL LABOR [32 h]; MECHANICAL TECHNICIAN [32 h] | 27,613.15 | m | 2279 | 250 | WAT | G29A | WT | C55830 | CON | GEN | PWRPS | MECH | Z1 | QEZ3 | PW-BLDG | MEP SUB | Bill-03 |  |  | DE01 | DE02 | DE03 | DE04 | B.3.01 |  |
| CON-1520 |  | Installation of Potable Water Tank | 14d | 2023-01-30 | 2023-02-14 | CON-1340 FF+1d | 1d |  | 6 DAYS W HOLIDAY | GENERAL LABOR [112 h]; MECHANICAL TECHNICIAN [112 h] | 26,296.82 | m | 2279 | 250 | WAT | G29A | WT | C55830 | CON | GEN | PWRPS | CIV | Z1 | QEZ3 | PW-TFS | MEP SUB | Bill-04 |  | B.4.01 |  |  |  |  |  |  |
| CON-1340 |  | Installation of Piping Supports | 9d | 2023-02-04 | 2023-02-13 | CON-1280 | 1d | 0d | 6 DAYS W HOLIDAY | GENERAL LABOR [72 h]; MECHANICAL TECHNICIAN [72 h] | 26,296.82 | m | 2279 | 250 | WAT | G29A | WT | C55830 | CON | GEN | PWRPS | MECH | Z1 | QEZ3 | PW-BLDG | MEP SUB | Bill-04 |  | B.4.01 |  |  |  |  |  |  |
|  | 3 | **Electrical & Instrumentation Works** |  | 2023-01-18 | 2023-02-09 |  |  |  |  |  |  |  |  |  |  |  |  |  |  |  |  |  |  |  |  |  |  |  |  |  |  |  |  |  |  |
| CON-1330 |  | Installation of Cable Tray | 14d | 2023-01-18 | 2023-02-02 | CON-1280 FF | 9d | 0d | 6 DAYS W HOLIDAY | GENERAL LABOR [112 h]; ELECTRICAL TECHNICIAN [112 h] | 967.35 | m | 2279 | 250 | WAT | G29A | WT | C55830 | CON | GEN | PWRPS | ELEC | Z1 | QEZ3 | PW-BLDG | MEP SUB | Bill-04 |  | B.4.01 | DE01 | DE02 | DE03 | DE04 |  |  |
| CON-1540 |  | Laying of Power Cables | 10d | 2023-01-18 | 2023-01-29 | CON-1330 SS | 9d | 0d | 6 DAYS W HOLIDAY | GENERAL LABOR [80 h]; ELECTRICAL TECHNICIAN [80 h] | 14,719.76 | m | 2279 | 250 | WAT | G29A | WT | C55830 | CON | GEN | PWRPS | CIV | Z1 | QEZ3 | PW-TFS | MEP SUB | Bill-04 |  | B.4.01 | DE01 | DE02 | DE03 | DE04 |  |  |
| CON-1610 |  | Earthing Works | 6d | 2023-01-30 | 2023-02-05 | CON-1720 FF | 9d | 0d | 6 DAYS W HOLIDAY | GENERAL LABOR [48 h]; ELECTRICAL TECHNICIAN [48 h] | 797.21 | m | 2279 | 250 | WAT | G29A | WT | C55830 | CON | GEN | PWRPS | CIV | Z1 | QEZ3 | PW-TFS | MEP SUB | Bill-04 |  | B.4.01 | DE01 | DE02 | DE03 | DE04 |  |  |
| CON-1720 |  | Installation of SMDB / LCP | 6d | 2023-01-30 | 2023-02-05 | CON-1540 | 9d | 0d | 6 DAYS W HOLIDAY | GENERAL LABOR [48 h]; ELECTRICAL TECHNICIAN [48 h] | 7,558.92 | m | 2279 | 250 | WAT | G29A | WT | C55830 | CON | GEN | PWRPS | ELEC | Z1 | QEZ3 | PW-BLDG | MEP SUB | Bill-05 | B.5.01 |  | DE01 | DE02 | DE03 | DE04 |  |  |
| CON-1860 |  | Installation of Signal & Control Cables | 10d | 2023-01-30 | 2023-02-09 | CON-1540 | 13d | 11d | 6 DAYS W HOLIDAY | GENERAL LABOR [80 h]; ELECTRICAL TECHNICIAN [80 h] | 7,558.92 | m | 2279 | 250 | WAT | G29A | WT | C55830 | CON | GEN | PWRPS | CIV | Z1 | QEZ3 | PW-TFS | MEP SUB | Bill-05 | B.5.01 |  |  |  |  |  |  |  |
| CON-1880 |  | Installation of Instrumentation | 6d | 2023-01-30 | 2023-02-05 | CON-1790 FF, PRI-1580 | 9d |  | 6 DAYS W HOLIDAY | GENERAL LABOR [48 h]; ELECTRICAL TECHNICIAN [48 h] | 91,850.6 | m | 2279 | 250 | WAT | G29A | WT | C55830 | CON | GEN | PWRPS | CIV | Z1 | QEZ3 | PW-TFS | MEP SUB | Bill-05 | B.5.01 |  | DE01 | DE02 | DE03 | DE04 |  |  |
| CON-1790 |  | Glanding & Termination | 5d | 2023-01-31 | 2023-02-05 | CON-1720 FF, CON-1610 FF | 9d | 0d | 6 DAYS W HOLIDAY | GENERAL LABOR [40 h]; ELECTRICAL TECHNICIAN [40 h] | 15,117.85 | m | 2279 | 250 | WAT | G29A | WT | C55830 | CON | GEN | PWRPS | ELEC | Z1 | QEZ3 | PW-BLDG | MEP SUB | Bill-05 | B.5.01 |  | DE01 | DE02 | DE03 | DE04 |  |  |
|  | 4 | **External Works within Boundary** |  | 2022-08-01 | 2023-02-01 |  |  |  |  |  |  |  |  |  |  |  |  |  |  |  |  |  |  |  |  |  |  |  |  |  |  |  |  |  |  |
|  | 12 | **Street Lighting Works** |  | 2022-08-01 | 2023-02-01 |  |  |  |  |  |  |  |  |  |  |  |  |  |  |  |  |  |  |  |  |  |  |  |  |  |  |  |  |  |  |
|  | 2 | **Cabling Works** |  | 2022-08-01 | 2022-09-21 |  |  |  |  |  |  |  |  |  |  |  |  |  |  |  |  |  |  |  |  |  |  |  |  |  |  |  |  |  |  |
| CON-1010 |  | Trench Excavation | 18d | 2022-08-01 | 2022-08-22 | MS-1130, EN-1840, MS-1350, C1235, MS-1130R | 76.33d | 0d | 6 DAYS W HOLIDAY | EXCAVATOR [108 h]; GENERAL LABOR [288 h]; JCB [108 h]; EXCAVATED MATERIAL [687 cu m] | 9,494.16 | m | 2279 | 250 | WAT | G29A | WT | C55830 | CON | GEN | EXW | STR | Z1 | QEZ3 | GEN |  | Bill-02 |  |  |  |  |  |  |  | B.2.01 |
| CON-1200 |  | Bedding | 18d | 2022-08-08 | 2022-08-29 | CON-1010 FF+6d | 82.33d | 0d | 6 DAYS W HOLIDAY | GENERAL LABOR [144 h]; ELECTRICAL TECHNICIAN [144 h] | 9,494.16 | m | 2279 | 250 | WAT | G29A | WT | C55830 | CON | GEN | EXW | STR | Z1 | QEZ3 | GEN |  | Bill-02 |  |  |  |  |  |  |  | B.2.01 |
| CON-1270 |  | Cable Laying | 18d | 2022-08-15 | 2022-09-05 | CON-1200 FF+6d | 82.33d | 0d | 6 DAYS W HOLIDAY | GENERAL LABOR [288 h]; ELECTRICAL TECHNICIAN [288 h] | 9,494.16 | m | 2279 | 250 | WAT | G29A | WT | C55830 | CON | GEN | EXW | STR | Z1 | QEZ3 | GEN |  | Bill-02 |  |  |  |  |  |  |  | B.2.01 |
| CON-1310 |  | Sand Surround | 18d | 2022-08-22 | 2022-09-12 | CON-1270 FF+6d | 82.33d | 0d | 6 DAYS W HOLIDAY | GENERAL LABOR [144 h]; ELECTRICAL TECHNICIAN [144 h] | 9,494.16 | m | 2279 | 250 | WAT | G29A | WT | C55830 | CON | GEN | EXW | STR | Z1 | QEZ3 | GEN |  | Bill-02 |  |  |  |  |  |  |  | B.2.01 |
| CON-1420 |  | Backfill | 18d | 2022-08-31 | 2022-09-21 | CON-1310 FF+8d | 82.33d |  | 6 DAYS W HOLIDAY | GENERAL LABOR [144 h]; ELECTRICAL TECHNICIAN [144 h] | 40,087.9 | m | 2279 | 250 | WAT | G29A | WT | C55830 | CON | GEN | EXW | STR | Z1 | QEZ3 | GEN |  | Bill-02 |  |  |  |  |  |  |  | B.2.03 |

Notes:
- CON-1230: Expenses: (New Expense) 7558.92
- CON-1290: Expenses: (New Expense) 967.35
- CON-1470: Expenses: (New Expense) 7359.88
- CON-1640: Expenses: (New Expense) 797.21
- CON-1730: Expenses: (New Expense) 7558.92
- CON-1840: Expenses: (New Expense) 15117.9
- CON-1180: Expenses: (New Expense) 52593.6
- CON-1130: Expenses: (New Expense) 136175
- CON-1280: Expenses: (New Expense) 27613.2
- CON-1520: Expenses: (New Expense) 26296.8
- CON-1340: Expenses: (New Expense) 26296.8
- CON-1330: Expenses: (New Expense) 967.35
- CON-1540: Expenses: (New Expense) 14719.8
- CON-1610: Expenses: (New Expense) 797.21
- CON-1720: Expenses: (New Expense) 7558.92
- CON-1860: Expenses: (New Expense) 7558.92
- CON-1880: Expenses: (New Expense) 91850.6
- CON-1790: Expenses: (New Expense) 15117.9
- CON-1010: Expenses: (New Expense) 9494.16
- CON-1200: Expenses: (New Expense) 9494.16
- CON-1270: Expenses: (New Expense) 9494.16
- CON-1310: Expenses: (New Expense) 9494.16
- CON-1420: Expenses: (New Expense) 40087.9

| ID | WBS | Activity | Duration | Start | Finish | Predecessors | Total float | Free float | Calendar | Resources | Cost | Unit | Quantity | Prod.Rate | Water works | Bill Code | user_text1 | 釬珛測鎢杸遙 | 02 Phase | 03 Section | 05 Sub-section | 04 Discipline | 06 Zone | 01 Project | 07 Buildings & Ext. Works | 10 BOQ Cost | 11 BOQ-2 | 09 Subcontractors | 12 BOQ-3 | DELAY EVENT 01 | DELAY EVENT 02 | DELAY EVENT 03 | DELAY EVENT 04 | 14 BOQ-5 | 13 BOQ-4 |
| --- | --- | --- | --- | --- | --- | --- | --- | --- | --- | --- | --- | --- | --- | --- | --- | --- | --- | --- | --- | --- | --- | --- | --- | --- | --- | --- | --- | --- | --- | --- | --- | --- | --- | --- | --- |
|  | 3 | **Street Light Columns** |  | 2022-08-22 | 2023-02-01 |  |  |  |  |  |  |  |  |  |  |  |  |  |  |  |  |  |  |  |  |  |  |  |  |  |  |  |  |  |  |
| CON-1360 |  | Excavation | 10d | 2022-08-22 | 2022-09-03 | CON-1010 | 76.33d | 0d | 6 DAYS W HOLIDAY | EXCAVATOR [60 h]; GENERAL LABOR [160 h]; JCB [60 h]; EXCAVATED MATERIAL [507 cu m] | 9,494.16 | m | 2279 | 250 | WAT | G29A | WT | C55830 | CON | GEN | EXW | STR | Z1 | QEZ3 | GEN | Bill-02 | B.2.01 |  |  |  |  |  |  |  |  |
| CON-1410 |  | Install Precast/Cast-in-situ Foundation | 12d | 2022-08-24 | 2022-09-07 | CON-1360 FF+4d | 76.33d | 74.33d | 6 DAYS W HOLIDAY | GENERAL LABOR [96 h]; ELECTRICAL TECHNICIAN [96 h] | 9,494.16 | m | 2279 | 250 | WAT | G29A | WT | C55830 | CON | GEN | EXW | STR | Z1 | QEZ3 | GEN | Bill-02 | B.2.01 |  |  |  |  |  |  |  |  |
| CON-1500 |  | Lighting Pole Erection | 12d | 2023-01-15 | 2023-01-28 | CON-1410 FF+4d, PRE-2100 | 2d | 0d | 6 DAYS W HOLIDAY | GENERAL LABOR [96 h]; ELECTRICAL TECHNICIAN [96 h]; CRANE [72 h] | 9,494.16 | m | 2279 | 250 | WAT | G29A | WT | C55830 | CON | GEN | EXW | STR | Z1 | QEZ3 | GEN | Bill-02 | B.2.01 |  |  |  |  |  |  |  |  |
| CON-1570 |  | Install Luminaires | 12d | 2023-01-19 | 2023-02-01 | CON-1500 FF+4d, PRE-2100 | 2d | 0d | 6 DAYS W HOLIDAY | GENERAL LABOR [96 h]; ELECTRICAL TECHNICIAN [96 h] | 9,494.16 | m | 2279 | 250 | WAT | G29A | WT | C55830 | CON | GEN | EXW | STR | Z1 | QEZ3 | GEN | Bill-02 | B.2.01 |  |  |  |  |  |  |  |  |
|  | 3 | **Construction Completion Walk Down** |  | 2023-01-19 | 2023-02-22 |  |  |  |  |  |  |  |  |  |  |  |  |  |  |  |  |  |  |  |  |  |  |  |  |  |  |  |  |  |  |
| COM-1280 |  | Application and Approval of SIS from KM | 14d | 2023-01-19 | 2023-02-07 | CON-1570 SS | 1d | 0d |  | GENERAL LABOR [112 h]; MECHANICAL TECHNICIAN [112 h]; ELECTRICAL TECHNICIAN [112 h] | 66,191.65 | m | 2279 | 250 | WAT | G29A | WT | C55830 | HO | GEN | GEN | INFRA | Gen | QEZ3 | PW-BLDG | Bill-03 |  | MEP SUB | B.3.01 |  |  |  |  |  |  |
| COM-1290 |  | Connection and Energized From KM Cabinet | 4d | 2023-02-08 | 2023-02-12 | COM-1280 | 1d | 0d | 6 DAYS W HOLIDAY | GENERAL LABOR [32 h]; MECHANICAL TECHNICIAN [32 h]; ELECTRICAL TECHNICIAN [32 h] | 14,506.8 | m | 2279 | 250 | WAT | G29A | WT | C55830 | HO | GEN | GEN | INFRA | Gen | QEZ3 | PW-BLDG | Bill-03 |  | MEP SUB | B.3.01 |  |  |  |  |  |  |
| COM-1515 |  | Final Inspection by QTEL | 4d | 2023-02-11 | 2023-02-14 | CON-2480 | 1d |  | 6 DAYS W HOLIDAY | GENERAL LABOR [32 h]; MECHANICAL TECHNICIAN [32 h]; ELECTRICAL TECHNICIAN [32 h] | 14,506.8 | m | 2279 | 250 | WAT | G29A | WT | C55830 | HO | GEN | GEN | INFRA | Gen | QEZ3 | PW-BLDG | Bill-03 |  | MEP SUB | B.3.01 |  |  |  |  |  |  |
| COM-1525 |  | Final Inspection by Kharamaa | 2d | 2023-02-11 | 2023-02-12 | CON-2480 | 1d | 0d | 6 DAYS W HOLIDAY | GENERAL LABOR [16 h]; MECHANICAL TECHNICIAN [16 h]; ELECTRICAL TECHNICIAN [16 h] | 14,506.8 | m | 2279 | 250 | WAT | G29A | WT | C55830 | HO | GEN | GEN | INFRA | Gen | QEZ3 | PW-BLDG | Bill-03 |  | MEP SUB | B.3.01 |  |  |  |  |  |  |
| COM-1545 |  | Final Inspection by QCDD | 4d | 2023-02-11 | 2023-02-14 | CON-2480 | 1d |  | 6 DAYS W HOLIDAY | GENERAL LABOR [32 h]; MECHANICAL TECHNICIAN [32 h]; ELECTRICAL TECHNICIAN [32 h] | 14,506.8 | m | 2279 | 250 | WAT | G29A | WT | C55830 | HO | GEN | GEN | INFRA | Gen | QEZ3 | PW-BLDG | Bill-03 |  | MEP SUB | B.3.01 |  |  |  |  |  |  |
| COM-1535 |  | Final Inspection by WOQOD | 2d | 2023-02-13 | 2023-02-14 | CON-1140, COM-1290, COM-1525 | 1d |  | 6 DAYS W HOLIDAY | GENERAL LABOR [16 h]; MECHANICAL TECHNICIAN [16 h]; ELECTRICAL TECHNICIAN [16 h] | 14,506.8 | m | 2279 | 250 | WAT | G29A | WT | C55830 | HO | GEN | GEN | INFRA | Gen | QEZ3 | PW-BLDG | Bill-03 |  | MEP SUB | B.3.01 |  |  |  |  |  |  |
| SNG-1000 |  | Construction Works Inspection Walk Down and Issuance of Snags | 1d | 2023-02-16 | 2023-02-16 | CON-2530, CON-2620, CON-2470, CON-1520, CON-1790, CON-1880, CON-1390, CON-1730, CON-1820, CON-1420, CON-1570 FS+4d, CON-2535, CON-2330, CON-1570 FF, CON-1880 FF, CON-1520 FF, CON-1840, CON-2470 FF, CON-2930, CON-2620 FF, CON-2760, CON-2730 FS+6d, COM-1515, COM-1525, COM-1535, COM-1545, CON-2940 | 0d |  | 6 DAYS W HOLIDAY | GENERAL LABOR [16 h]; MECHANICAL TECHNICIAN [16 h]; ELECTRICAL TECHNICIAN [16 h] | 21,512.87 | m | 2279 | 250 | WAT | G29A | WT | C55830 | CON | GEN | PWRPS | MECH | Z1 | QEZ3 | PW-BLDG | Bill-02 | B.2.01 | MEP SUB |  | DE01 | DE02 | DE03 | DE04 |  |  |
| SNG-1010 |  | Rectification of Snags and Construction Comments | 2d | 2023-02-18 | 2023-02-19 | SNG-1000 | 0d |  | 6 DAYS W HOLIDAY | GENERAL LABOR [32 h]; MECHANICAL TECHNICIAN [32 h]; ELECTRICAL TECHNICIAN [32 h] | 21,512.87 | m | 2279 | 250 | WAT | G29A | WT | C55830 | CON | GEN | PWRPS | MECH | Z1 | QEZ3 | PW-BLDG | Bill-02 | B.2.01 | MEP SUB |  | DE01 | DE02 | DE03 | DE04 |  |  |
| SNG-1020 |  | Request for Mechanicl Completion | 1d | 2023-02-20 | 2023-02-20 | SNG-1010 | 0d |  | 6 DAYS W HOLIDAY | GENERAL LABOR [8 h]; MECHANICAL TECHNICIAN [8 h]; ELECTRICAL TECHNICIAN [8 h] | 21,512.87 | m | 2279 | 250 | WAT | G29A | WT | C55830 | CON | GEN | PWRPS | MECH | Z1 | QEZ3 | PW-BLDG | Bill-02 | B.2.01 | MEP SUB |  | DE01 | DE02 | DE03 | DE04 |  |  |
| SNG-1030 |  | Issuance of Construction Mechanical Completion | 2d | 2023-02-21 | 2023-02-22 | SNG-1020 | 0d |  | 6 DAYS W HOLIDAY | GENERAL LABOR [16 h]; MECHANICAL TECHNICIAN [16 h]; ELECTRICAL TECHNICIAN [16 h] | 21,512.87 | m | 2279 | 250 | WAT | G29A | WT | C55830 | CON | GEN | PWRPS | MECH | Z1 | QEZ3 | PW-BLDG | Bill-02 | B.2.01 | MEP SUB |  | DE01 | DE02 | DE03 | DE04 |  |  |
|  | 1.5.4 | **TESTING & COMMISSIONING** |  | 2023-02-23 | 2023-04-15 |  |  |  |  |  |  |  |  |  |  |  |  |  |  |  |  |  |  |  |  |  |  |  |  |  |  |  |  |  |  |
|  | 2 | **PRECOMMISSIONING (Preliminary Checks/Tests)** |  | 2023-02-23 | 2023-03-06 |  |  |  |  |  |  |  |  |  |  |  |  |  |  |  |  |  |  |  |  |  |  |  |  |  |  |  |  |  |  |
| COM-1060 |  | MCC , UPS and PLC Pre Comm | 2d | 2023-02-23 | 2023-02-25 | SNG-1030, CON-2150, CON-2410, MS-1120, CON-2330, PRI-1580, PRI-1540, SNG-1030 FF, MS-1310, COM-1290, MS-1120R, MS-1310R | 0d |  | 6 DAYS W HOLIDAY | GENERAL LABOR [16 h]; MECHANICAL TECHNICIAN [112 h]; ELECTRICAL TECHNICIAN [16 h] | 72,533 | m | 2279 | 250 | WAT | G29A | WT | C55830 | HO | GEN | GEN | INFRA | Gen | QEZ3 | PW-BLDG | Bill-05 |  | MEP SUB |  | DE01 | DE02 | DE03 | DE04 | B.5.02 |  |
| COM-1070 |  | PS area Pre Comm | 2d | 2023-02-23 | 2023-02-25 | CON-1390, CON-1220, PRE-2200, MS-1130, SNG-1030, SNG-1030 FF, COM-1060 FF, MS-1350, MS-1130R | 0d |  | 6 DAYS W HOLIDAY | GENERAL LABOR [16 h]; MECHANICAL TECHNICIAN [112 h]; ELECTRICAL TECHNICIAN [16 h] | 32,248 | m | 2279 | 250 | WAT | G29A | WT | C55830 | HO | GEN | GEN | INFRA | Gen | QEZ3 | PW-ETFS | Bill-04 |  | MEP SUB |  | DE01 | DE02 | DE03 | DE04 |  | B.4.02 |
| COM-1090 |  | Overhead Crane , Penstock , Macerator Pre Comm | 4d | 2023-02-23 | 2023-02-27 | CON-1440, SNG-1030, COM-1060 FF | 0d |  | 6 DAYS W HOLIDAY | GENERAL LABOR [32 h]; MECHANICAL TECHNICIAN [112 h]; ELECTRICAL TECHNICIAN [32 h] | 18,133.5 | m | 2279 | 250 | WAT | G29A | WT | C55830 | HO | GEN | GEN | INFRA | Gen | QEZ3 | PW-TFA | Bill-05 |  | MEP SUB |  |  |  |  |  | B.5.02 |  |
| COM-1120 |  | Generator Pre Comm | 2d | 2023-02-26 | 2023-02-27 | SNG-1030, COM-1070, CON-1840, CON-1820 | 0d |  | 6 DAYS W HOLIDAY | GENERAL LABOR [16 h]; MECHANICAL TECHNICIAN [112 h]; ELECTRICAL TECHNICIAN [16 h] | 79,952.79 | m | 2279 | 250 | WAT | G29A | WT | C55830 | HO | GEN | GEN | INFRA | Gen | QEZ3 | PW-COMP | Bill-04 |  | MEP SUB |  | DE01 | DE02 | DE03 | DE04 |  | B.4.01 |
| COM-1130 |  | OCU Pre Comm | 2d | 2023-02-26 | 2023-02-27 | CON-2080, SNG-1030, COM-1070 | 0d |  | 6 DAYS W HOLIDAY | GENERAL LABOR [16 h]; MECHANICAL TECHNICIAN [112 h]; ELECTRICAL TECHNICIAN [16 h] | 37,653.23 | m | 2279 | 250 | WAT | G29A | WT | C55830 | HO | GEN | GEN | INFRA | Gen | QEZ3 | PW-CHLO | Bill-05 |  | MEP SUB |  | DE01 | DE02 | DE03 | DE04 | B.5.02 |  |
| COM-1375 |  | Dry Inspection witnessing by Consultant | 1d | 2023-02-28 | 2023-02-28 | COM-1060, COM-1090, COM-1070, COM-1120, COM-1130 | 0d |  | 6 DAYS W HOLIDAY | GENERAL LABOR [8 h]; MECHANICAL TECHNICIAN [8 h]; ELECTRICAL TECHNICIAN [8 h] | 35,640.77 | m | 2279 | 250 | WAT | G29A | WT | C55830 | HO | GEN | GEN | INFRA | Gen | QEZ3 | PW-CHLO | Bill-05 |  | MEP SUB |  | DE01 | DE02 | DE03 | DE04 | B.5.03 |  |
| COM-1385 |  | Attending major snags if any | 2d | 2023-03-01 | 2023-03-02 | COM-1375 | 0d |  | 6 DAYS W HOLIDAY | GENERAL LABOR [16 h]; MECHANICAL TECHNICIAN [16 h]; ELECTRICAL TECHNICIAN [16 h] | 18,133.5 | m | 2279 | 250 | WAT | G29A | WT | C55830 | HO | GEN | GEN | INFRA | Gen | QEZ3 | PW-CHLO | Bill-05 |  | MEP SUB |  | DE01 | DE02 | DE03 | DE04 | B.5.02 |  |
| COM-1395 |  | Dry Inspection witnessing by DNOMD | 1d | 2023-03-04 | 2023-03-04 | COM-1385 | 0d |  | 6 DAYS W HOLIDAY | GENERAL LABOR [8 h]; MECHANICAL TECHNICIAN [88 h]; ELECTRICAL TECHNICIAN [8 h] | 18,133.5 | m | 2279 | 250 | WAT | G29A | WT | C55830 | HO | GEN | GEN | INFRA | Gen | QEZ3 | PW-CHLO | Bill-05 |  | MEP SUB |  | DE01 | DE02 | DE03 | DE04 | B.5.02 |  |
| COM-1405 |  | Attending major snags if any | 2d | 2023-03-05 | 2023-03-06 | COM-1395 | 0d |  | 6 DAYS W HOLIDAY | GENERAL LABOR [16 h]; MECHANICAL TECHNICIAN [96 h]; ELECTRICAL TECHNICIAN [16 h] | 18,133.5 | m | 2279 | 250 | WAT | G29A | WT | C55830 | HO | GEN | GEN | INFRA | Gen | QEZ3 | PW-CHLO | Bill-05 |  | MEP SUB |  | DE01 | DE02 | DE03 | DE04 | B.5.02 |  |

Notes:
- CON-1360: Expenses: (New Expense) 9494.16
- CON-1410: Expenses: (New Expense) 9494.16
- CON-1500: Expenses: (New Expense) 9494.16
- CON-1570: Expenses: (New Expense) 9494.16
- COM-1280: Expenses: (New Expense) 66191.6
- COM-1290: Expenses: (New Expense) 14506.8
- COM-1515: Expenses: (New Expense) 14506.8
- COM-1525: Expenses: (New Expense) 14506.8
- COM-1545: Expenses: (New Expense) 14506.8
- COM-1535: Expenses: (New Expense) 14506.8
- SNG-1000: Expenses: (New Expense) 21512.9
- SNG-1010: Expenses: (New Expense) 21512.9
- SNG-1020: Expenses: (New Expense) 21512.9
- SNG-1030: Expenses: (New Expense) 21512.9
- COM-1060: Expenses: (New Expense) 72533
- COM-1070: Expenses: (New Expense) 32248
- COM-1090: Expenses: (New Expense) 18133.5
- COM-1120: Expenses: (New Expense) 79952.8
- COM-1130: Expenses: (New Expense) 37653.2
- COM-1375: Expenses: (New Expense) 35640.8
- COM-1385: Expenses: (New Expense) 18133.5
- COM-1395: Expenses: (New Expense) 18133.5
- COM-1405: Expenses: (New Expense) 18133.5

| ID | WBS | Activity | Type | Duration | Start | Finish | Predecessors | Total float | Free float | Calendar | Resources | Cost | Unit | Quantity | Prod.Rate | Water works | Bill Code | user_text1 | 釬珛測鎢杸遙 | 02 Phase | 03 Section | 05 Sub-section | 04 Discipline | 06 Zone | 01 Project | 07 Buildings & Ext. Works | 09 Subcontractors | 10 BOQ Cost | 12 BOQ-3 | DELAY EVENT 01 | DELAY EVENT 02 | DELAY EVENT 03 | DELAY EVENT 04 | 14 BOQ-5 | 15 BOQ-6 |
| --- | --- | --- | --- | --- | --- | --- | --- | --- | --- | --- | --- | --- | --- | --- | --- | --- | --- | --- | --- | --- | --- | --- | --- | --- | --- | --- | --- | --- | --- | --- | --- | --- | --- | --- | --- |
|  | 3 | **UNIT TESTING (System Commissioning)** |  |  | 2023-03-07 | 2023-04-01 |  |  |  |  |  |  |  |  |  |  |  |  |  |  |  |  |  |  |  |  |  |  |  |  |  |  |  |  |  |
| COM-1220 |  | Generator Load Test |  | 2d | 2023-03-07 | 2023-03-08 | COM-1120, COM-1405 | 0d |  | 6 DAYS W HOLIDAY | GENERAL LABOR [16 h]; MECHANICAL TECHNICIAN [16 h]; ELECTRICAL TECHNICIAN [16 h] | 72,533 | m | 2279 | 250 | WAT | G29A | WT | C55830 | HO | GEN | GEN | INFRA | Gen | QEZ3 | PW-COMP | MEP SUB | Bill-03 | B.3.01 | DE01 | DE02 | DE03 | DE04 |  |  |
| COM-1250 |  | MCC Energization |  | 1d | 2023-03-09 | 2023-03-09 | COM-1060, COM-1290, COM-1220, COM-1405 | 0d |  | 6 DAYS W HOLIDAY | GENERAL LABOR [8 h]; MECHANICAL TECHNICIAN [8 h]; ELECTRICAL TECHNICIAN [8 h] | 7,069.8 | m | 2279 | 250 | WAT | G29A | WT | C55830 | HO | GEN | GEN | INFRA | Gen | QEZ3 | PW-BLDG | MEP SUB | Bill-05 |  | DE01 | DE02 | DE03 | DE04 | B.5.01 |  |
| COM-1252 |  | HVAC System Test |  | 2d | 2023-03-11 | 2023-03-12 | COM-1250 | 0d |  | 6 DAYS W HOLIDAY | GENERAL LABOR [16 h]; MECHANICAL TECHNICIAN [16 h]; ELECTRICAL TECHNICIAN [16 h] | 7,069.8 | m | 2279 | 250 | WAT | G29A | WT | C55830 | HO | GEN | GEN | INFRA | Gen | QEZ3 | PW-BLDG | MEP SUB | Bill-05 |  | DE01 | DE02 | DE03 | DE04 | B.5.01 |  |
| COM-1254 |  | UPS Test |  | 3d | 2023-03-13 | 2023-03-15 | COM-1405, COM-1252 | 0d |  | 6 DAYS W HOLIDAY | GENERAL LABOR [24 h]; MECHANICAL TECHNICIAN [24 h]; ELECTRICAL TECHNICIAN [24 h] | 7,069.8 | m | 2279 | 250 | WAT | G29A | WT | C55830 | HO | GEN | GEN | INFRA | Gen | QEZ3 | PW-BLDG | MEP SUB | Bill-05 |  | DE01 | DE02 | DE03 | DE04 | B.5.01 |  |
| COM-1255 |  | Instrument Loop Test |  | 3d | 2023-03-13 | 2023-03-15 | COM-1250, COM-1254 FF | 2d |  | 6 DAYS W HOLIDAY | GENERAL LABOR [24 h]; MECHANICAL TECHNICIAN [24 h]; ELECTRICAL TECHNICIAN [24 h] | 7,069.8 | m | 2279 | 250 | WAT | G29A | WT | C55830 | HO | GEN | GEN | INFRA | Gen | QEZ3 | PW-BLDG | MEP SUB | Bill-05 |  |  |  |  |  | B.5.01 |  |
| COM-1258 |  | OCU Test |  | 2d | 2023-03-16 | 2023-03-18 | COM-1130, COM-1405, COM-1254 | 0d |  | 6 DAYS W HOLIDAY | GENERAL LABOR [16 h]; MECHANICAL TECHNICIAN [16 h]; ELECTRICAL TECHNICIAN [16 h] | 72,534.1 | m | 2279 | 250 | WAT | G29A | WT | C55830 | HO | GEN | GEN | INFRA | Gen | QEZ3 | PW-CHLO | MEP SUB | Bill-03 | B.3.01 | DE01 | DE02 | DE03 | DE04 |  |  |
| COM-1262 |  | Overhead Crane , Penstock , Unit Testing |  | 2d | 2023-03-16 | 2023-03-18 | COM-1090, COM-1405, COM-1254 | 0d |  | 6 DAYS W HOLIDAY | GENERAL LABOR [16 h]; MECHANICAL TECHNICIAN [16 h]; ELECTRICAL TECHNICIAN [16 h] | 72,534.1 | m | 2279 | 250 | WAT | G29A | WT | C55830 | HO | GEN | GEN | INFRA | Gen | QEZ3 | PW-TFA | MEP SUB | Bill-03 | B.3.01 | DE01 | DE02 | DE03 | DE04 |  |  |
| COM-1435 |  | Fuel Oil System Test |  | 2d | 2023-03-16 | 2023-03-18 | COM-1405, COM-1254 | 0d |  | 6 DAYS W HOLIDAY | GENERAL LABOR [16 h]; MECHANICAL TECHNICIAN [96 h]; ELECTRICAL TECHNICIAN [16 h] | 7,069.8 | m | 2279 | 250 | WAT | G29A | WT | C55830 | HO | GEN | GEN | INFRA | Gen | QEZ3 | PW-BLDG | MEP SUB | Bill-05 |  | DE01 | DE02 | DE03 | DE04 | B.5.01 |  |
| COM-1445 |  | Macerator Test |  | 2d | 2023-03-16 | 2023-03-18 | COM-1405, COM-1254 | 0d |  | 6 DAYS W HOLIDAY | GENERAL LABOR [16 h]; MECHANICAL TECHNICIAN [16 h]; ELECTRICAL TECHNICIAN [16 h] | 7,069.8 | m | 2279 | 250 | WAT | G29A | WT | C55830 | HO | GEN | GEN | INFRA | Gen | QEZ3 | PW-BLDG | MEP SUB | Bill-05 |  | DE01 | DE02 | DE03 | DE04 | B.5.01 |  |
| COM-1465 |  | High Pressure Wash Water System Test |  | 2d | 2023-03-16 | 2023-03-18 | COM-1405, COM-1254 | 0d |  | 6 DAYS W HOLIDAY | GENERAL LABOR [16 h]; MECHANICAL TECHNICIAN [16 h]; ELECTRICAL TECHNICIAN [16 h] | 7,069.8 | m | 2279 | 250 | WAT | G29A | WT | C55830 | HO | GEN | GEN | INFRA | Gen | QEZ3 | PW-BLDG | MEP SUB | Bill-05 |  | DE01 | DE02 | DE03 | DE04 | B.5.01 |  |
| COM-1478 |  | PS area Unit Testing( • Main Pumps Inspection by Consultant (4hrs recirculation + 3days continuous run for each pump) ) |  | 7d | 2023-03-19 | 2023-03-26 | COM-1070, COM-1405, COM-1262, COM-1220, COM-1258, COM-1250, COM-1255, COM-1435, COM-1445, COM-1254, COM-1465, COM-1252 | 0d |  | 6 DAYS W HOLIDAY | GENERAL LABOR [56 h]; MECHANICAL TECHNICIAN [56 h]; ELECTRICAL TECHNICIAN [56 h] | 72,534.1 | m | 2279 | 250 | WAT | G29A | WT | C55830 | HO | GEN | GEN | INFRA | Gen | QEZ3 | PW-ETFS | MEP SUB | Bill-03 | B.3.01 | DE01 | DE02 | DE03 | DE04 |  |  |
| COM-1485 |  | Attending major snags if any |  | 2d | 2023-03-27 | 2023-03-28 | COM-1478 | 0d |  | 6 DAYS W HOLIDAY | GENERAL LABOR [16 h]; MECHANICAL TECHNICIAN [16 h]; ELECTRICAL TECHNICIAN [16 h] | 7,069.8 | m | 2279 | 250 | WAT | G29A | WT | C55830 | HO | GEN | GEN | INFRA | Gen | QEZ3 | PW-BLDG | MEP SUB | Bill-05 |  | DE01 | DE02 | DE03 | DE04 | B.5.01 |  |
| COM-1495 |  | Wet Inspection by DNOMD |  | 1d | 2023-03-29 | 2023-03-29 | COM-1485 | 0d |  | 6 DAYS W HOLIDAY | GENERAL LABOR [8 h]; MECHANICAL TECHNICIAN [8 h]; ELECTRICAL TECHNICIAN [8 h] | 7,069.8 | m | 2279 | 250 | WAT | G29A | WT | C55830 | HO | GEN | GEN | INFRA | Gen | QEZ3 | PW-BLDG | MEP SUB | Bill-05 |  | DE01 | DE02 | DE03 | DE04 | B.5.01 |  |
| COM-1505 |  | Attending major snags if any |  | 2d | 2023-03-30 | 2023-04-01 | COM-1495 | 0d |  | 6 DAYS W HOLIDAY | GENERAL LABOR [16 h]; MECHANICAL TECHNICIAN [16 h]; ELECTRICAL TECHNICIAN [16 h] | 7,069.8 | m | 2279 | 250 | WAT | G29A | WT | C55830 | HO | GEN | GEN | INFRA | Gen | QEZ3 | PW-BLDG | MEP SUB | Bill-05 |  | DE01 | DE02 | DE03 | DE04 | B.5.01 |  |
|  | 1 | **SYSTEM VALIDATION TEST** |  |  | 2023-04-02 | 2023-04-04 |  |  |  |  |  |  |  |  |  |  |  |  |  |  |  |  |  |  |  |  |  |  |  |  |  |  |  |  |  |
| COM-1355 |  | Internal SAT (SCADA/PLC) witnessing by Consultant |  | 1d | 2023-04-02 | 2023-04-02 | COM-1250, COM-1505 | 0d |  | 6 DAYS W HOLIDAY | GENERAL LABOR [8 h]; MECHANICAL TECHNICIAN [8 h]; ELECTRICAL TECHNICIAN [8 h] | 14,923 | m | 2279 | 250 | WAT | G29A | WT | C55830 | HO | GEN | GEN | INFRA | Gen | QEZ3 | PW-BLDG | MEP SUB | Bill-03 | B.3.01 | DE01 | DE02 | DE03 | DE04 |  |  |
| COM-1365 |  | Attending major snags if any |  | 2d | 2023-04-03 | 2023-04-04 | COM-1355 | 0d |  | 7 DAYS W/O HOLIDAY | GENERAL LABOR [16 h]; MECHANICAL TECHNICIAN [16 h]; ELECTRICAL TECHNICIAN [16 h] | 14,923 | m | 2279 | 250 | WAT | G29A | WT | C55830 | HO | GEN | GEN | INFRA | Gen | QEZ3 | PW-BLDG | MEP SUB | Bill-03 | B.3.01 | DE01 | DE02 | DE03 | DE04 |  |  |
|  | 4 | **PERFORMANCE TESTING (Commissioning and Setting to Work)** |  |  | 2023-04-05 | 2023-04-15 |  |  |  |  |  |  |  |  |  |  |  |  |  |  |  |  |  |  |  |  |  |  |  |  |  |  |  |  |  |
| COM-1320 |  | Master SCADA Connection |  | 1d | 2023-04-05 | 2023-04-05 | COM-1250, COM-1220, COM-1365 | 0d |  | 7 DAYS W/O HOLIDAY | GENERAL LABOR [8 h]; MECHANICAL TECHNICIAN [8 h]; ELECTRICAL TECHNICIAN [8 h] | 22,488 | m | 2279 | 250 | WAT | G29A | WT | C55830 | HO | GEN | GEN | INFRA | Gen | QEZ3 | PW-BLDG | MEP SUB | Bill-03 | B.3.01 | DE01 | DE02 | DE03 | DE04 |  |  |
| COM-1330 |  | Final SAT (SCADA/PLC) Witness by DNOMD |  | 1d | 2023-04-06 | 2023-04-06 | COM-1320 | 0d |  | 7 DAYS W/O HOLIDAY | GENERAL LABOR [8 h]; MECHANICAL TECHNICIAN [8 h]; ELECTRICAL TECHNICIAN [8 h] | 22,488 | m | 2279 | 250 | WAT | G29A | WT | C55830 | HO | GEN | GEN | INFRA | Gen | QEZ3 | PW-BLDG | MEP SUB | Bill-03 | B.3.01 | DE01 | DE02 | DE03 | DE04 |  |  |
| COM-1340 |  | Attending Major Snags if Any |  | 2d | 2023-04-07 | 2023-04-08 | COM-1330 | 0d |  | 7 DAYS W/O HOLIDAY | GENERAL LABOR [16 h]; MECHANICAL TECHNICIAN [16 h]; ELECTRICAL TECHNICIAN [16 h] | 22,488 | m | 2279 | 250 | WAT | G29A | WT | C55830 | HO | GEN | GEN | INFRA | Gen | QEZ3 | PW-BLDG | MEP SUB | Bill-03 | B.3.01 | DE01 | DE02 | DE03 | DE04 |  |  |
| COM-1345 |  | PS Performance Testing |  | 7d | 2023-04-09 | 2023-04-15 | COM-1220, COM-1262, COM-1250, COM-1258, COM-1340 | 0d |  | 7 DAYS W/O HOLIDAY | GENERAL LABOR [56 h]; MECHANICAL TECHNICIAN [56 h]; ELECTRICAL TECHNICIAN [56 h] | 22,488 | m | 2279 | 250 | WAT | G29A | WT | C55830 | HO | GEN | GEN | INFRA | Gen | QEZ3 | PW-BLDG | MEP SUB | Bill-03 | B.3.01 | DE01 | DE02 | DE03 | DE04 |  |  |
|  | 2 | **CLOSE OUT & HANDOVER** |  |  | 2023-02-20 | 2023-04-15 |  |  |  |  |  |  |  |  |  |  |  |  |  |  |  |  |  |  |  |  |  |  |  |  |  |  |  |  |  |
| COM-1000 |  | Civil-As-Built drawings Prepare and submit to Engineer |  | 20d | 2023-02-20 | 2023-03-14 | CON-1520 FF+14d, PR-1140, CON-1420 FF+14d, PR-1170, PR-1180, SNG-1010, CON-2130 FF+14d, PRM-1820 FF+14d, MS-1120 FF+14d, C1162 FF+14d, MS-1130 FF+14d, C1235 FF+14d, C1590 FF+14d, EN-3000 FF+14d, EN-2160 FF+14d, MS-1310 FF+14d, MS-1350 FF+14d, MS-1120R FF+14d, MS-1130R FF+14d, MS-1310R FF+14d, PRM-1820R FF+14d | 0d |  | 6 DAYS W HOLIDAY | MECHANICAL TECHNICIAN [160 h]; ELECTRICAL TECHNICIAN [160 h] | 866.72 |  |  |  |  | G1 |  | TC1040 | HO | GEN | GEN | GEN | Gen | QEZ3 | GEN |  | Bill-06 |  | DE01 |  |  |  |  | B.6.01 |
| COM-1300 |  | DCU Clearance |  | 40d | 2023-02-23 | 2023-04-10 | COM-1000 SS, COM-1555 SS, COM-1585 SS, COM-1615 SS, COM-1645 SS | 4d |  | 6 DAYS W HOLIDAY | MECHANICAL TECHNICIAN [320 h]; ELECTRICAL TECHNICIAN [320 h] | 866.72 |  |  |  |  | G1 |  | TC1040 | HO | GEN | GEN | GEN | Gen | QEZ3 | GEN |  | Bill-06 |  |  |  |  |  |  | B.6.01 |
| COM-1310 |  | Provide Spare Parts and Delivered to PWA Store |  | 20d | 2023-02-23 | 2023-03-18 | COM-1000 SS, COM-1555 SS, COM-1585 SS, COM-1615 SS, COM-1645 SS | 24d |  | 6 DAYS W HOLIDAY | MECHANICAL TECHNICIAN [160 h]; ELECTRICAL TECHNICIAN [160 h] | 866.72 |  |  |  |  | G1 |  | TC1040 | HO | GEN | GEN | GEN | Gen | QEZ3 | GEN |  | Bill-06 |  |  |  |  |  |  | B.6.01 |
| COM-1555 |  | O&M Manuals Prepare and submit to Engineer |  | 20d | 2023-02-23 | 2023-03-18 | PR-1140, CON-2620 FF+14d, CON-1820 FF+14d, PRE-2200 FF+20d, SNG-1010, SNG-1030, CON-2050 FF+14d, CON-1860 FF+20d, PRM-1810 FF+14d, CON-2130 FF+14d, PRM-1820 FF+14d, MS-1120 FF+14d, C1162 FF+14d, EN-2160 FF+14d, MS-1310 FF+14d, MS-1120R FF+14d, MS-1310R FF+14d, PRM-1820R FF+14d | 4d | 0d | 6 DAYS W HOLIDAY | MECHANICAL TECHNICIAN [160 h]; ELECTRICAL TECHNICIAN [160 h] | 866.72 |  |  |  |  | G1 |  | TC1040 | HO | GEN | GEN | GEN | Gen | QEZ3 | GEN |  | Bill-06 |  | DE01 |  |  |  |  | B.6.01 |
| COM-1585 |  | Mechanical-As-Built drawings Prepare and submit to Engineer |  | 20d | 2023-02-23 | 2023-03-18 | CON-1520 FF+14d, PR-1140, PRE-2200 FF+20d, SNG-1010, SNG-1030, CON-2050 FF+14d, PRM-1810 FF+14d, CON-2130 FF+14d, PRM-1820 FF+14d, MS-1120 FF+14d, C1162 FF+14d, EN-3000 FF+14d, EN-2160 FF+14d, MS-1310 FF+14d, MS-1120R FF+14d, MS-1310R FF+14d, PRM-1820R FF+14d | 4d | 0d | 6 DAYS W HOLIDAY | MECHANICAL TECHNICIAN [160 h]; ELECTRICAL TECHNICIAN [160 h] | 866.72 |  |  |  |  | G1 |  | TC1040 | HO | GEN | GEN | GEN | Gen | QEZ3 | GEN |  | Bill-06 |  | DE01 |  |  |  |  | B.6.01 |
| COM-1615 |  | Electrical-As-Built drawings Prepare and submit to Engineer |  | 20d | 2023-02-23 | 2023-03-18 | PR-1140, CON-2620 FF+14d, CON-1820 FF+14d, SNG-1010, SNG-1030, CON-1570 FF+6d, CON-1860 FF+20d, CON-1790 FF+14d, CON-2130 FF+14d, MS-1120 FF+14d, MS-1130 FF+14d, EN-2160 FF+14d, MS-1310 FF+14d, MS-1350 FF+14d, MS-1120R FF+14d, MS-1130R FF+14d, MS-1310R FF+14d | 2d | 0d | 6 DAYS W HOLIDAY | MECHANICAL TECHNICIAN [160 h]; ELECTRICAL TECHNICIAN [160 h] | 866.72 |  |  |  |  | G1 |  | TC1040 | HO | GEN | GEN | GEN | Gen | QEZ3 | GEN |  | Bill-06 |  | DE01 |  |  |  |  | B.6.01 |
| COM-1645 |  | ICA-As-Built drawings Prepare and submit to Engineer |  | 20d | 2023-02-23 | 2023-03-18 | PR-1140, CON-2620 FF+14d, PR-1170, PR-1180, SNG-1010, SNG-1030, CON-2050 FF+14d, CON-1860 FF+20d, CON-2130 FF+14d | 4d | 0d | 6 DAYS W HOLIDAY | MECHANICAL TECHNICIAN [160 h]; ELECTRICAL TECHNICIAN [160 h] | 866.72 |  |  |  |  | G1 |  | TC1040 | HO | GEN | GEN | GEN | Gen | QEZ3 | GEN |  | Bill-06 |  | DE01 |  |  |  |  | B.6.01 |
| COM-1595 |  | Mechanical-As-Built drawings Review/approval by Engineer |  | 12d | 2023-03-01 | 2023-03-14 | COM-1585 SS+5d | 11.88d | 0d | 6 DAYS W HOLIDAY | MECHANICAL TECHNICIAN [96 h]; ELECTRICAL TECHNICIAN [96 h] | 866.72 |  |  |  |  | G1 |  | TC1050 | HO | GEN | GEN | GEN | Gen | QEZ3 | GEN |  | Bill-06 |  | DE01 |  |  |  |  | B.6.01 |
| COM-1575 |  | O&M Manuals Review/approval by Engineer |  | 16d | 2023-03-04 | 2023-03-21 | COM-1555 SS+7d | 5.88d | 0d | 6 DAYS W HOLIDAY | MECHANICAL TECHNICIAN [128 h]; ELECTRICAL TECHNICIAN [128 h] | 866.72 |  |  |  |  | G1 |  | TC1050 | HO | GEN | GEN | GEN | Gen | QEZ3 | GEN |  | Bill-06 |  | DE01 |  |  |  |  | B.6.01 |
| COM-1655 |  | ICA-As-Built drawings Review/approval by Engineer |  | 12d | 2023-03-04 | 2023-03-16 | COM-1645 SS+7d | 9.88d | 0d | 6 DAYS W HOLIDAY | MECHANICAL TECHNICIAN [96 h]; ELECTRICAL TECHNICIAN [96 h] | 866.72 |  |  |  |  | G1 |  | TC1050 | HO | GEN | GEN | GEN | Gen | QEZ3 | GEN |  | Bill-06 |  | DE01 |  |  |  |  | B.6.01 |
| COM-1605 |  | Mechanical-As-Built drawings Resubmit/Final approval by Engineer | resource dependent | 6.88d | 2023-03-15 | 2023-03-22 | COM-1595 FF+7d | 12d | 11.12d | 6 DAYS W HOLIDAY | MECHANICAL TECHNICIAN [48 h]; ELECTRICAL TECHNICIAN [48 h] | 866.72 | Item | 1 |  |  | G1 |  | TC1070 | HO | GEN | GEN | GEN | Gen | QEZ3 | GEN |  | Bill-06 |  | DE01 |  |  |  |  | B.6.01 |
| COM-1665 |  | ICA-As-Built drawings Resubmit/Final approval by Engineer | resource dependent | 6.88d | 2023-03-16 | 2023-03-23 | COM-1655 FF+7d | 11d | 10.12d | 6 DAYS W HOLIDAY | MECHANICAL TECHNICIAN [48 h]; ELECTRICAL TECHNICIAN [48 h] | 866.72 | Item | 1 |  |  | G1 |  | TC1070 | HO | GEN | GEN | GEN | Gen | QEZ3 | GEN |  | Bill-06 |  | DE01 |  |  |  |  | B.6.01 |
| COM-1565 |  | O&M Manuals Resubmit/Final approval by Engineer | resource dependent | 6.88d | 2023-03-22 | 2023-03-29 | COM-1575 FF+7d | 6d | 5.12d | 6 DAYS W HOLIDAY | MECHANICAL TECHNICIAN [48 h]; ELECTRICAL TECHNICIAN [48 h] | 866.72 | Item | 1 |  |  | G1 |  | TC1070 | HO | GEN | GEN | GEN | Gen | QEZ3 | GEN |  | Bill-06 |  | DE01 |  |  |  |  | B.6.01 |
| COM-1010 |  | Civil-As-Built drawings Review/approval by Engineer |  | 20d | 2023-03-23 | 2023-04-15 | COM-1000 FS+7d | 0d |  | 6 DAYS W HOLIDAY | MECHANICAL TECHNICIAN [160 h]; ELECTRICAL TECHNICIAN [160 h] | 866.72 |  |  |  |  | G1 |  | TC1050 | HO | GEN | GEN | GEN | Gen | QEZ3 | GEN |  | Bill-06 |  | DE01 |  |  |  |  | B.6.01 |
| COM-1625 |  | Electrical-As-Built drawings Review/approval by Engineer |  | 12d | 2023-03-27 | 2023-04-09 | COM-1615 FS+7d | 2d | 0d | 6 DAYS W HOLIDAY | MECHANICAL TECHNICIAN [96 h]; ELECTRICAL TECHNICIAN [96 h] | 866.72 |  |  |  |  | G1 |  | TC1050 | HO | GEN | GEN | GEN | Gen | QEZ3 | GEN |  | Bill-06 |  | DE01 |  |  |  |  | B.6.01 |
| COM-1030 |  | Civil-As-Built drawings Resubmit/Final approval by Engineer | resource dependent | 5.88d | 2023-03-29 | 2023-04-04 | COM-1010 SS+5d | 1d | 0.12d | 6 DAYS W HOLIDAY | MECHANICAL TECHNICIAN [40 h]; ELECTRICAL TECHNICIAN [40 h] | 866.72 | Item | 1 |  |  | G1 |  | TC1070 | HO | GEN | GEN | GEN | Gen | QEZ3 | GEN |  | Bill-06 |  | DE01 |  |  |  |  | B.6.01 |
| COM-1635 |  | Electrical-As-Built drawings Resubmit/Final approval by Engineer | resource dependent | 6.88d | 2023-04-04 | 2023-04-11 | COM-1625 SS+7d | 2d | 1d | 6 DAYS W HOLIDAY | MECHANICAL TECHNICIAN [48 h]; ELECTRICAL TECHNICIAN [48 h] | 866.72 | Item | 1 |  |  | G1 |  | TC1070 | HO | GEN | GEN | GEN | Gen | QEZ3 | GEN |  | Bill-06 |  | DE01 |  |  |  |  | B.6.01 |
| COM-1270 |  | Demobilization & Handover | resource dependent | 6.88d | 2023-04-05 | 2023-04-12 | COM-1090, COM-1060 FF+15d, COM-1130, COM-1070, COM-1120, COM-1030 FF, COM-1030, COM-1565 FF, COM-1565, COM-1605 FF, COM-1605, COM-1635 SS, COM-1665 FF, COM-1665 | 1d | 2.12d | 6 DAYS W HOLIDAY | MECHANICAL TECHNICIAN [48 h]; ELECTRICAL TECHNICIAN [48 h] | 866.72 | Item | 1 |  |  | G1 |  | TC1070 | HO | GEN | GEN | GEN | Gen | QEZ3 | GEN | MEP SUB | Bill-06 |  | DE01 |  |  |  |  | B.6.01 |

Notes:
- COM-1220: Expenses: (New Expense) 72533
- COM-1250: Expenses: (New Expense) 7069.8
- COM-1252: Expenses: (New Expense) 7069.8
- COM-1254: Expenses: (New Expense) 7069.8
- COM-1255: Expenses: (New Expense) 7069.8
- COM-1258: Expenses: (New Expense) 72534.1
- COM-1262: Expenses: (New Expense) 72534.1
- COM-1435: Expenses: (New Expense) 7069.8
- COM-1445: Expenses: (New Expense) 7069.8
- COM-1465: Expenses: (New Expense) 7069.8
- COM-1478: Expenses: (New Expense) 72534.1
- COM-1485: Expenses: (New Expense) 7069.8
- COM-1495: Expenses: (New Expense) 7069.8
- COM-1505: Expenses: (New Expense) 7069.8
- COM-1355: Expenses: (New Expense) 14923
- COM-1365: Expenses: (New Expense) 14923
- COM-1320: Expenses: (New Expense) 22488
- COM-1330: Expenses: (New Expense) 22488
- COM-1340: Expenses: (New Expense) 22488
- COM-1345: Expenses: (New Expense) 22488
- COM-1000: Expenses: (New Expense) 866.72
- COM-1300: Expenses: (New Expense) 866.72
- COM-1310: Expenses: (New Expense) 866.72
- COM-1555: Expenses: (New Expense) 866.72
- COM-1585: Expenses: (New Expense) 866.72
- COM-1615: Expenses: (New Expense) 866.72
- COM-1645: Expenses: (New Expense) 866.72
- COM-1595: Expenses: (New Expense) 866.72
- COM-1575: Expenses: (New Expense) 866.72
- COM-1655: Expenses: (New Expense) 866.72
- COM-1605: Expenses: (New Expense) 866.72
- COM-1665: Expenses: (New Expense) 866.72
- COM-1565: Expenses: (New Expense) 866.72
- COM-1010: Expenses: (New Expense) 866.72
- COM-1625: Expenses: (New Expense) 866.72
- COM-1030: Expenses: (New Expense) 866.72
- COM-1635: Expenses: (New Expense) 866.72
- COM-1270: Expenses: (New Expense) 866.72

## Activity codes

| Code | Value | Meaning |
| --- | --- | --- |
| 01 Project | QEZ3 | Const. of Utilities, Arterial Roads & Pumping Stations |
| 02 Phase | CON | Construction |
| 02 Phase | ENG | Engineering & Design |
| 02 Phase | GEN | General and Preliminaries |
| 02 Phase | HO | Close Out & Handover |
| 02 Phase | PRC | Procurement |
| 03 Section | GEN | General |
| 03 Section | ML | Project Milestone |
| 03 Section | MS | Method Statement |
| 03 Section | PRL | Preliminaries |
| 03 Section | PROC | Material Procurement |
| 03 Section | SHOP | Shop Drawing |
| 04 Discipline | CIV | Civil Works/Structure |
| 04 Discipline | ELEC | Electrical Works |
| 04 Discipline | GEN | General |
| 04 Discipline | INFRA | Infrastructure Facilities in Plot UT-013 |
| 04 Discipline | INST | Instrumentation |
| 04 Discipline | MECH | Mechanical Works |
| 04 Discipline | MOB | Mobilization |
| 04 Discipline | STR | Street Lighting Works |
| 05 Sub-section | EXW | External Works within Bounday Plot UT-013 |
| 05 Sub-section | GEN | General |
| 05 Sub-section | PWRPS | Potable Water Reservoir Pumping Station (RPS) |
| 05 Sub-section | TSRPS | TSE Reservoir Pumping Station (RPS) |
| 06 Zone | Gen | General |
| 06 Zone | Z1 | Zone 1 |
| 07 Buildings & Ext. Works | GEN | General |
| 07 Buildings & Ext. Works | PW-BLDG | Potable Water PS Building |
| 07 Buildings & Ext. Works | PW-CHLO | Chlorination Building |
| 07 Buildings & Ext. Works | PW-COMP | Compressor Building |
| 07 Buildings & Ext. Works | PW-ETFS | Emergency Tanker Filling Station Building |
| 07 Buildings & Ext. Works | PW-TFA | Tanker Filling Station Area |
| 07 Buildings & Ext. Works | PW-TFS | Tanker Filling Station Office |
| 09 Subcontractors | MEP SUB | MEP SUBCONTRACTOR |
| 10 BOQ Cost | Bill-01 | BILL NO. 1 - GENERAL ITEMS |
| 10 BOQ Cost | Bill-02 | BILL NO. 2 - PS 25/9A (N) - CIVIL AND STRUCTURAL WORKS |
| 10 BOQ Cost | Bill-03 | BILL NO. 3 - PS 25/9 A (N) - MECHANICAL WORKS |
| 10 BOQ Cost | Bill-04 | BILL NO. 4 - PS 25/9 A (N) - ELECTRICAL WORKS |
| 10 BOQ Cost | Bill-05 | BILL NO. 5 - PS 25/9 A (N) - CONTROL WORKS |
| 10 BOQ Cost | Bill-06 | BILL NO. 6 - PS 25/9 A (N) - HANDOVER |
| 11 BOQ-2 | B.2.01 | GROUND INVESTIGATION |
| 11 BOQ-2 | B.2.02 | SITE WORK |
| 11 BOQ-2 | B.2.03 | RAISING MAIN |
| 11 BOQ-2 | B.2.04 | GRAVITY SEWER LINE |
| 11 BOQ-2 | B.2.05 | PUMP STATION, WET WELL, AND MACERATOR |
| 11 BOQ-2 | B.2.06 | MCC AND BATTERY ROOM |
| 11 BOQ-2 | B.2.07 | FLOW METER CHAMBER |
| 11 BOQ-2 | B.2.08 | VALVE CHAMBER |
| 11 BOQ-2 | B.2.09 | DISCHARGE CHAMBER |
| 11 BOQ-2 | B.2.11 | REINFORCED CONCRETE SLABS |
| 12 BOQ-3 | B.3.01 | Supply and Deliver New Mechanical Plant, Equipment and Appurtenances. |
| 12 BOQ-3 | B.3.02 | Install, Test & Commission Mechanical Plant, Equipment and Appurtenances. |
| 12 BOQ-3 | B.3.03 | Supply & Delivery of Spare Parts. |
| 13 BOQ-4 | B.4.01 | Supply and Deliver New Electrical Equipment, Fittings and Accessories |
| 13 BOQ-4 | B.4.02 | Install, Test and Commission Electrical Equipment |
| 13 BOQ-4 | B.4.03 | Supply and Delivery of Spare Parts |
| 14 BOQ-5 | B.5.01 | Supply and Delivery of New Instrumentation and Control Equipment, Fittings and Accessories |
| 14 BOQ-5 | B.5.02 | Install, Test and Commission Instrumentation and Control Equipment, Fittings and Accessories |
| 14 BOQ-5 | B.5.03 | Supply & Delivery of Spare Parts |
| 15 BOQ-6 | B.6.01 | Final Acceptance Inspection and Handover |
| 16 BOQ-1 | B.1.01 | General Items |
| AREA | CL | CHLORINE BUILDING |
| AREA | S10 | Shaft 10 |
| Area/Department | ALM | AL MANA |
| DELAY EVENT 01 | DE01 | DELAY EVENT 01 |
| DELAY EVENT 02 | DE02 | DELAY EVENT 02 |
| DELAY EVENT 03 | DE03 | DELAY EVENT 03 |
| DELAY EVENT 04 | DE04 | DELAY EVENT 04 |
| EXECUTIVE SUMMAR | 40 | CONSTRUCTION |
| PUMP STATION | 35 | PUMP STATION PS 3/7 |
