# Tx Schedule Baseline

Schedule from Primavera P6, 2022-01-03 to 2022-07-28, data date 2022-01-03.

## Calendars

- Tx-COMMISSIONING 6DAYS: Mon-Sat 07:00-12:30, 13:30-18:00; Sun off. Exceptions (off unless hours are given): 2022-04-30, 2022-05-02 to 2022-05-04, 2022-06-01 to 2022-06-02 07:00-12:30, 13:30-18:00, 2022-06-06 to 2022-06-09 07:00-12:30, 13:30-18:00, 2022-06-13 to 2022-06-15 07:00-12:30, 13:30-18:00, 2022-07-09 to 2022-07-13.
- 6 Working Days: Mon-Thu 07:00-12:00, 13:00-18:00; Fri off; Sat-Sun 07:00-17:00.

## Schedule

| ID | WBS | Activity | Duration | Start | Finish | Predecessors | Total float | Free float | Calendar |
| --- | --- | --- | --- | --- | --- | --- | --- | --- | --- |
|  | 1 | **Level 2 Pre Commissioning** |  | 2022-01-03 | 2022-06-02 |  |  |  |  |
|  | 1 | **LV Pannel** |  | 2022-01-03 | 2022-01-29 |  |  |  |  |
| A1000 |  | LV Panel 2D | 6d | 2022-01-03 | 2022-01-08 |  | -10d | 0d |  |
| A1010 |  | LV Panel 2C | 6d | 2022-01-10 | 2022-01-15 | A1000 | -10d | 0d |  |
| A1020 |  | LV Panel 2B | 6d | 2022-01-17 | 2022-01-22 | A1010 | -10d | 0d |  |
| A1030 |  | LV Panel 2A | 6d | 2022-01-24 | 2022-01-29 | A1020 | -10d | 0d |  |
|  | 2 | **RMU** |  | 2022-01-03 | 2022-01-20 |  |  |  |  |
| A1040 |  | RMU 2D | 4d | 2022-01-03 | 2022-01-06 | A1000 SS | -2d | 0d |  |
| A1050 |  | RMU 2C | 4d | 2022-01-07 | 2022-01-11 | A1040 | -2d | 0d |  |
| A1060 |  | RMU 2B | 4d | 2022-01-12 | 2022-01-15 | A1050 | -2d | 0d |  |
| A1070 |  | RMU 2A | 4d | 2022-01-17 | 2022-01-20 | A1060 | -2d | 8d |  |
|  | 3 | **Transformer** |  | 2022-01-31 | 2022-02-17 |  |  |  |  |
| A1080 |  | Transformer 2D | 4d | 2022-01-31 | 2022-02-03 | A1030, A1070 | -10d | 0d |  |
| A1090 |  | Transformer 2C | 4d | 2022-02-04 | 2022-02-08 | A1080 | -10d | 0d |  |
| A1100 |  | Transformer 2B | 4d | 2022-02-09 | 2022-02-12 | A1090 | -10d | 0d |  |
| A1110 |  | Transformer 2A | 4d | 2022-02-14 | 2022-02-17 | A1100 | -10d | 0d |  |
|  | 4 | **Generator** |  | 2022-01-03 | 2022-01-20 |  |  |  |  |
| A1120 |  | Generator 2D | 4d | 2022-01-03 | 2022-01-06 | A1000 SS | 14d | 0d |  |
| A1130 |  | Generator 2C | 4d | 2022-01-07 | 2022-01-11 | A1120 | 14d | 0d |  |
| A1140 |  | Generator 2B | 4d | 2022-01-12 | 2022-01-15 | A1130 | 14d | 0d |  |
| A1150 |  | Generator 2A | 4d | 2022-01-17 | 2022-01-20 | A1140 | 14d |  |  |
|  | 5 | **UPS** |  | 2022-01-24 | 2022-02-19 |  |  |  |  |
| A1160 |  | UPS 2D | 6d | 2022-01-24 | 2022-01-29 | A1030 SS | 18d | 0d |  |
| A1170 |  | UPS 2C | 6d | 2022-01-31 | 2022-02-05 | A1160 | 18d | 0d |  |
| A1180 |  | UPS 2B | 6d | 2022-02-07 | 2022-02-12 | A1170 | 18d | 0d |  |
| A1190 |  | UPS 2A | 6d | 2022-02-13 | 2022-02-19 | A1180 | 19d | 0d | 6 Working Days |

| ID | WBS | Activity | Duration | Start | Finish | Predecessors | Total float | Free float |
| --- | --- | --- | --- | --- | --- | --- | --- | --- |
|  | 6 | **DC System** |  | 2022-01-31 | 2022-02-17 |  |  |  |
| A1200 |  | DC SYSTEM 2D | 4d | 2022-01-31 | 2022-02-03 | A1030 | 0d |  |
| A1210 |  | DC SYSTEM 2C | 4d | 2022-02-04 | 2022-02-08 | A1200 | 20d | 0d |
| A1220 |  | DC SYSTEM 2B | 4d | 2022-02-09 | 2022-02-12 | A1210 | 20d | 0d |
| A1230 |  | DC SYSTEM 2A | 4d | 2022-02-14 | 2022-02-17 | A1220 | 20d | 0d |
|  | 7 | **Busbar** |  | 2022-02-04 | 2022-03-12 |  |  |  |
| A1240 |  | BUSBAR 2D | 8d | 2022-02-04 | 2022-02-12 | A1200 | 0d |  |
| A1250 |  | BUSBAR 2C | 8d | 2022-02-14 | 2022-02-22 | A1240 | 0d |  |
| A1260 |  | BUSBAR 2B | 8d | 2022-02-23 | 2022-03-03 | A1250 | 0d |  |
| A1270 |  | BUSBAR 2A | 8d | 2022-03-04 | 2022-03-12 | A1260 | 0d |  |
|  | 8 | **Chiller** |  | 2022-02-14 | 2022-03-18 |  |  |  |
| A1280 |  | CHILLER 8 Power string 2D | 5d | 2022-02-14 | 2022-02-18 | A1200, A1200 FF, A1240, A1160 | 62d | 0d |
| A1290 |  | CHILLER 4 Power string 2D | 5d | 2022-02-14 | 2022-02-18 | A1280 SS | 62d | 0d |
| A1300 |  | CHILLER 7 Power string 2C | 5d | 2022-02-23 | 2022-02-28 | A1290, A1210, A1170, A1250 | 59d | 0d |
| A1310 |  | CHILLER 3 Power string 2C | 5d | 2022-02-23 | 2022-02-28 | A1300 SS | 59d | 0d |
| A1320 |  | CHILLER 6 Power string 2B | 5d | 2022-03-04 | 2022-03-09 | A1310, A1220, A1180, A1260 | 56d | 0d |
| A1330 |  | CHILLER 2 Power string 2B | 5d | 2022-03-04 | 2022-03-09 | A1320 SS | 56d | 0d |
| A1340 |  | CHILLER 5 Power string 2A | 5d | 2022-03-14 | 2022-03-18 | A1330, A1270, A1230, A1190 | 53d | 0d |
| A1350 |  | CHILLER 1 Power string 2A | 5d | 2022-03-14 | 2022-03-18 | A1340 SS | 53d | 0d |
|  | 9 | **FWU** |  | 2022-02-14 | 2022-03-17 |  |  |  |
| A1360 |  | FWU Loop 8 Power string 2D | 4d | 2022-02-14 | 2022-02-17 | A1280 SS, A1240, A1200, A1160 | 66d | 0d |
| A1370 |  | FWU Loop 4 Power string 2D | 4d | 2022-02-14 | 2022-02-17 | A1360 SS | 66d | 1d |
| A1380 |  | FWU Loop 7 Power string 2C | 4d | 2022-02-23 | 2022-02-26 | A1370, A1210, A1170, A1250 | 62d | 0d |
| A1390 |  | FWU Loop 3 Power string 2C | 4d | 2022-02-23 | 2022-02-26 | A1380 SS | 62d | 1d |
| A1400 |  | FWU Loop 6 Power string 2B | 4d | 2022-03-04 | 2022-03-08 | A1390, A1220, A1180, A1260 | 58d | 0d |
| A1410 |  | FWU Loop 2 Power string 2B | 4d | 2022-03-04 | 2022-03-08 | A1400 SS | 58d | 1d |
| A1420 |  | FWU Loop 5 Power string 2A | 4d | 2022-03-14 | 2022-03-17 | A1410, A1230, A1270, A1190 | 54d | 0d |
| A1430 |  | FWU Loop 1 Power string 2A | 4d | 2022-03-14 | 2022-03-17 | A1420 SS | 54d | 1d |

| ID | WBS | Activity | Duration | Start | Finish | Predecessors | Total float | Free float |
| --- | --- | --- | --- | --- | --- | --- | --- | --- |
|  | 10 | **CRAH** |  | 2022-02-14 | 2022-03-17 |  |  |  |
| A1440 |  | CRAH Loop 8 Power string 2D | 4d | 2022-02-14 | 2022-02-17 | A1200, A1240, A1160 | 12d | 0d |
| A1450 |  | CRAH Loop 4 Power string 2D | 4d | 2022-02-14 | 2022-02-17 | A1440 SS | 12d | 4d |
| A1460 |  | CRAH Loop 7 Power string 2C | 4d | 2022-02-23 | 2022-02-26 | A1450, A1170, A1210, A1250 | 8d | 0d |
| A1470 |  | CRAH Loop 3 Power string 2C | 4d | 2022-02-23 | 2022-02-26 | A1460 SS | 8d | 1d |
| A1480 |  | CRAH Loop 6 Power string 2B | 4d | 2022-03-04 | 2022-03-08 | A1470, A1220, A1260, A1180 | 4d | 0d |
| A1490 |  | CRAH Loop 2 Power string 2B | 4d | 2022-03-04 | 2022-03-08 | A1480 SS | 4d |  |
| A1500 |  | CRAH Loop 5 Power string 2A | 4d | 2022-03-14 | 2022-03-17 | A1490, A1190, A1230, A1270 | 0d |  |
| A1510 |  | CRAH Loop 1 Power string 2A | 4d | 2022-03-14 | 2022-03-17 | A1500 SS | 0d |  |
|  | 11 | **CHW Pressure Test** |  | 2022-02-19 | 2022-03-23 |  |  |  |
| A1520 |  | CHW PRESSURE TEST loop 8 2D | 4d | 2022-02-19 | 2022-02-23 | A1290, A1370, A1440 | 65d | 0d |
| A1530 |  | CHW PRESSURE TEST loop 4 2D | 4d | 2022-02-19 | 2022-02-23 | A1520 SS | 65d | 4d |
| A1540 |  | CHW PRESSURE TEST loop 7 2C | 4d | 2022-03-01 | 2022-03-04 | A1530, A1390, A1310, A1470 | 61d | 0d |
| A1550 |  | CHW PRESSURE TEST loop 3 2C | 4d | 2022-03-01 | 2022-03-04 | A1540 SS | 61d | 0d |
| A1560 |  | CHW PRESSURE TEST loop 6 2B | 4d | 2022-03-10 | 2022-03-14 | A1550, A1410, A1480, A1330 | 57d | 0d |
| A1570 |  | CHW PRESSURE TEST loop 2 2B | 4d | 2022-03-10 | 2022-03-14 | A1560 SS | 57d | 4d |
| A1580 |  | CHW PRESSURE TEST loop 5 2A | 4d | 2022-03-19 | 2022-03-23 | A1570, A1500, A1420, A1350, A1510, A1430 | 53d | 0d |
| A1590 |  | CHW PRESSURE TEST loop 1 2A | 4d | 2022-03-19 | 2022-03-23 | A1580 SS | 53d | 0d |
|  | 12 | **Flushing** |  | 2022-03-05 | 2022-04-25 |  |  |  |
| A1600 |  | FLUSHING Loop 3 | 28d | 2022-03-05 | 2022-04-06 | A1550, A1470, A1390, A1310, A1450, A1370, A1290 | 69d | 0d |
| A1610 |  | FLUSHING Loop 4 | 28d | 2022-03-05 | 2022-04-06 | A1550, A1470, A1390, A1310, A1450, A1370, A1290 | 69d | 0d |
| A1620 |  | FLUSHING Loop 7 | 28d | 2022-03-05 | 2022-04-06 | A1550, A1470, A1390, A1310, A1450, A1370, A1290 | 69d | 0d |
| A1630 |  | FLUSHING Loop 8 | 28d | 2022-03-05 | 2022-04-06 | A1550, A1470, A1390, A1310, A1450, A1370, A1290 | 69d | 0d |
| A1640 |  | FLUSHING Loop 1 | 28d | 2022-03-24 | 2022-04-25 | A1570, A1590, A1510, A1490, A1410, A1430 | 53d | 0d |
| A1650 |  | FLUSHING Loop 2 | 28d | 2022-03-24 | 2022-04-25 | A1570, A1590, A1510, A1490, A1410, A1430 | 53d | 0d |
| A1660 |  | FLUSHING Loop 5 | 28d | 2022-03-24 | 2022-04-25 | A1570, A1590, A1510, A1490, A1410, A1430 | 53d | 0d |
| A1670 |  | FLUSHING Loop 6 | 28d | 2022-03-24 | 2022-04-25 | A1570, A1590, A1510, A1490, A1410, A1430 | 53d | 0d |

| ID | WBS | Activity | Duration | Start | Finish | Predecessors | Total float | Free float | Constraint |
| --- | --- | --- | --- | --- | --- | --- | --- | --- | --- |
|  | 13 | **Mech** |  | 2022-03-18 | 2022-04-12 |  |  |  |  |
| A1680 |  | VENTILATION TESTING | 12d | 2022-03-18 | 2022-03-31 | A1510 | 0d |  |  |
| A1690 |  | PLUMBING/DRAINAGE SYSTEM | 12d | 2022-03-30 | 2022-04-12 | A1680 SS+10d | 0d |  |  |
|  | 14 | **Fire & Safety** |  | 2022-04-13 | 2022-06-02 |  |  |  |  |
| A1700 |  | FIRE FIGHTING SYSTEM | 12d | 2022-04-13 | 2022-04-26 | A1690 | 0d |  |  |
| A1710 |  | BMS/EPMS System | 28d | 2022-04-27 | 2022-06-02 | A1700 | 0d |  |  |
| A1720 |  | FIRE ALARM SYSTEM | 12d | 2022-04-27 | 2022-05-14 | A1710 SS | 23d | 0d |  |
| A1730 |  | LEAK DETECTION SYSTEM | 15d | 2022-04-27 | 2022-05-18 | A1720 SS | 23d | 0d |  |
| A1740 |  | SECRUITY SYSTEM | 12d | 2022-04-27 | 2022-05-14 | A1730 SS | 32d | 0d |  |
|  | 2 | **Level 3 Commissioning** |  | 2022-02-07 | 2022-06-21 |  |  |  |  |
| A1750 |  | Temporary Power Avaibility | 4d | 2022-02-07 | 2022-02-10 | A1000, A1150, A1110 | 0d |  | mandatory start 2022-02-07 |
| A1760 |  | Utility Power Availability | 4d | 2022-06-06 | 2022-06-09 | A1270 | 0d |  | mandatory start 2022-06-06 |
|  | 1 | **LV Pannel** |  | 2022-02-11 | 2022-02-19 |  |  |  |  |
| A1890 |  | LV Panel 2D | 2d | 2022-02-11 | 2022-02-12 | A1750 | 116d | 0d |  |
| A1900 |  | LV Panel 2C | 2d | 2022-02-14 | 2022-02-15 | A1890 | 116d | 0d |  |
| A1910 |  | LV Panel 2B | 2d | 2022-02-16 | 2022-02-17 | A1900 | 116d | 0d |  |
| A1920 |  | LV Panel 2A | 2d | 2022-02-18 | 2022-02-19 | A1910 | 116d | 90d |  |
|  | 2 | **RMU** |  | 2022-06-10 | 2022-06-18 |  |  |  |  |
| A1770 |  | RMU 2D | 2d | 2022-06-10 | 2022-06-11 | A1760 | 2d | 0d |  |
| A1780 |  | RMU 2C | 2d | 2022-06-13 | 2022-06-14 | A1770 | 2d | 0d |  |
| A1790 |  | RMU 2B | 2d | 2022-06-15 | 2022-06-16 | A1780 | 2d | 0d |  |
| A1800 |  | RMU 2A | 2d | 2022-06-17 | 2022-06-18 | A1790 | 2d | 0d |  |
|  | 3 | **Transformer** |  | 2022-06-10 | 2022-06-18 |  |  |  |  |
| A1810 |  | Transformer 2D | 2d | 2022-06-10 | 2022-06-11 | A1760 | 2d | 0d |  |
| A1820 |  | Transformer 2C | 2d | 2022-06-13 | 2022-06-14 | A1810 | 2d | 0d |  |
| A1830 |  | Transformer 2B | 2d | 2022-06-15 | 2022-06-16 | A1820 | 2d | 0d |  |
| A1840 |  | Transformer 2A | 2d | 2022-06-17 | 2022-06-18 | A1830 | 2d | 0d |  |

| ID | WBS | Activity | Duration | Start | Finish | Predecessors | Total float | Free float |
| --- | --- | --- | --- | --- | --- | --- | --- | --- |
|  | 4 | **Generator** |  | 2022-02-11 | 2022-03-10 |  |  |  |
| A1850 |  | Generator 2D | 6d | 2022-02-11 | 2022-02-17 | A1750 | 100d | 0d |
| A1860 |  | Generator 2C | 6d | 2022-02-18 | 2022-02-24 | A1850 | 100d | 0d |
| A1870 |  | Generator 2B | 6d | 2022-02-25 | 2022-03-03 | A1860 | 100d | 0d |
| A1880 |  | Generator 2A | 6d | 2022-03-04 | 2022-03-10 | A1870 | 100d | 74d |
|  | 5 | **UPS** |  | 2022-02-19 | 2022-03-01 |  |  |  |
| A1930 |  | UPS 2D | 2d | 2022-02-19 | 2022-02-22 | A1190 | 108.1d | 0d |
| A1940 |  | UPS 2C | 2d | 2022-02-22 | 2022-02-24 | A1930 | 108.1d | 0d |
| A1950 |  | UPS 2B | 2d | 2022-02-24 | 2022-02-26 | A1940 | 108.1d | 0d |
| A1960 |  | UPS 2A | 2d | 2022-02-26 | 2022-03-01 | A1950 | 108.1d | 82.1d |
|  | 6 | **DC System** |  | 2022-02-18 | 2022-02-26 |  |  |  |
| A1970 |  | DC SYSTEM 2D | 2d | 2022-02-18 | 2022-02-19 | A1230 | 110d | 0d |
| A1980 |  | DC SYSTEM 2C | 2d | 2022-02-21 | 2022-02-22 | A1970, A1210 | 110d | 0d |
| A1990 |  | DC SYSTEM 2B | 2d | 2022-02-23 | 2022-02-24 | A1980, A1220 | 110d | 0d |
| A2000 |  | DC SYSTEM 2A | 2d | 2022-02-25 | 2022-02-26 | A1990, A1230 | 110d | 84d |
|  | 7 | **Busbar** |  | 2022-02-14 | 2022-03-15 |  |  |  |
| A2010 |  | BUSBAR 2D | 2d | 2022-02-14 | 2022-02-15 | A1750, A1240 | 114d | 6d |
| A2020 |  | BUSBAR 2C | 2d | 2022-02-23 | 2022-02-24 | A2010, A1250 | 108d | 6d |
| A2030 |  | BUSBAR 2B | 2d | 2022-03-04 | 2022-03-05 | A2020, A1260 | 102d | 6d |
| A2040 |  | BUSBAR 2A | 2d | 2022-03-14 | 2022-03-15 | A2030, A1270 | 96d | 70d |
|  | 8 | **Chiller** |  | 2022-04-07 | 2022-04-27 |  |  |  |
| A2050 |  | CHILLER 8 Power string 2D | 2d | 2022-04-07 | 2022-04-08 | A1630 | 69d | 0d |
| A2060 |  | CHILLER 4 Power string 2D | 2d | 2022-04-07 | 2022-04-08 | A1610 | 69d | 0d |
| A2070 |  | CHILLER 7 Power string 2C | 2d | 2022-04-07 | 2022-04-08 | A1620 | 69d | 0d |
| A2080 |  | CHILLER 3 Power string 2C | 2d | 2022-04-07 | 2022-04-08 | A1600 | 69d | 0d |
| A2090 |  | CHILLER 6 Power string 2B | 2d | 2022-04-26 | 2022-04-27 | A1670 | 53d | 0d |
| A2100 |  | CHILLER 2 Power string 2B | 2d | 2022-04-26 | 2022-04-27 | A1650 | 53d | 0d |
| A2110 |  | CHILLER 5 Power string 2A | 2d | 2022-04-26 | 2022-04-27 | A1660 | 53d | 0d |
| A2120 |  | CHILLER 1 Power string 2A | 2d | 2022-04-26 | 2022-04-27 | A1640 | 53d | 0d |

| ID | WBS | Activity | Duration | Start | Finish | Predecessors | Total float | Free float |
| --- | --- | --- | --- | --- | --- | --- | --- | --- |
|  | 9 | **FWU** |  | 2022-04-07 | 2022-04-27 |  |  |  |
| A2130 |  | FWU Loop 8 Power string 2D | 2d | 2022-04-07 | 2022-04-08 | A1630 | 69d | 0d |
| A2140 |  | FWU Loop 4 Power string 2D | 2d | 2022-04-07 | 2022-04-08 | A1610 | 69d | 0d |
| A2150 |  | FWU Loop 7 Power string 2C | 2d | 2022-04-07 | 2022-04-08 | A1620 | 69d | 0d |
| A2160 |  | FWU Loop 3 Power string 2C | 2d | 2022-04-07 | 2022-04-08 | A1600 | 69d | 0d |
| A2170 |  | FWU Loop 6 Power string 2B | 2d | 2022-04-26 | 2022-04-27 | A1670 | 53d | 0d |
| A2180 |  | FWU Loop 2 Power string 2B | 2d | 2022-04-26 | 2022-04-27 | A1650 | 53d | 0d |
| A2190 |  | FWU Loop 5 Power string 2A | 2d | 2022-04-26 | 2022-04-27 | A1660 | 53d | 0d |
| A2200 |  | FWU Loop 1 Power string 2A | 2d | 2022-04-26 | 2022-04-27 | A1640 | 53d | 0d |
|  | 10 | **CRAH** |  | 2022-04-07 | 2022-04-27 |  |  |  |
| A2210 |  | CRAH Loop 8 Power string 2D | 2d | 2022-04-07 | 2022-04-08 | A1630 | 69d | 0d |
| A2220 |  | CRAH Loop 4 Power string 2D | 2d | 2022-04-07 | 2022-04-08 | A1610 | 69d | 0d |
| A2230 |  | CRAH Loop 7 Power string 2C | 2d | 2022-04-07 | 2022-04-08 | A1620 | 69d | 0d |
| A2240 |  | CRAH Loop 3 Power string 2C | 2d | 2022-04-07 | 2022-04-08 | A1600 | 69d | 0d |
| A2250 |  | CRAH Loop 6 Power string 2B | 2d | 2022-04-26 | 2022-04-27 | A1670 | 53d | 0d |
| A2260 |  | CRAH Loop 2 Power string 2B | 2d | 2022-04-26 | 2022-04-27 | A1650 | 53d | 0d |
| A2270 |  | CRAH Loop 5 Power string 2A | 2d | 2022-04-26 | 2022-04-27 | A1660 | 53d | 0d |
| A2280 |  | CRAH Loop 1 Power string 2A | 2d | 2022-04-26 | 2022-04-27 | A1640 | 53d | 0d |
|  | 11 | **CHW Pressure Test** |  | 2022-04-09 | 2022-05-06 |  |  |  |
| A2290 |  | CHILLED WATER TAB Loop 8 | 4d | 2022-04-09 | 2022-04-13 | A2210, A2130, A2050 | 69d | 59d |
| A2300 |  | CHILLED WATER TAB Loop 4 | 4d | 2022-04-09 | 2022-04-13 | A2220, A2140, A2060 | 69d | 59d |
| A2310 |  | CHILLED WATER TAB Loop 7 | 4d | 2022-04-09 | 2022-04-13 | A2070, A2150, A2230 | 69d | 59d |
| A2320 |  | CHILLED WATER TAB Loop 3 | 4d | 2022-04-09 | 2022-04-13 | A2160, A2240, A2080 | 69d | 59d |
| A2330 |  | CHILLED WATER TAB Loop 6 | 4d | 2022-04-28 | 2022-05-06 | A2090, A2170, A2250 | 53d | 43d |
| A2340 |  | CHILLED WATER TAB Loop 2 | 4d | 2022-04-28 | 2022-05-06 | A2260, A2180, A2100 | 53d | 43d |
| A2350 |  | CHILLED WATER TAB Loop 5 | 4d | 2022-04-28 | 2022-05-06 | A2110, A2190, A2270 | 53d | 43d |
| A2360 |  | CHILLED WATER TAB Loop 1 | 4d | 2022-04-28 | 2022-05-06 | A2280, A2200, A2120 | 53d | 43d |

| ID | WBS | Activity | Duration | Start | Finish | Predecessors | Total float | Free float |
| --- | --- | --- | --- | --- | --- | --- | --- | --- |
|  | 13 | **Mech** |  | 2022-04-01 | 2022-05-14 |  |  |  |
| A2370 |  | VENTILATION FRESH AIR | 4d | 2022-04-01 | 2022-04-05 | A1680 | 57d | 0d |
| A2380 |  | VENTILATION BATTERY EXHAUST | 4d | 2022-04-06 | 2022-04-09 | A2370 | 57d | 0d |
| A2390 |  | VENTILATION TAB | 15d | 2022-04-11 | 2022-04-27 | A2380, A1680 | 57d | 47d |
| A2400 |  | PLUMBING/DRAINAGE SYSTEM | 12d | 2022-04-27 | 2022-05-14 | A1700 | 46d | 36d |
|  | 14 | **Fire & Safety** |  | 2022-05-16 | 2022-06-21 |  |  |  |
| A2410 |  | FIRE FIGHTING SYSTEM | 14d | 2022-05-16 | 2022-05-31 | A1720 | 32d | 8d |
| A2430 |  | FIRE ALARM SYSTEM | 12d | 2022-05-16 | 2022-05-28 | A1720 | 34d | 10d |
| A2450 |  | SECRUITY SYSTEM | 6d | 2022-05-16 | 2022-05-21 | A1740 | 32d | 26d |
| A2440 |  | LEAK DETECTION SYSTEM | 6d | 2022-05-19 | 2022-05-25 | A1730 | 23d |  |
| A2420 |  | BMS/EPMS System | 16d | 2022-06-03 | 2022-06-21 | A1710 | 0d |  |
|  | 3 | **Level 4 Commissioning** |  | 2022-06-10 | 2022-07-19 |  |  |  |
| A2470 |  | Electrical L4 (LV switchgear, MDB, PLC, Generator integration) | 4d | 2022-06-10 | 2022-06-14 | A1760, A2040, A2000, A1960, A1880, A1920 | 26d |  |
| A2480 |  | Fire alarm C&E | 6d | 2022-06-10 | 2022-06-16 | A1760, A2410, A2430 | 24d |  |
| A2580 |  | EM/CB SYSTEM | 6d | 2022-06-20 | 2022-06-25 | A1840, A1800, A1760 | 10d | 0d |
| A2460 |  | ELV System - (CPMS/BMS/EPMS/PMS) | 14d | 2022-06-22 | 2022-07-07 | A2420, A1760, A2450 | 6d |  |
| A2490 |  | Generator 2D | 2d | 2022-06-22 | 2022-06-23 | A2420, A1840, A1800, A1760, A2440 | 0d |  |
| A2500 |  | Generator 2C | 2d | 2022-06-24 | 2022-06-25 | A2490 | 0d |  |
| A2510 |  | Generator 2B | 2d | 2022-06-27 | 2022-06-28 | A2500 | 0d |  |
| A2570 |  | Heat Load | 6d | 2022-06-27 | 2022-07-02 | A1760, A1800, A1840, A2580, A2290, A2300, A2310, A2320, A2330, A2340, A2350, A2360, A2400, A2390 | 10d |  |
| A2520 |  | Generator 2A | 2d | 2022-06-29 | 2022-06-30 | A2510 | 0d |  |
| A2530 |  | UPS 2D | 3d | 2022-07-01 | 2022-07-04 | A2520 | 0d |  |
| A2540 |  | UPS 2C | 3d | 2022-07-05 | 2022-07-07 | A2530 | 0d |  |
| A2550 |  | UPS 2B | 3d | 2022-07-08 | 2022-07-15 | A2540 | 0d |  |
| A2560 |  | UPS 2A | 3d | 2022-07-16 | 2022-07-19 | A2550 | 0d |  |

| ID | WBS | Activity | Duration | Start | Finish | Predecessors | Total float |
| --- | --- | --- | --- | --- | --- | --- | --- |
|  | 4 | **Level 5 IST** |  | 2022-07-20 | 2022-07-28 |  |  |
| A2590 |  | PREPARATION FOR IST | 3d | 2022-07-20 | 2022-07-22 | A2570, A2560, A2460, A2470, A2480 | 0d |
| A2600 |  | LEVEL 5 IST COMISSIONING | 5d | 2022-07-23 | 2022-07-28 | A2590 | 0d |
